# Programa de Seguimiento MEM Patio de Estanques y OOCC Misceláneos 11-03-26 - Nueva LB

Schedule from Primavera P6, 2025-02-17 to 2026-04-12, data date 2026-03-15, costs in CLP, A marks actual dates.

## Calendars

- 14x14: Mon-Sun 07:00-19:00. Exceptions (off unless hours are given): 2025-03-10 07:00-19:00.

## Resources

| Resource | Group | Rate | Notes |
| --- | --- | --- | --- |
| SQM-MECANICA | labor | 1 |  |
| SQM-ESTRUCTURA | labor | 1 |  |
| SQM-PIPING | labor | 1 |  |
| SQM-ELÉCTRICO | labor | 1 | ï»¿ |
| SQM-INSTRUMENTACIÓN | labor | 1 |  |
| SQM-OOCC | labor | 1 |  |

## Schedule

| ID | WBS | Activity | Type | Duration | Start | Finish | Predecessors | Complete | Planned start | Planned finish | Total float | Free float | Constraint | Resources | Cost | Actual cost | Unidad | Cantidad | Remanente | Forecast | Área | Impacto | Ítem EDP |
| --- | --- | --- | --- | --- | --- | --- | --- | --- | --- | --- | --- | --- | --- | --- | --- | --- | --- | --- | --- | --- | --- | --- | --- |
|  | 1 | **HITOS** |  |  | 2026-03-16 | 2026-04-12 |  |  |  |  |  |  |  |  |  |  |  |  |  |  |  |  |  |
| A1000 |  | Inicio de Proyecto | milestone | 0d | 2026-03-16 | 2026-03-16 |  |  |  |  | 28d | 0d |  |  |  |  | gl | 0 | 0 | 1 |  |  |  |
| A1010 |  | Movilización, Instalación de Faenas y Proceso de Acreditación MEM Patio de Estanques |  | 0d | 2026-03-16 | 2026-03-16 | A1000 SS |  |  |  | 28d | 0d |  |  |  |  | gl | 0 | 0 | 1 |  |  |  |
| A1020 |  | Adjudicación OOCC Misceláneos Addendum 01 | milestone | 0d | 2026-03-16 | 2026-03-16 |  |  |  |  | 28d | 0d | start on or after 2025-08-28 |  |  |  | gl | 0 | 0 | 1 |  |  |  |
| A1030 |  | Proceso de Acreditación OOCC Misceláneos |  | 0d | 2026-03-16 | 2026-03-16 | A1020 |  |  |  | 28d | 0d |  |  |  |  | gl | 0 | 0 | 1 |  |  |  |
| A1040 |  | Desmovilización |  | 14d | 2026-03-30 | 2026-04-12 | A1080, A1090 |  |  |  | 0d |  |  |  |  |  | gl | 0 | 0 | 1 |  |  |  |
| A1050 |  | Término de Proyecto | milestone | 0d | 2026-04-12 | 2026-04-12 | A1040 FF, A1090 FF |  |  |  | 0d |  |  |  |  |  | gl | 0 | 0 | 1 |  |  |  |
|  | 2 | **HITOS CONTRACTUALES** |  |  | 2026-03-16 | 2026-03-29 |  |  |  |  |  |  |  |  |  |  |  |  |  |  |  |  |  |
| A1060 |  | Inicio Constructuvo Contractual MEM Patio de Estanques | milestone | 0d | 2026-03-16 | 2026-03-16 | A1010 |  |  |  | 28d |  |  |  |  |  | gl | 0 | 0 | 1 |  |  |  |
| A1070 |  | Inicio Constructuvo Contractual OOCC Misceláneos (Addendum 01) | milestone | 0d | 2026-03-16 | 2026-03-16 | A1030 |  |  |  | 28d |  |  |  |  |  | gl | 0 | 0 | 1 |  |  |  |
| A1080 |  | Término Constructivo Contractual MEM Patio de Estanques | milestone | 0d | 2026-03-22 | 2026-03-22 | A2180 FF, A1940, A3250 FF, A3940, A1910, A2030 FF, A1380 FF, A1430 FF, A1740 FF, A1720 FF |  |  |  | 7d |  |  |  |  |  | gl | 0 | 0 | 1 |  |  |  |
| A1090 |  | Término Constructivo Contractual OOCC Misceláneos (Addendum 01) | milestone | 0d | 2026-03-29 | 2026-03-29 | A4690 FF, A5170 FF, A7440, A3910 FF, A3980 FF, A8330, A8810, A4060, A4480, A5950, A6490, A8550, A7670 FF, A6870 FF, A1920 FF, A4660 FF, A6200 FF, A6780 FF, A4380 FF |  |  |  | 0d |  |  |  |  |  | un | 0 | 0 | 1 |  |  |  |
|  | 3 | **CONSTRUCCIÓN** |  |  | 2025-02-17 | 2026-03-30 |  |  |  |  |  |  |  |  |  |  |  |  |  |  |  |  |  |
|  | 1 | **CONTRATO SC15682 - MEM PATIO DE ESTANQUES** |  |  | 2025-02-17 | 2026-03-28 |  |  |  |  |  |  |  |  |  |  |  |  |  |  |  |  |  |
|  | 1 | **SECTOR PATIO DE ESTANQUES** |  |  | 2025-02-17 | 2026-03-28 |  |  |  |  |  |  |  |  |  |  |  |  |  |  |  |  |  |
|  | 1 | **OBRAS MECÁNICAS PATIO DE ESTANQUES** |  |  | 2025-07-14 | 2026-03-17 |  |  |  |  |  |  |  |  |  |  |  |  |  |  |  |  |  |
|  | 1 | **MONTAJE DE ESTANQUES** |  |  | 2025-07-14 | 2026-03-17 |  |  |  |  |  |  |  |  |  |  |  |  |  |  |  |  |  |
|  | 1 | **MONTAJE DE ESTANQUES RED CONTRA INCENDIOS (RCI)** |  |  | 2025-07-14 | 2026-03-17 |  |  |  |  |  |  |  |  |  |  |  |  |  |  |  |  |  |
| A1100 |  | Estanques de Agua para RCI TAG: 5764-EST-001 |  | 98d | 2025-07-14 A | 2025-08-31 A | A1060 SS | 100% | 2025-07-14 | 2025-10-19 |  |  |  | SQM-MECANICA [4320 h] | 4,320 | 4,320 | un | 1 | 0 | 1 | 5764-RCI | LDO N°6-8-13-14-31; SDC N°4-5-13-22-23; SDI N°31-32 | 1.1.27 |
| A1110 |  | Estanques de Agua para RCI TAG: 5764-EST-015 |  | 2d | 2026-03-16 | 2026-03-17 | A1100 SS+5d |  |  |  | 26d |  |  | SQM-MECANICA [4320 h] | 4,320 |  | un | 1 | 0 | 1 |  | LDO N°7-24; SDC N°22-23-29; SDI N°32-43 | 1.1.27 |
|  | 2 | **MONTAJE DE ESTANQUES DE AGUA, ÁREA 1000** |  |  | 2025-08-07 | 2025-10-31 |  |  |  |  |  |  |  |  |  |  |  |  |  |  |  |  |  |
| A1130 |  | Estanque Agua Industrial y Plataforma Superior TAG: 5817-EST-1041 |  | 76d | 2025-08-07 A | 2025-10-30 A | A1110 SS+5d | 100% | 2025-07-24 | 2025-10-07 |  |  |  | SQM-MECANICA [3936 h] | 3,936 | 3,936 | un | 1 | 0 | 1 | 5817-1000 | LDO N°10-37; SDC N°14-22-80; SDI N°15-17-60-63-80 | 1.1.2 |
| A1140 |  | Estanque Agua Potable y Plataforma Superior TAG: 5817-EST-1071 |  | 79d | 2025-08-11 A | 2025-10-31 A | A1130 SS+5d | 100% | 2025-07-29 | 2025-10-15 |  |  |  | SQM-MECANICA [996 h] | 996 | 996 | un | 1 | 0 | 1 | 5817-1000 | LDO N°10-24-42; SDC N°22-56-73; SDI N°13 | 1.1.3 |
| A1120 |  | Estanque Agua Ultrapura y Plataforma Superior TAG: 5817-EST-1001 |  | 76d | 2025-08-15 A | 2025-10-30 A | A1140 SS | 100% | 2025-08-03 | 2025-10-17 |  |  |  | SQM-MECANICA [4164 h] | 4,164 | 4,164 | un | 1 | 0 | 1 | 5817-1000 | LDO N°21; SDC N°22 | 1.1.1 |

Notes:
- A1110: Corregir: No se encuentra piping ( interconexiï¿½n) para poder realizar pruebas de estanqueidad / lï¿½nea 10621 / se envï¿½a SDC
- A1120: Corregir: Se desvï¿½an recursos para atender urgencias de la planta, justifica SDC 5 dï¿½as de detenciï¿½n de trabajos// Interferencia de boquilla por soldar que choca con estructura de plataformas de operaciones

| ID | WBS | Activity | Duration | Start | Finish | Predecessors | Complete | Remaining | Planned start | Planned finish | Total float | Free float | Resources | Cost | Actual cost | Área | Unidad | Cantidad | Remanente | Impacto | Ítem EDP | Forecast |
| --- | --- | --- | --- | --- | --- | --- | --- | --- | --- | --- | --- | --- | --- | --- | --- | --- | --- | --- | --- | --- | --- | --- |
|  | 2 | **MONTAJE DE BOMBAS PATIO ESTANQUES** |  | 2025-07-24 | 2026-03-16 |  |  |  |  |  |  |  |  |  |  |  |  |  |  |  |  |  |
| A1170 |  | Bomba Centrífuga y Motor TAG: 5817-BBA-1052; 5817-MTR-1053 | 9d | 2025-07-24 A | 2026-03-16 | A1110 SS+5d | 99% | 0.08d | 2025-07-24 | 2025-08-01 | 27.92d |  | SQM-MECANICA [98.25 h] | 98.25 | 96.29 | TK-1041 | un | 1 | 0,0199999999999998 | SDI N°55-57; SUM M-06 F.Entrega: 27-08-25 | 1.1.6 | 1 |
| A1150 |  | Bomba Centrífuga y Motor TAG: 5817-BBA-1042; 5817-MTR-1043 | 9d | 2025-08-02 A | 2026-03-16 | A1170 SS | 89% | 1d | 2025-08-02 | 2025-08-10 | 27d |  | SQM-MECANICA [98.25 h] | 98.25 | 96.29 | TK-1041 | un | 1 | 0,0199999999999998 | SDI N°8 | 1.1.4 | 1 |
| A1190 |  | Bomba Centrífuga y Motor TAG: 5817-BBA-1074; 5817-MTR-1075 | 9d | 2025-08-11 A | 2026-03-16 | A1150 SS | 98% | 0.18d | 2025-08-11 | 2025-08-19 | 27.82d |  | SQM-MECANICA [139.9 h] | 139.9 | 135.7 | TK-1071 | un | 1 | 0,0299999999999999 |  | 1.1.8 | 1 |
| A1210 |  | Bomba Centrífuga y Motor TAG: 5817-BBA-1080; 5817-MTR-1081 | 9d | 2025-08-18 A | 2026-03-16 | A1190 SS | 98% | 0.18d | 2025-08-20 | 2025-08-28 | 27.82d |  | SQM-MECANICA [139.9 h] | 139.9 | 135.7 | TK-1071 | un | 1 | 0,0299999999999999 |  | 1.1.10 | 1 |
| A1220 |  | Bomba Centrífuga y Motor TAG: 5817-BBA-1083; 5817-MTR-1084 | 9d | 2025-08-23 A | 2026-03-16 | A1210 SS | 98% | 0.18d | 2025-08-29 | 2025-09-06 | 27.82d |  | SQM-MECANICA [139.9 h] | 139.9 | 135.7 | TK-1071 | un | 1 | 0,0299999999999999 |  | 1.1.11 | 1 |
| A1160 |  | Bomba Centrífuga y Motor TAG: 5817-BBA-1072; 5817-MTR-1073 | 9d | 2025-08-28 A | 2026-03-16 | A1220 SS | 98% | 0.18d | 2025-09-07 | 2025-09-15 | 27.82d |  | SQM-MECANICA [139.9 h] | 139.9 | 135.7 | TK-1071 | un | 1 | 0,0299999999999999 |  | 1.1.5 | 1 |
| A1180 |  | Bomba Centrífuga y Motor TAG: 5817-BBA-1055; 5817-MTR-1056 | 9d | 2025-09-02 A | 2026-03-16 | A1160 SS | 98% | 0.18d | 2025-09-16 | 2025-09-24 | 27.82d |  | SQM-MECANICA [139.9 h] | 139.9 | 135.7 | TK-1041 | un | 1 | 0,0299999999999999 | LDO N°18; SDC N°62; SDI N°68 | 1.1.7 | 1 |
| A1250 |  | Bomba Centrífuga y Motor TAG: 5817-BBA-4009; 5817-MTR-4010 | 9d | 2025-09-22 A | 2026-03-16 | A1200 SS | 99% | 0.12d | 2025-10-04 | 2025-10-12 | 27.88d |  | SQM-MECANICA [139.9 h] | 139.9 | 137.1 | TK-4001/2 | un | 1 | 0,0199999999999998 | SDC N°44; SDI N°61; SUM M-09 F.Entrega: 01-10-25 | 1.1.14 | 1 |
| A1200 |  | Bomba Centrífuga y Motor TAG: 5817-BBA-1077; 5817-MTR-1078 | 9d | 2025-09-25 A | 2026-03-16 | A1180 SS | 98% | 0.18d | 2025-09-25 | 2025-10-03 | 27.82d |  | SQM-MECANICA [139.9 h] | 139.9 | 135.7 | TK-1071 | un | 1 | 0,0299999999999999 |  | 1.1.9 | 1 |
| A1260 |  | Bomba Centrífuga y Motor TAG: 5817-BBA-4012; 5817-MTR-4013 | 9d | 2025-09-27 A | 2026-03-16 | A1250 SS | 99% | 0.12d | 2025-10-13 | 2025-10-21 | 27.88d |  | SQM-MECANICA [139.9 h] | 139.9 | 137.1 | TK-4001/2 | un | 1 | 0,0199999999999998 | SDC N°44; SDI N°61; SUM M-09 F.Entrega: 01-10-25 | 1.1.15 | 1 |
| A1270 |  | Bomba Centrífuga y Motor TAG: 5817-BBA-4015; 5817-MTR-4016 | 9d | 2025-10-02 A | 2026-03-16 | A1260 SS | 99% | 0.12d | 2025-10-22 | 2025-10-30 | 27.88d |  | SQM-MECANICA [139.9 h] | 139.9 | 137.1 | TK-4001/2 | un | 1 | 0,0199999999999998 | SDC N°44; SDI N°61; SUM M-09 F.Entrega: 01-10-25 | 1.1.16 | 1 |
| A1280 |  | Bomba Centrífuga y Motor TAG: 5817-BBA-4018; 5817-MTR-4019 | 9d | 2025-10-07 A | 2026-03-16 | A1270 SS | 99% | 0.12d | 2025-10-31 | 2025-11-08 | 27.88d |  | SQM-MECANICA [139.9 h] | 139.9 | 137.1 | TK-4001/2 | un | 1 | 0,0199999999999998 | SDC N°44; SDI N°61; SUM M-09 F.Entrega: 01-10-25 | 1.1.17 | 1 |
| A1290 |  | Bomba Centrífuga y Motor TAG: 5817-BBA-4021; 5817-MTR-4022 | 9d | 2025-10-12 A | 2026-03-16 | A1280 SS | 99% | 0.12d | 2025-11-09 | 2025-11-17 | 27.88d |  | SQM-MECANICA [139.9 h] | 139.9 | 137.1 | TK-4001/2 | un | 1 | 0,0199999999999998 | SDC N°44; SDI N°61; SUM M-09 F.Entrega: 01-10-25 | 1.1.18 | 1 |
| A1300 |  | Bomba Centrífuga y Motor TAG: 5817-BBA-4024; 5817-MTR-4025 | 9d | 2025-10-17 A | 2026-03-16 | A1290 SS | 99% | 0.12d | 2025-11-18 | 2025-11-26 | 27.88d |  | SQM-MECANICA [139.9 h] | 139.9 | 137.1 | TK-4001/2 | un | 1 | 0,0199999999999998 | SDC N°44; SDI N°61; SUM M-09 F.Entrega: 01-10-25 | 1.1.19 | 1 |
| A1330 |  | Bomba Centrífuga y Motor TAG: 5817-BBA-5008; 5817-MTR-5009 | 9d | 2025-11-01 A | 2026-03-16 | A1300 SS | 95% | 0.47d | 2025-11-27 | 2025-12-05 | 27.53d |  | SQM-MECANICA [139.9 h] | 139.9 | 128.71 | TK-5001 | un | 1 | 0,0799999999999999 | SUM M-08 F.Entrega: 01-10-25 | 1.1.22 | 1 |
| A1340 |  | Bomba Centrífuga y Motor TAG: 5817-BBA-5011; 5817-MTR-5012 | 9d | 2025-11-06 A | 2026-03-16 | A1330 SS | 95% | 0.47d | 2025-12-06 | 2025-12-14 | 27.53d |  | SQM-MECANICA [139.9 h] | 139.9 | 128.71 | TK-5001 | un | 1 | 0,0799999999999999 | SUM M-08 F.Entrega: 01-10-25 | 1.1.23 | 1 |
| A1350 |  | Bomba Sumidero y Motor TAG: 5817-BBS-1050; 5817-MTR-1051 | 9d | 2025-11-11 A | 2025-12-21 A | A1340 | 100% |  | 2025-12-15 | 2025-12-23 |  |  | SQM-MECANICA [139.9 h] | 139.9 | 139.9 | TK-1041 | un | 1 | 0 |  | 1.1.24 | 1 |
| A1360 |  | Bomba Sumidero y Motor TTAG: 5817-BBS-4026; 5817-MTR-4027 | 9d | 2025-11-16 A | 2025-12-21 A | A1350 | 100% |  | 2025-12-24 | 2026-01-01 |  |  | SQM-MECANICA [139.9 h] | 139.9 | 139.9 | TK-4001/2 | un | 1 | 0 |  | 1.1.25 | 1 |
| A1370 |  | Bomba Sumidero y Motor TAG: 5817-BBS-5014; 5817-MTR-5015 | 9d | 2025-11-21 A | 2025-12-21 A | A1360 | 100% |  | 2026-01-02 | 2026-01-10 |  |  | SQM-MECANICA [139.9 h] | 139.9 | 139.9 | TK-5001 | un | 1 | 0 | LDO N°23 | 1.1.26 | 1 |
| A1380 |  | Alineamiento digital de Bombas de Proyecto | 1d | 2026-03-16 | 2026-03-16 | A1370 |  |  |  |  | 13d | 6d | SQM-MECANICA |  |  |  | un | 0 | 0 |  |  | 1 |
|  | 3 | **OBRAS ESTRUCTURALES PATIO DE ESTANQUES** |  | 2025-10-20 | 2026-02-12 |  |  |  |  |  |  |  |  |  |  |  |  |  |  |  |  |  |
|  | 1 | **MONTAJE DE ESTRUCTURA DE ACCESO E INTERCONEXIÓN DE ESTANQUES** |  | 2025-10-20 | 2025-12-15 |  |  |  |  |  |  |  |  |  |  |  |  |  |  |  |  |  |
| A1430 |  | Montaje de Acceso e Interconexión de Estanques TAG: 5817-EST-1001; 5817-EST-1041; 5817-EST-1071 | 10d | 2025-10-20 A | 2025-12-15 A | A1120 FF | 100% |  | 2025-10-08 | 2025-10-17 |  |  | SQM-ESTRUCTURA [1439.97 h] | 1,439.97 | 1,439.97 | PTK | kg | 10137,78 | 0 |  | 1.2.1 | 10137,78 |

| ID | WBS | Activity | Duration | Start | Finish | Predecessors | Complete | Remaining | Planned start | Planned finish | Total float | Free float | Resources | Cost | Actual cost | Área | Unidad | Cantidad | Remanente | Impacto | Ítem EDP | Forecast |
| --- | --- | --- | --- | --- | --- | --- | --- | --- | --- | --- | --- | --- | --- | --- | --- | --- | --- | --- | --- | --- | --- | --- |
|  | 2 | **MONTAJE DE PARRÓN PATIO DE ESTANQUES ÁREA 7000** |  | 2025-10-20 | 2025-12-23 |  |  |  |  |  |  |  |  |  |  |  |  |  |  |  |  |  |
| A1440 |  | Parron Patio de Estanques Estructura liviana | 30d | 2025-10-20 A | 2025-12-23 A | A1100 SS, A1120 | 100% |  | 2025-10-18 | 2025-11-16 |  |  | SQM-ESTRUCTURA [3438.94 h] | 3,438.94 | 3,438.94 | 7000 | Kg | 24858,09 | 0 | SUM MS-03 F.Entrega:26-10-25 | 1.2.2 | 23564,01 |
| A1450 |  | Parron Patio de Estanques Estructura Mediana | 25d | 2025-10-20 A | 2025-12-21 A | A1440 SS+5d | 100% |  | 2025-10-23 | 2025-11-16 |  |  | SQM-ESTRUCTURA [2223.03 h] | 2,223.03 | 2,223.03 | 7000 | Kg | 17784,2 | 0 | SUM MS-03 F.Entrega:26-10-25 | 1.2.3 | 13155 |
| A1460 |  | Parron Patio de Estanques Estructura Pesada | 25d | 2025-10-30 A | 2025-12-19 A | A1450 SS+5d | 100% |  | 2025-10-28 | 2025-11-21 |  |  | SQM-ESTRUCTURA [4540.04 h] | 4,540.04 | 4,540.04 | 7000 | Kg | 46326,89 | 0 | LDO N°21; SDC N°49; SDI N°62; SUM MS-03 F.Entrega:26-10-25 | 1.2.4 | 46326,89 |
|  | 3 | **MONTAJE PLATAFORMA DE OPERACIÓN ÁREA 4000** |  | 2025-11-22 | 2025-12-23 |  |  |  |  |  |  |  |  |  |  |  |  |  |  |  |  |  |
| A1480 |  | Plataforma de Operación Área 4000 Estructura Liviana | 4d | 2025-11-22 A | 2025-12-18 A | A1460 | 100% |  | 2025-11-22 | 2025-11-25 |  |  | SQM-ESTRUCTURA [345.99 h] | 345.99 | 345.99 | BREF 1 Y 2 | Kg | 2435,88 | 0 |  | 1.2.6 | 2364,96 |
| A1490 |  | Plataforma de Operación Área 4000 Estructura Mediana | 10d | 2025-11-22 A | 2025-12-23 A | A1480 | 100% |  | 2025-11-26 | 2025-12-05 |  |  | SQM-ESTRUCTURA [1010.22 h] | 1,010.22 | 1,010.22 | BREF 1 Y 2 | Kg | 8081,74 | 0 | SDC N°60; SDI N°72-75-77 | 1.2.7 | 7464,24 |
| A1510 |  | Plataforma de Operación Área 4000 Grating | 9d | 2025-11-30 A | 2025-12-20 A | A1500 | 100% |  | 2025-11-28 | 2025-12-06 |  |  | SQM-ESTRUCTURA [194.51 h] | 194.51 | 194.51 | BREF 1 Y 2 | M2 | 126,9 | 0 |  | 1.2.10 | 337 |
| A1520 |  | Plataforma de Operación Área 4000 Barandas FRP | 5d | 2025-12-01 A | 2025-12-21 A | A1510 | 100% |  | 2025-12-07 | 2025-12-11 |  |  | SQM-ESTRUCTURA [94.83 h] | 94.83 | 94.83 | BREF 1 Y 2 | ML | 38,8 | 0 |  | 1.2.11 | 45 |
| A1500 |  | Plataforma de Operación Área 4000 Planchas | 2d | 2025-12-18 A | 2025-12-20 A | A1480 | 100% |  | 2025-11-26 | 2025-11-27 |  |  | SQM-ESTRUCTURA [12.86 h] | 12.86 | 12.86 | BREF 1 Y 2 | Kg | 90,56 | 0 | SDI N°79 | 1.2.9 | 86 |
|  | 4 | **MONTAJE PLATAFORMA DE OPERACIÓN ÁREA 5000** |  | 2025-12-20 | 2026-01-13 |  |  |  |  |  |  |  |  |  |  |  |  |  |  |  |  |  |
| A1540 |  | Plataforma de Operación Área 5000 Estructura Mediana | 8d | 2025-12-20 A | 2025-12-28 A | A1480 SS, A1480 | 100% |  | 2025-11-26 | 2025-12-03 |  |  | SQM-ESTRUCTURA [473.25 h] | 473.25 | 473.25 | ALTO BORO | Kg | 3786 | 0 | SDC N°60; SDI N°72-75-77 | 1.2.13 | 3612,18 |
| A1530 |  | Plataforma de Operación Área 5000 Estructura Liviana | 4d | 2025-12-28 A | 2026-01-01 A | A1540 | 100% |  | 2025-12-04 | 2025-12-07 |  |  | SQM-ESTRUCTURA [189.01 h] | 189.01 | 189.01 | ALTO BORO | kg | 1330,7 | 0 |  | 1.2.12 | 1283,42 |
| A1550 |  | Plataforma de Operación Área 5000. Planchas | 3d | 2026-01-01 A | 2026-01-04 A | A1530 | 100% |  | 2025-12-08 | 2025-12-10 |  |  | SQM-ESTRUCTURA [8.38 h] | 8.38 | 8.38 | ALTO BORO | Kg | 59,01 | 0 | SDI N°79 | 1.2.15 | 38 |
| A1560 |  | Plataforma de Operación Área 5000. Grating T3232 | 6d | 2026-01-04 A | 2026-01-10 A | A1550 | 100% |  | 2025-12-11 | 2025-12-16 |  |  | SQM-ESTRUCTURA [99.17 h] | 99.17 | 99.17 | ALTO BORO | m2 | 64,7 | 0 |  | 1.2.16 | 151 |
| A1570 |  | Plataforma de Operación Área 5000. Barandas FRP Grado 3 | 3d | 2026-01-10 A | 2026-01-13 A | A1560, A1520, A1490 | 100% |  | 2025-12-17 | 2025-12-19 |  |  | SQM-ESTRUCTURA [44.73 h] | 44.73 | 44.73 | ALTO BORO | ML | 18,3 | 0 |  | 1.2.17 | 25 |
|  | 5 | **MONTAJE PARRÓN DESDE PATIO DE ESTANQUES A L5 LiOH** |  | 2025-11-14 | 2026-02-12 |  |  |  |  |  |  |  |  |  |  |  |  |  |  |  |  |  |
| A1580 |  | Estructura A36 Liviana 0@30 Kg /m Parrón desde Patio de Estanques hasta L5 LiOH. | 35d | 2025-11-14 A | 2026-01-10 A | A1590 SS+5d, A1570 FF | 100% |  | 2025-11-27 | 2025-12-31 |  |  | SQM-ESTRUCTURA [6372.6 h] | 6,372.6 | 6,372.6 | PTK A L5 | kg | 44864,808 | 0 | LDO N°39; SDI N°67; SUM S-07 F.Entrega:13-11-25 | 1.2.19 | 44864,808 |
| A1590 |  | Estructura A36 Mediana 31@60 Kg /m Parrón desde Patio de Estanques hasta L5 LiOH. | 77d | 2025-11-14 A | 2026-02-12 A | A1600 SS+5d | 100% |  | 2025-11-22 | 2026-02-06 |  |  | SQM-ESTRUCTURA [9325.65 h] | 9,325.65 | 9,325.65 | PTK A L5 | kg | 74605,18 | 0 | SDC N°77; SDI N67; SUM S-07 F.Entrega:13-11-25 | 1.2.20 | 74605,18 |
| A1600 |  | Estructura A36 Pesada: > 61 Kg /m Parrón desde Patio de Estanques hasta L5 LiOH. | 77d | 2025-11-14 A | 2026-01-28 A | A1450 | 100% |  | 2025-11-17 | 2026-02-01 |  |  | SQM-ESTRUCTURA [6541.74 h] | 6,541.74 | 6,541.74 | PTK A L5 | kg | 66752,48 | 0 | LDO N°14; SDI N°62-64-73; SUM S-07 F.Entrega:13-11-25 | 1.2.21 | 66752,48 |
|  | 6 | **MONTAJE PARRÓN DESDE L5 LiOH A L3 LiOH** |  |  |  |  |  |  |  |  |  |  |  |  |  |  |  |  |  |  |  |  |
|  | 4 | **OBRAS PIPING PATIO DE ESTANQUES** |  | 2025-08-08 | 2026-03-25 |  |  |  |  |  |  |  |  |  |  |  |  |  |  |  |  |  |
|  | 1 | **MONTAJE DE CAÑERÍAS ACERO INOXIDABLE PATIO DE ESTANQUES** |  | 2025-11-29 | 2026-03-20 |  |  |  |  |  |  |  |  |  |  |  |  |  |  |  |  |  |
| A1650 |  | Ø 6" - Cañería Acero Inoxidable | 10d | 2025-11-29 A | 2026-03-16 | A1720 SS, A1580 | 90% | 1d | 2026-01-15 | 2026-01-24 | 27d |  | SQM-PIPING [647.42 h] | 647.42 | 578.8 | PTK | m | 57,6 | 9,79999999999998 |  | 1.9.1.1 | 52,7833609926 |
| A1640 |  | Ø 8" - Cañería Acero Inoxidable | 7d | 2025-12-01 A | 2026-03-16 | A1650 SS | 91% | 0.63d | 2026-01-25 | 2026-01-31 | 27.37d |  | SQM-PIPING [182.65 h] | 182.65 | 160.37 | PTK | m | 10 | 1,95 |  | 1.9.1.2 | 8,40234369975 |
| A1680 |  | Ø 2" - Cañería Acero Inoxidable | 14d | 2025-12-01 A | 2026-03-17 | A1660 SS, A1640 SS | 90% | 1.47d | 2026-02-08 | 2026-02-21 | 26.53d |  | SQM-PIPING [836.16 h] | 836.16 | 717.67 | PTK | m | 160,8 | 170,32 |  | 1.9.1.6 | 107,03946834105 |
| A1660 |  | Ø 4" - Cañería Acero Inoxidable | 7d | 2025-12-28 A | 2026-03-16 | A1640 SS | 94% | 0.43d | 2026-02-01 | 2026-02-07 | 27.57d |  | SQM-PIPING [19.81 h] | 19.81 | 9.51 | PTK | m | 2,3 | 6,4 |  | 1.9.1.4 | 2,11712576985 |
| A1670 |  | Ø 3" - Cañería Acero Inoxidable | 7d | 2025-12-30 A | 2026-03-16 | A1680 SS | 98% | 0.11d | 2026-02-22 | 2026-02-28 | 27.89d |  | SQM-PIPING [3.31 h] | 3.31 | 0.68 | PTK | m | 0,5 | 4,37 |  | 1.9.1.3 | 0,15566066355 |
| A1690 |  | Ø 1" - Cañería Acero Inoxidable | 7d | 2025-12-30 A | 2026-03-20 | A1670 SS, A1830 FF | 99% | 0.06d | 2026-03-01 | 2026-03-07 | 9.47d | 0d | SQM-PIPING [1.99 h] | 1.99 | 0.58 | PTK | m | 1 | 21,5 |  | 1.9.1.5 | 5 |

Notes:
- A1460: Corregir: Falta 1 viga V2021 // por packing son 5 pero por plano son 6 // eje K1 no tiene fundaciones
- A1580: Corregir: R FF
- A1590: Corregir: R FF
- A1600: Corregir: Faltan fundaciones y suministros

| ID | WBS | Activity | Duration | Start | Finish | Predecessors | Complete | Remaining | Planned start | Planned finish | Total float | Free float | Resources | Cost | Actual cost | Área | Unidad | Cantidad | Remanente | Impacto | Ítem EDP | Forecast | Corregir |
| --- | --- | --- | --- | --- | --- | --- | --- | --- | --- | --- | --- | --- | --- | --- | --- | --- | --- | --- | --- | --- | --- | --- | --- |
|  | 2 | **MONTAJE DE CAÑERÍAS HDPE PN16 (P1) PATIO DE ESTANQUES** |  | 2025-08-08 | 2026-03-23 |  |  |  |  |  |  |  |  |  |  |  |  |  |  |  |  |  |  |
| A1720 |  | Ø 160 mm - Cañería HDPE, PE 100, PN10 | 160d | 2025-08-08 A | 2026-03-18 | A1060 SS | 98% | 3d | 2025-08-08 | 2026-01-14 | 11d | 4d | SQM-PIPING [7927.22 h] | 7,927.22 | 7,485.68 | PTK | m | 6074,5 | 538,2 | LDO N°12-31; SDI N°21-44-66 | 1.9.2.8 | 7234,8980831274 |  |
| A1750 |  | Ø 63 mm - Cañería HDPE, PE 100, PN10 | 14d | 2025-08-08 A | 2026-03-23 | A1720 SS | 48% | 7.21d | 2025-08-08 | 2025-08-21 | 20.79d |  | SQM-PIPING [266.04 h] | 266.04 | 81.01 | PTK | m | 189,8 | 536,3 |  | 1.9.2.5 | 189,8 |  |
| A1760 |  | Ø 50 mm - Cañería HDPE, PE 100, PN10 | 3d | 2025-08-22 A | 2026-03-16 | A1750 SS | 99% | 0.02d | 2025-08-22 | 2025-08-24 | 27.98d |  | SQM-PIPING [0.52 h] | 0.52 | 0.05 | PTK | m | 0,3854218011 | 241,83854218011 |  | 1.9.2.1 | 0,3854218011 |  |
| A1770 |  | Ø 40 mm - Cañería HDPE, PE 100, PN10 | 4d | 2025-08-25 A | 2026-03-16 | A1760 SS | 98% | 0.07d | 2025-08-25 | 2025-08-28 | 27.93d |  | SQM-PIPING [1.81 h] | 1.81 | 0.22 | PTK | m | 1,33399300125 | 6,200593701125 |  | 1.9.2.2 | 1,33399300125 | R FF |
| A1780 |  | Ø 32 mm - Cañería HDPE, PE 100, PN10 | 3d | 2025-08-29 A | 2026-03-16 | A1770 SS | 99% | 0.02d | 2025-08-29 | 2025-08-31 | 27.98d |  | SQM-PIPING [1.03 h] | 1.03 | 0.46 | PTK | m | 0,75790213065 | 64,45474127839 |  | 1.9.2.3 | 0,75790213065 | R FF |
| A1700 |  | Ø 250 mm - Cañería HDPE, PE 100, PN10 | 14d | 2025-11-04 A | 2026-03-16 | A1650 SS | 93% | 1d | 2026-01-25 | 2026-02-07 | 27d |  | SQM-PIPING [29.25 h] | 29.25 | 19.07 | PTK | m | 10 | 11,5 |  | 1.9.2.4 | 10 |  |
| A1710 |  | Ø 200 mm - Cañería HDPE, PE 100, PN10 | 7d | 2025-11-18 A | 2026-03-16 | A1700 SS | 86% | 1d | 2026-02-08 | 2026-02-14 | 27d |  | SQM-PIPING [56.84 h] | 56.84 | 31.94 | PTK | m | 25,26 | 19,826 | SDI N°39 | 1.9.2.9 | 25,26 | R FF |
| A1730 |  | Ø 110 mm - Cañería HDPE, PE 100, PN10 | 14d | 2025-11-25 A | 2026-03-17 | A1710 SS | 86% | 2d | 2026-02-15 | 2026-02-28 | 26d |  | SQM-PIPING [1730.21 h] | 1,730.21 | 1,626.4 | PTK | m | 1349,09 | 91,45 | SDI N°16-20-21-44-66 | 1.9.2.7 | 1355,09 |  |
| A1740 |  | Ø 90 mm - Cañería HDPE, PE 100, PN10 | 14d | 2025-12-01 A | 2026-03-20 | A1730 SS, A1860 FF, A1840 FF | 71% | 4d | 2026-03-01 | 2026-03-14 | 9d | 2d | SQM-PIPING [266.25 h] | 266.25 | 58.31 | PTK | m | 207,6 | 52,3 | LDO N°12; SDI N°4 | 1.9.2.6 | 1,10271699825 |  |
|  | 3 | **MONTAJE DE CAÑERÍAS HDPE PN16 (P7) PATIO DE ESTANQUES** |  | 2025-09-01 | 2026-03-20 |  |  |  |  |  |  |  |  |  |  |  |  |  |  |  |  |  |  |
| A1790 |  | Ø 90 mm - Cañería HDPE, PE 100, PN16 | 6d | 2025-09-01 A | 2026-03-16 | A1110 SS, A1780 SS | 99% | 0.03d | 2025-09-01 | 2025-09-06 | 27.97d |  | SQM-PIPING [0.77 h] | 0.77 | 0.01 | PTK | m | 0,6 | 49,06 |  | 1.9.3.4 | 0,6 |  |
| A1800 |  | DN 75 mm - Cañería HDPE, PE 100, PN16 | 8d | 2025-09-07 A | 2026-03-17 | A1790 SS | 83% | 1.38d | 2025-09-07 | 2025-09-14 | 26.62d |  | SQM-PIPING [1027.42 h] | 1,027.42 | 895.08 | PTK | m | 733 | 91,6 | SDI N°21-44-66 | 1.9.3.2 | 730 |  |
| A1810 |  | Ø 63 mm - Cañería HDPE, PE 100, PN16 | 3d | 2025-09-07 A | 2026-03-16 | A1790 SS | 83% | 0.51d | 2025-09-07 | 2025-09-09 | 27.49d |  | SQM-PIPING [14.02 h] | 14.02 | 1.78 | PTK | m | 10 | 79,56875025902 |  | 1.9.3.3 | 14,1875002878 |  |
| A1820 |  | Ø 40 mm - Cañería HDPE, PE 100, PN16 | 3d | 2025-09-10 A | 2026-03-20 | A1810 SS, A1850 FF | 100% | 0.01d | 2025-09-10 | 2025-09-12 | 23.1d |  | SQM-PIPING [0.17 h] | 0.17 | 0.02 | PTK | m | 0,1291143 | 28,11620287 |  | 1.9.3.1 | 0,1291143 | R FF |
|  | 4 | **MONTAJE DE FITTING Y VÁLVULAS PATIO DE ESTANQUES** |  | 2025-08-08 | 2026-03-20 |  |  |  |  |  |  |  |  |  |  |  |  |  |  |  |  |  |  |
| A1850 |  | Montaje de Fitting HDPE (P7) GL | 8d | 2025-08-08 A | 2026-03-20 | A1750 SS | 39% | 4.9d | 2025-08-08 | 2025-08-15 | 23.1d | 0d | SQM-PIPING [636.87 h] | 636.87 | 246.78 |  | gl | 154 |  |  |  |  |  |
| A1860 |  | Válvulas Patio de Estanques.(Global) | 160d | 2025-08-18 A | 2026-03-20 | A1720 SS+10d | 97% | 5d | 2025-08-18 | 2026-01-24 | 9d | 0d | SQM-PIPING [1423.5 h] | 1,423.5 | 1,001.15 |  | gl | 173 |  |  |  |  |  |
| A1830 |  | Montaje de Fitting Acero Inoxidable GL | 10d | 2025-12-01 A | 2026-03-20 | A1650 SS | 55% | 4.53d | 2026-01-15 | 2026-01-24 | 9.47d | 0d | SQM-PIPING [1442.73 h] | 1,442.73 | 789.49 |  | gl | 270 |  |  |  |  |  |
| A1840 |  | Montaje de Fitting HDPE (P1) GL | 160d | 2025-12-25 A | 2025-12-25 A | A1720 SS+4d | 100% |  | 2025-08-12 | 2026-01-18 |  |  | SQM-PIPING [5314.89 h] | 5,314.89 | 5,314.89 |  | gl | 1426 |  |  |  |  |  |
|  | 5 | **MONTAJE DE SOPORTACIÓN PIPING PATIO DE ESTANQUES** |  | 2025-08-26 | 2026-03-25 |  |  |  |  |  |  |  |  |  |  |  |  |  |  |  |  |  |  |
| A1880 |  | P1.3 x 37 un. - Pedestales para Tuberías Elevadas | 12d | 2025-08-26 A | 2026-03-18 | A1720 SS, A1750 SS | 82% | 2.11d | 2025-09-10 | 2025-09-21 | 18d | 25.89d | SQM-PIPING [1178.1 h] | 1,178.1 | 302.78 | PTK | kg | 4675 | 0 | LDO N°44; SDI N°40 | 1.5.1 | 1201,5 |  |
| A1910 |  | P4 x 40 un. - Pedestales para Tuberías Elevadas | 7d | 2025-09-10 A | 2026-03-16 | A1890 SS | 86% | 1d | 2025-09-10 | 2025-09-16 | 13d | 6d | SQM-PIPING [109.82 h] | 109.82 | 88.72 | PTK | kg | 435,8 | 83,7999999999999 |  | 1.5.4 | 435,8 |  |
| A1920 |  | U3 x 5454 un. - Abrazadera para Tuberías Elevadas | 36d | 2025-11-04 A | 2026-03-20 | A1910 SS, A1690 FF | 94% | 2d | 2026-01-31 | 2026-03-07 | 9.47d |  | SQM-PIPING [253.07 h] | 253.07 | 170.32 | PTK | kg | 1032,92785684306 | 1299,93083015862 |  | 1.5.5 | 1644,93083015862 |  |
| A1890 |  | P1.6 x 51 un. - Pedestal para Tuberías Elevadas. | 10d | 2026-03-16 | 2026-03-25 | A1880 SS |  |  |  |  | 18d |  | SQM-PIPING [487.44 h] | 487.44 |  |  | kg | 1934,3 | 1934,3 |  |  |  |  |

| ID | WBS | Activity | Duration | Start | Finish | Predecessors | Complete | Remaining | Planned start | Planned finish | Total float | Free float | Resources | Cost | Actual cost | Área | Unidad | Cantidad | Remanente | Impacto | Ítem EDP | Forecast |
| --- | --- | --- | --- | --- | --- | --- | --- | --- | --- | --- | --- | --- | --- | --- | --- | --- | --- | --- | --- | --- | --- | --- |
|  | 6 | **TIE-IN DE LÍNEAS ASOCIADAS A PATIO DE ESTANQUES** |  | 2026-01-14 | 2026-03-16 |  |  |  |  |  |  |  |  |  |  |  |  |  |  |  |  |  |
| A1960 |  | Tie-In N° 4402 - Línea proyectada TAG: 160-BREF-5817-P1-4520 con equipo existente TAG: 5735-EST-5250 | 1d | 2026-01-14 A | 2026-03-16 | A1950 SS |  | 1d | 2026-01-14 | 2026-01-14 | 27d |  | SQM-PIPING [15.75 h] | 15.75 | 14.18 | PTK | un | 1 | 0,1 | LDO N°15 | 1.10.4 | 1 |
| A1930 |  | Tie-In N° 1442 - Línea proyectada TAG: 110-W-5817-P1-1715 con existente TAG: 50-WW-5752-IA-7575 | 1d | 2026-02-04 A | 2026-02-05 A | A1720, A1740 | 100% |  | 2026-03-15 | 2026-03-15 |  |  | SQM-PIPING [10.5 h] | 10.5 | 10.5 | PTK | un | 1 | 0 | SDI N°9 | 1.10.1 | 1 |
| A1940 |  | Tie-In N° 1471 - Línea proyectada TAG: 75-PW-5817-P7-1910 con existente TAG: 63-PW-5759-P5-3900 | 1d | 2026-02-05 A | 2026-02-06 A | A1800, A1930 | 100% |  | 2026-03-16 | 2026-03-16 |  |  | SQM-PIPING [7 h] | 7 | 7 | PTK | un | 1 | 0 | LDO N°29; SDI N°9 | 1.10.2 | 1 |
| A1950 |  | Tie-In N° 4401 - Línea proyectada TAG: 160-BREF-5817-P1-4504 con existente TAG: 160-BB-5759-P5-3153 | 1d | 2026-02-12 A | 2026-02-13 A | A1720 FF | 100% |  | 2026-01-14 | 2026-01-14 |  |  | SQM-PIPING [15.75 h] | 15.75 | 15.75 | PTK | un | 1 | 0 | LDO N°29 | 1.10.3 | 1 |
| A2020 |  | Tie-In N° 5401 - Línea existente TAG:160-LMB-5759-P5-3352 a proyectada TAG:160-SAB-5817-P1-5504 | 1d | 2026-02-18 A | 2026-02-19 A | A1970 | 100% |  | 2026-01-16 | 2026-01-16 |  |  | SQM-PIPING [15.75 h] | 15.75 | 15.75 | PTK | un | 1 | 0 | LDO N°29; SDI N°9 | 1.10.10 | 1 |
| A1970 |  | Tie-In N° 4403 - Línea proyectada TAG: 160-BREF-5817-P1-4524 con equipo existente TAG: 5759-EST-001 | 1d | 2026-03-16 | 2026-03-16 | A1960 SS+1d |  |  |  |  | 27d |  | SQM-PIPING |  |  | PTK | un | 0 | 1 | LDO N°15 | 1.10.5 | 1 |
| A2030 |  | Tie-In N° 5402 - Línea proyectada TAG: 160-SAB-5817- P1-5503 con equipo existente TAG: 5735-EST-1800 | 1d | 2026-03-16 | 2026-03-16 | A2020 SS |  |  |  |  | 13d | 6d | SQM-PIPING |  |  | PTK | un | 0 | 1 |  | 1.10.11 | 1 |
|  | 5 | **OBRAS ELÉCTRICAS PATIO DE ESTANQUES** |  | 2025-02-17 | 2026-03-22 |  |  |  |  |  |  |  |  |  |  |  |  |  |  |  |  |  |
|  | 1 | **TENDIDO Y CONEXIONADO DE CABLES BAJA TENSIÓN PATIO DE ESTANQUES** |  | 2025-11-01 | 2026-03-22 |  |  |  |  |  |  |  |  |  |  |  |  |  |  |  |  |  |
| A2140 |  | Cable de Fuerza Multiconductor de Cobre Blando, 1x4C #6 AWG | 4d | 2025-11-01 A | 2026-03-17 | A2360 SS | 64% | 1.45d | 2025-11-01 | 2025-11-05 | 24.55d | 1.89d | SQM-ELÉCTRICO [319.8 h] | 319.8 | 180.8 | PTK | m | 650 | 107,512218045113 |  | 2.1.7 | 475 |
| A2150 |  | Cable de Fuerza Multiconductor de Cobre Blando, 1x4C #4 AWG | 6d | 2025-11-01 A | 2026-03-21 | A2140 SS |  | 6d | 2025-11-01 | 2025-11-07 | 22d |  | SQM-ELÉCTRICO [621.26 h] | 621.26 | 289.1 | PTK | m | 983 | 134,562666389351 |  | 2.1.8 | 592 |
| A2160 |  | Cable de Fuerza Multiconductor de Cobre Blando, 1x4C #2 AWG | 3d | 2025-11-07 A | 2026-03-18 | A2150 SS |  | 3d | 2025-11-07 | 2025-11-10 | 25d |  | SQM-ELÉCTRICO [384.26 h] | 384.26 | 183.28 | PTK | m | 608 | 81 |  | 2.1.9 | 371 |
| A2180 |  | Cable de Fuerza Multiconductor de Cobre Blando, 1x5C #14 AWG | 28d | 2025-11-07 A | 2026-03-22 | A2170 SS | 75% | 7d | 2025-11-07 | 2025-12-05 | 7d | 0d | SQM-ELÉCTRICO [940.7 h] | 940.7 | 640.27 | PTK | m | 1912 | 91,6477111426545 |  | 2.1.11 | 1393 |
| A2170 |  | Cable de Fuerza Multiconductor de Cobre Blando, 1x3C #6 AWG | 14d | 2025-12-01 A | 2026-01-06 A | A2160 SS | 100% |  | 2025-11-07 | 2025-11-21 |  |  | SQM-ELÉCTRICO [227.3 h] | 227.3 | 227.3 | PTK | m | 462 | 36,5999999999999 | SDI N°53 | 2.1.10 | 795 |
|  | 2 | **MONTAJE DE CANALIZACIÓN Y FERRETERÍA PATIO DE ESTANQUES** |  | 2025-02-17 | 2026-03-19 |  |  |  |  |  |  |  |  |  |  |  |  |  |  |  |  |  |
| A2250 |  | Instalación de Copla para Cañería de Acero Galvanizado 3"Ø. Incluye Copla. | 3.33d | 2025-02-17 A | 2026-03-16 | A2240 SS | 95% | 0.18d | 2025-10-21 | 2025-10-24 | 27.82d |  | SQM-ELÉCTRICO [8.4 h] | 8.4 | 4.2 |  | m | 40 |  |  |  |  |
| A2260 |  | Instalación de Conexión Terminal para Cañería de Acero Galvanizado 3"Ø. | 3.33d | 2025-02-17 A | 2026-03-16 | A2250 SS | 99% | 0.03d | 2025-10-24 | 2025-10-27 | 27.97d |  | SQM-ELÉCTRICO [1.68 h] | 1.68 | 0.84 |  | m | 8 |  |  |  |  |
| A2240 |  | Conduit Flexible Metálico con Cubierta PVC 3" Ø Trabajo Pesado | 2d | 2025-10-19 A | 2026-03-16 | A2230 SS | 79% | 0.42d | 2025-10-19 | 2025-10-20 | 27.58d |  | SQM-ELÉCTRICO [19.95 h] | 19.95 | 9.98 | PTK | m | 19 | 0,15 |  | 2.1.18 | 8 |
| A2300 |  | Conduit de Acero Galvanizado, 2"Ø, tipo Conduit ANSI C80.1.Incluye Copla | 8d | 2025-10-24 A | 2026-03-19 | A2260 SS | 55% | 3.64d | 2025-10-24 | 2025-11-01 | 24.36d |  | SQM-ELÉCTRICO [611.1 h] | 611.1 | 261.97 | PTK | m | 582 | 0 |  | 2.1.24 | 572 |
| A2310 |  | Conduit Flexible Metálico con Cubierta PVC 2" Ø Trabajo Pesado | 8d | 2025-11-01 A | 2026-03-18 | A2300 SS | 73% | 2.16d | 2025-11-01 | 2025-11-09 | 25.84d |  | SQM-ELÉCTRICO [85.05 h] | 85.05 | 33.11 | PTK | m | 81 | 0,469523809523814 |  | 2.1.25 | 188 |
| A2330 |  | Conduit de Acero Galvanizado, 1 1/2"Ø, tipo Conduit ANSI C80.1. Incluye Copla | 8d | 2025-11-01 A | 2026-03-16 | A2300 SS | 93% | 0.59d | 2025-11-01 | 2025-11-09 | 27.41d |  | SQM-ELÉCTRICO [283.5 h] | 283.5 | 255.15 | PTK | m | 450 | 68,4 |  | 2.1.27 | 148 |
| A2230 |  | Conduit de Acero Galvanizado 3"Ø, tipo Conduit ANSI C80.1 | 5d | 2025-12-01 A | 2025-12-20 A | A2360, A2400 | 100% |  | 2025-10-19 | 2025-10-23 |  |  | SQM-ELÉCTRICO [121.8 h] | 121.8 | 121.8 | PTK | m | 116 | 0 |  | 2.1.17 | 66 |
| A2320 |  | Conexión Terminal para Cañería de Acero Galvanizado 2"Ø | 3d | 2025-12-01 A | 2025-12-18 A | A2310 | 100% |  | 2025-11-09 | 2025-11-12 |  |  | SQM-ELÉCTRICO [7.35 h] | 7.35 | 7.35 | PTK | c/u | 35 | 0 |  | 2.1.26 | 75 |
| A2340 |  | Conduit Flexible Metálico con Cubierta PVC 1 1/2" Ø Trabajo Pesado. | 3.33d | 2026-03-16 | 2026-03-19 | A2330 SS |  |  |  |  | 22.67d | 0d | SQM-ELÉCTRICO |  |  |  | m | 0 | 0,1 |  |  |  |

| ID | WBS | Activity | Duration | Start | Finish | Predecessors | Complete | Remaining | Planned start | Planned finish | Total float | Free float | Resources | Cost | Actual cost | Área | Unidad | Cantidad | Remanente | Impacto | Ítem EDP | Forecast | Corregir |
| --- | --- | --- | --- | --- | --- | --- | --- | --- | --- | --- | --- | --- | --- | --- | --- | --- | --- | --- | --- | --- | --- | --- | --- |
|  | 3 | **MONTAJE DE ESCALERILLAS Y PIEZAS ESPECIALES PATIO DE ESTANQUES** |  | 2025-09-22 | 2026-03-20 |  |  |  |  |  |  |  |  |  |  |  |  |  |  |  |  |  |  |
| A2360 |  | EPC Porta Conductores 600x100mm e:2 mm, tiras 3m. Incluir tapa dos aguas, eclisas y pernos de Unión. | 13d | 2025-09-22 A | 2026-03-18 | A1880 SS, A1910 SS | 82% | 2.36d | 2025-09-22 | 2025-10-04 | 15.7d | 0d | SQM-ELÉCTRICO [1848 h] | 1,848 | 1,030.4 | PTK | m | 330 | 36 | LDO N°28; SDI N°26-45 | 2.2.1 | 220 |  |
| A2370 |  | EPC Curva Horizontal de 90°, 600x100mm e:2mm. Incluir tapa dos aguas, eclisas y pernos de Unión. | 9d | 2025-09-28 A | 2026-03-20 | A2360 FF+2d | 98% | 0.14d | 2025-09-28 | 2025-10-06 | 23.64d |  | SQM-ELÉCTRICO [11.2 h] | 11.2 | 7.75 | PTK | c/u | 2 | 1,85 |  | 2.2.2 | 6 | R FF |
| A2380 |  | EPC Curva Vertical Interior de 90°, 600x100mm e:2mm. Incluir tapa dos aguas, eclisas y pernos de Unión. | 4d | 2025-10-07 A | 2026-03-16 | A2370 SS | 97% | 0.13d | 2025-10-07 | 2025-10-10 | 23.87d | 0d | SQM-ELÉCTRICO [5.6 h] | 5.6 | 2.42 | PTK | c/u | 1 | 1,7 |  | 2.2.3 | 3 |  |
| A2400 |  | EPC DerivaciØn tipo TEE, 600x100mm e:2mm. Incluir tapa dos aguas, eclisas y pernos de Unión. | 8d | 2025-10-11 A | 2026-03-18 | A2390 SS | 73% | 2.17d | 2025-10-11 | 2025-10-18 | 15.88d | 0.19d | SQM-ELÉCTRICO [67.2 h] | 67.2 | 15.12 | PTK | c/u | 12 | 4,3 |  | 2.2.5 | 7 |  |
| A2390 |  | EPC Curva Vertical Exterior de 90°, 600x100mm e:2mm. Incluir tapa dos aguas, eclisas y pernos de Unión. | 4d | 2026-03-16 | 2026-03-20 | A2380 |  |  |  |  | 23.87d |  | SQM-ELÉCTRICO |  |  | PTK | c/u | 0 | 7,2 |  | 2.2.4 | 10 |  |
|  | 4 | **MONTAJE DE EQUIPOS ELÉCTRICOS PATIO DE ESTANQUES** |  | 2025-11-12 | 2026-03-17 |  |  |  |  |  |  |  |  |  |  |  |  |  |  |  |  |  |  |
| A2440 |  | Estación Local Marca Allen Bradley o Equivalente, para Trabajo Pesado, NEMA 4X | 10d | 2025-11-12 A | 2026-03-17 | A2320, A2230 | 89% | 1.12d | 2025-11-12 | 2025-11-22 | 26.88d |  | SQM-ELÉCTRICO [616 h] | 616 | 522.67 | PTK | c/u | 22 | 0,333333333333332 | LDO N°45; SDC N°67 | 2.5.1 | 19 |  |
|  | 5 | **MONTAJE DE SISTEMA DE ILUMINACIÓN PATIO DE ESTANQUES** |  | 2025-11-01 | 2026-03-21 |  |  |  |  |  |  |  |  |  |  |  |  |  |  |  |  |  |  |
| A2500 |  | Poste Recto Acero Galvanizado 3" Ø 4m | 7d | 2025-11-01 A | 2026-03-16 | A2510 SS | 93% | 0.52d | 2025-11-05 | 2025-11-12 | 27.48d |  | SQM-ELÉCTRICO [126 h] | 126 | 113.4 | PTK | c/u | 12 | 7,2 |  | 2.6.4 | 18 |  |
| A2490 |  | Postes Abatible Swivelpole Acero Galvanizado 1 1/2" Ø x 4m | 10d | 2025-11-08 A | 2025-12-21 A | A2500 | 100% |  | 2025-11-12 | 2025-11-22 |  |  | SQM-ELÉCTRICO [319.2 h] | 319.2 | 319.2 | PTK | c/u | 38 | 0 | LDO N°43; SDC N°43; SDI N°52 | 2.6.3 | 34 |  |
| A2480 |  | Proyector de Área LED 200W - 220VAC - 50Hz, IP65, 2.200ØK, 12.800 Lm | 10d | 2025-11-18 A | 2026-03-21 |  | 46% | 5.36d | 2025-11-22 | 2025-12-02 | 22.64d |  | SQM-ELÉCTRICO [882 h] | 882 | 367.5 | PTK | c/u | 60 | 9 |  | 2.6.2 | 34 |  |
| A2470 |  | Luminaria LED Tipo Campana Industrial Según DS N°1 35W - 220VAC - 50Hz, IP65 o Nema4X, 2.200ØK, 432,0 Lm | 11d | 2025-11-28 A | 2025-12-21 A | A2480 | 100% |  | 2025-12-02 | 2025-12-13 |  |  | SQM-ELÉCTRICO [645.8 h] | 645.8 | 645.8 | PTK | m | 34 | 0 |  | 2.6.1 | 34 |  |
| A2520 |  | Caja de Conexión Hermética 100x100x60 mm. Nema 4X con 6 Bornes de 6mm. | 5d | 2025-12-01 A | 2026-03-17 | A2470 | 60% | 1.97d | 2025-12-13 | 2025-12-18 | 26.03d |  | SQM-ELÉCTRICO [308.57 h] | 308.57 | 144 | PTK | m | 60 | 0 |  | 2.6.6 | 28 |  |
| A2530 |  | Instalación y Conexión de !quipos de Iluminación. | 4d | 2025-12-13 A | 2026-03-16 | A2520 SS | 99% | 0.06d | 2025-12-18 | 2025-12-22 | 25.94d | 3.03d | SQM-ELÉCTRICO [168 h] | 168 | 164.64 | PTK | gl | 1 | 0,02 |  | 2.6.7 | 1 |  |
| A2510 |  | Poste Recto Acero Galvanizado 3" Ø 2,5m | 2d | 2026-03-19 | 2026-03-21 | A2140, A2340 |  |  |  |  | 22.67d |  | SQM-ELÉCTRICO |  |  | PTK | c/u | 0 | 0 |  | 2.6.5 | 6 |  |
|  | 6 | **MONTAJE SISTEMA PUESTA A TIERRA PATIO DE ESTANQUES** |  | 2025-12-01 | 2026-03-18 |  |  |  |  |  |  |  |  |  |  |  |  |  |  |  |  |  |  |
| A2550 |  | Cable de Cobre Desnudo Temple Blando, N° 2/0 AWG, 19 Hebras. | 20d | 2025-12-01 A | 2026-03-16 | A2530 SS | 97% | 0.58d | 2025-12-22 | 2026-01-11 | 27.42d |  | SQM-ELÉCTRICO [710.24 h] | 710.24 | 682.54 | PTK | m | 920 | 55 | LDO N°47; SDI N°36 | 2.8.2 | 1400 |  |
| A2650 |  | Caja de Barra Puesta a Tierra 500x400x200mm, de Poliéster con Tapa. | 10d | 2025-12-23 A | 2026-03-18 | A2550 SS | 77% | 2.3d | 2026-01-11 | 2026-01-21 | 15.76d | 0.06d | SQM-ELÉCTRICO [210 h] | 210 | 144.9 | PTK | c/u | 5 | 3,1 |  | 2.8.12 | 10 |  |
|  | 6 | **OBRAS DE INSTRUMENTACIÓN PATIO DE ESTANQUES** |  | 2025-12-01 | 2026-03-28 |  |  |  |  |  |  |  |  |  |  |  |  |  |  |  |  |  |  |
|  | 1 | **TENDIDO Y CONEXIONADO DE CABLES DE COMUNICACIÓN PATIO DE ESTANQUES** |  | 2025-12-01 | 2026-03-18 |  |  |  |  |  |  |  |  |  |  |  |  |  |  |  |  |  |  |
| A2660 |  | Cable Fibra Óptica Multimodo Exterior 12 fibras OM3 LSZH | 8d | 2025-12-01 A | 2026-03-18 | A2800 SS | 69% | 2.47d | 2026-02-23 | 2026-03-03 | 23.53d | 0.63d | SQM-INSTRUMENTACIÓN [478 h] | 478 | 279.15 | PTK | m | 1000 | 146 |  | 3.1.1 | 730 |  |
|  | 2 | **TENDIDO Y CONEXIONADO DE CABLES DE INSTRUMENTACIÓN PATIO DE ESTANQUES** |  | 2025-12-01 | 2026-03-19 |  |  |  |  |  |  |  |  |  |  |  |  |  |  |  |  |  |  |
| A2680 |  | Cable de Instrumentación (Señales Análogas), 1x1 par #16 AWG Apantallado | 10d | 2025-12-01 A | 2026-03-19 | A2660 SS | 64% | 3.62d | 2026-03-03 | 2026-03-13 | 24.38d | 0d | SQM-INSTRUMENTACIÓN [478.04 h] | 478.04 | 244.2 | PTK | m | 1615 | 283 |  | 3.2.1 | 1108 |  |
| A2690 |  | Cable de Control Multiconductor de Cobre Blando, 1x3c #14 AWG, Clase 1,0 kV | 4d | 2025-12-01 A | 2026-03-19 | A2680 FF | 69% | 1.25d | 2026-03-09 | 2026-03-13 | 24.38d |  | SQM-INSTRUMENTACIÓN [106.26 h] | 106.26 | 61.27 | PTK | m | 359 | 73 |  | 3.2.2 | 275 | R FF |
| A2700 |  | Cable de Control Multiconductor de Cobre Blando, 1x3c #14 AWG, Clase 0,3 kV | 4d | 2025-12-01 A | 2026-03-17 | A2690 SS | 52% | 1.92d | 2026-03-13 | 2026-03-17 | 24.08d | 1.17d | SQM-INSTRUMENTACIÓN [177.9 h] | 177.9 | 62.46 | PTK | m | 601 | 219 |  | 3.2.3 | 389 |  |

| ID | WBS | Activity | Duration | Start | Finish | Predecessors | Complete | Remaining | Planned start | Planned finish | Total float | Free float | Resources | Cost | Actual cost | Área | Unidad | Cantidad | Corregir | Remanente | Ítem EDP | Forecast |
| --- | --- | --- | --- | --- | --- | --- | --- | --- | --- | --- | --- | --- | --- | --- | --- | --- | --- | --- | --- | --- | --- | --- |
|  | 3 | **TENDIDO Y CONEXIONADO DE CABLES DE ALIMENTACIÓN 120V PATIO DE ESTANQUES** |  | 2025-12-01 | 2026-03-19 |  |  |  |  |  |  |  |  |  |  |  |  |  |  |  |  |  |
| A2710 |  | Cable de Control Multiconductor de Cobre Blando, 1x3c #12 AWG, Clase 1,0 kV | 9d | 2025-12-01 A | 2026-03-19 | A2700 FF, A2650 FF | 66% | 3.09d | 2026-03-08 | 2026-03-17 | 22.91d | 0d | SQM-INSTRUMENTACIÓN [263.44 h] | 263.44 | 141.22 | PTK | m | 890 | R FF | 103,9 | 3.3.1 | 607 |
|  | 4 | **MONTAJE DE CANALIZACIÒN Y FERRETERÍA PATIO DE ESTANQUES** |  | 2025-12-01 | 2026-03-28 |  |  |  |  |  |  |  |  |  |  |  |  |  |  |  |  |  |
| A2770 |  | Conduit de acero galvanizado 1"Ø, tipo conduit ANSI C80.1 | 5d | 2025-12-01 A | 2026-03-17 | A2760 SS | 71% | 1.44d | 2026-02-10 | 2026-02-15 | 26.56d |  | SQM-INSTRUMENTACIÓN [343.35 h] | 343.35 | 209.54 | PTK | m | 545 |  | 180,4 | 3.4.5 | 513 |
| A2790 |  | Conduit flexible Metálico con cubierta PVC 1/2" Ø | 4d | 2025-12-01 A | 2026-03-16 | A2770 SS | 75% | 0.99d | 2026-02-15 | 2026-02-19 | 27.01d |  | SQM-INSTRUMENTACIÓN [52.92 h] | 52.92 | 29.23 | PTK | m | 84 |  | 25,6 | 3.4.7 | 72 |
| A2800 |  | Caja metØlica de Distribución 100x100x65mm | 4d | 2025-12-01 A | 2026-03-16 | A2790 SS | 92% | 0.3d | 2026-02-19 | 2026-02-23 | 27.7d |  | SQM-INSTRUMENTACIÓN [288 h] | 288 | 259.2 | PTK | un | 30 |  | 3 | 3.12.1 | 30 |
| A2810 |  | Riel unistrut 42x42x2,5 mm, acero galvanizado, tiras de 3 metros | 4d | 2025-12-01 A | 2026-03-16 | A2730 SS | 94% | 0.24d | 2026-02-05 | 2026-02-09 | 27.76d |  | SQM-INSTRUMENTACIÓN [120 h] | 120 | 110.4 | PTK | un | 100 |  | 8 | 3.12.2 | 100 |
| A2730 |  | EPC porta conductores de acero galvanizado 600x100x2,5mm. Incluye eclipsas, pernos y tapa dos aguas. | 4.95d | 2026-03-18 | 2026-03-23 | A2360, A2400, A2650 |  |  |  |  | 15.7d | 0d | SQM-INSTRUMENTACIÓN |  |  | PTK | m | 0 |  | 78 | 3.4.1 | 200 |
| A2740 |  | EPC Curva Tipo "T", 600x100x2,5mm. Incluir tapa dos aguas, eclisas y pernos de Unión. | 3d | 2026-03-23 | 2026-03-26 | A2730 |  |  |  |  | 15.7d | 0d | SQM-INSTRUMENTACIÓN |  |  | PTK | un | 0 |  | 4 | 3.4.2 | 8 |
| A2760 |  | Conduit de acero galvanizado 1"Ø, tipo conduit ANSI C80.1 | 2d | 2026-03-26 | 2026-03-28 | A2740 |  |  |  |  | 15.7d |  | SQM-INSTRUMENTACIÓN |  |  | PTK | un | 0 |  | 31,5 | 3.4.4 | 35 |
|  | 5 | **ARMADO Y MONTAJE DE EQUIPOS E INSTRUMENTOS PATIO DE ESTANQUES** |  | 2026-03-19 | 2026-03-21 |  |  |  |  |  |  |  |  |  |  |  |  |  |  |  |  |  |
| A2840 |  | Fuente Ininterrumpida de Poder Tag N°5817-UPS-1202. Conexión de UPS a TPM de planta. | 2d | 2026-03-19 | 2026-03-21 | A2660, A2530, A2710 |  |  |  |  | 22.91d |  | SQM-INSTRUMENTACIÓN |  |  | PTK | un | 0 |  | 1 | 3.5.3 | 0 |
|  | 6 | **MONTAJE, CONEXIONADO Y PRUEBAS DE INSTRUMENTOS - SENSORES Y TRANSMISORES DE FLUJO PATIO ESTANQUES** |  | 2025-12-01 | 2026-03-16 |  |  |  |  |  |  |  |  |  |  |  |  |  |  |  |  |  |
| A2850 |  | Tubo sensor de Flujo Magnético y Transmisor Remoto Tag FE/FIT-1301 | 1d | 2025-12-01 A | 2026-03-16 | A2840 SS |  | 1d | 2026-03-19 | 2026-03-20 | 27d |  | SQM-INSTRUMENTACIÓN [31.5 h] | 31.5 | 28.35 | PTK | un | 1 |  | 0,1 | 3.6.1 | 1 |
| A2860 |  | Tubo sensor de Flujo Magnético y Transmisor Remoto Tag FE/FIT-1306 | 1d | 2025-12-01 A | 2026-03-16 | A2850 SS |  | 1d | 2026-03-19 | 2026-03-20 | 27d |  | SQM-INSTRUMENTACIÓN [31.5 h] | 31.5 | 28.35 | PTK | un | 1 |  | 0,1 | 3.6.2 | 1 |
| A2890 |  | Tubo sensor de Flujo Magnético y Transmisor Remoto Tag FE/FIT-1207 | 1d | 2025-12-01 A | 2026-03-16 | A2870 SS |  | 1d | 2026-03-20 | 2026-03-21 | 27d |  | SQM-INSTRUMENTACIÓN [31.5 h] | 31.5 | 29.93 | PTK | un | 1 |  | 0,0500000000000001 | 3.6.5 | 1 |
| A2900 |  | Tubo sensor de Flujo Magnético y Transmisor Remoto Tag FE/FIT-4102 | 1d | 2025-12-01 A | 2026-03-16 | A2890 SS, A2870 SS |  | 1d | 2026-03-21 | 2026-03-22 | 27d |  | SQM-INSTRUMENTACIÓN [31.5 h] | 31.5 | 17.33 | PTK | un | 1 |  | 0,45 | 3.6.6 | 1 |
| A2910 |  | Tubo sensor de Flujo Magnético y Transmisor Remoto Tag FE/FIT-4103 | 1d | 2025-12-01 A | 2026-03-16 | A2900 SS |  | 1d | 2026-03-21 | 2026-03-22 | 27d |  | SQM-INSTRUMENTACIÓN [31.5 h] | 31.5 | 17.33 | PTK | un | 1 |  | 0,45 | 3.6.7 | 1 |
| A2920 |  | Tubo sensor de Flujo Magnético y Transmisor Remoto Tag FE/FIT-4104 | 1d | 2025-12-01 A | 2026-03-16 | A2910 SS |  | 1d | 2026-03-21 | 2026-03-22 | 27d |  | SQM-INSTRUMENTACIÓN [31.5 h] | 31.5 | 28.35 | PTK | un | 1 |  | 0,1 | 3.6.8 | 1 |
| A2930 |  | Tubo sensor de Flujo Magnético y Transmisor Remoto Tag FE/FIT-5102 | 1d | 2025-12-01 A | 2026-03-16 | A2920 SS |  | 1d | 2026-03-21 | 2026-03-22 | 27d |  | SQM-INSTRUMENTACIÓN [31.5 h] | 31.5 | 6.3 | PTK | un | 1 |  | 0,8 | 3.6.9 | 1 |
| A2870 |  | Tubo sensor de Flujo Magnético y Transmisor Remoto Tag FE/FIT-1307 | 1d | 2025-12-07 A | 2026-03-16 | A2860 SS |  | 1d | 2026-03-19 | 2026-03-20 | 27d |  | SQM-INSTRUMENTACIÓN [31.5 h] | 31.5 | 29.93 | PTK | un | 1 |  | 0,0500000000000001 | 3.6.3 | 1 |
|  | 7 | **MONTAJE, PRUEBAS Y CONEXIONADO DE INSTRUMENTOS - TRANSMISORES DE NIVEL PATIO ESTANQUES** |  | 2025-12-01 | 2026-03-16 |  |  |  |  |  |  |  |  |  |  |  |  |  |  |  |  |  |
| A2940 |  | Transmisor de Nivel Tag LT-1301 | 1d | 2025-12-01 A | 2026-03-16 | A2930 SS |  | 1d | 2026-03-22 | 2026-03-23 | 27d |  | SQM-INSTRUMENTACIÓN [19.35 h] | 19.35 | 17.42 | PTK | un | 1 |  | 0,1 | 3.7.1 | 1 |
| A2950 |  | Transmisor de Nivel Tag LT-1201 | 1d | 2025-12-01 A | 2026-03-16 | A2940 SS |  | 1d | 2026-03-22 | 2026-03-23 | 27d |  | SQM-INSTRUMENTACIÓN [19.35 h] | 19.35 | 17.42 | PTK | un | 1 |  | 0,1 | 3.7.2 | 1 |
| A2960 |  | Transmisor de Nivel Tag LT-4101 | 1d | 2025-12-01 A | 2026-03-16 | A2950 SS |  | 1d | 2026-03-22 | 2026-03-23 | 27d |  | SQM-INSTRUMENTACIÓN [19.35 h] | 19.35 | 17.42 | PTK | un | 1 |  | 0,1 | 3.7.3 | 1 |
| A2970 |  | Transmisor de Nivel Tag LT-4102 | 1d | 2025-12-01 A | 2026-03-16 | A2960 SS |  | 1d | 2026-03-22 | 2026-03-23 | 27d |  | SQM-INSTRUMENTACIÓN [19.35 h] | 19.35 | 17.42 | PTK | un | 1 |  | 0,1 | 3.7.4 | 1 |
| A2980 |  | Transmisor de Nivel Tag LT-5101 | 1d | 2025-12-01 A | 2026-03-16 | A2970 SS |  | 1d | 2026-03-23 | 2026-03-24 | 27d |  | SQM-INSTRUMENTACIÓN [19.35 h] | 19.35 | 17.42 | PTK | un | 1 |  | 0,1 | 3.7.5 | 1 |

| ID | WBS | Activity | Duration | Start | Finish | Predecessors | Remaining | Planned start | Planned finish | Total float | Free float | Resources | Cost | Actual cost | Área | Unidad | Cantidad | Remanente | Ítem EDP | Forecast |
| --- | --- | --- | --- | --- | --- | --- | --- | --- | --- | --- | --- | --- | --- | --- | --- | --- | --- | --- | --- | --- |
|  | 8 | **MONTAJE, PRUEBAS Y CONEXIONADO DE INSTRUMENTOS - INTERRUPTOR DE PRESIÓN PATIO ESTANQUES** |  | 2025-12-01 | 2026-03-16 |  |  |  |  |  |  |  |  |  |  |  |  |  |  |  |
| A2990 |  | Interruptor de Nivel Tag PSL-1301 | 1d | 2025-12-01 A | 2026-03-16 | A2980 SS | 1d | 2026-03-23 | 2026-03-24 | 27d |  | SQM-INSTRUMENTACIÓN [19.35 h] | 19.35 | 3.87 | PTK | un | 1 | 0,8 | 3.8.1 | 1 |
| A3000 |  | Interruptor de Nivel Tag PSL-1302 | 1d | 2025-12-01 A | 2026-03-16 | A2990 SS | 1d | 2026-03-23 | 2026-03-24 | 27d |  | SQM-INSTRUMENTACIÓN [19.35 h] | 19.35 | 3.87 | PTK | un | 1 | 0,8 | 3.8.2 | 1 |
|  | 9 | **MONTAJE, PRUEBAS Y CONEXIONADO DE INSTRUMENTOS - INTERRUPTOR DE NIVEL PATIO ESTANQUES** |  | 2025-12-01 | 2026-03-16 |  |  |  |  |  |  |  |  |  |  |  |  |  |  |  |
| A3010 |  | Interruptor de Nivel Tag LCHL-1201 | 1d | 2025-12-01 A | 2026-03-16 | A3000 SS | 1d | 2026-03-23 | 2026-03-24 | 27d |  | SQM-INSTRUMENTACIÓN [19.35 h] | 19.35 | 3.87 | PTK | un | 1 | 0,8 | 3.9.1 | 1 |
| A3020 |  | Interruptor de Nivel Tag LCHL-4101 | 1d | 2025-12-01 A | 2026-03-16 | A3010 SS | 1d | 2026-03-24 | 2026-03-25 | 27d |  | SQM-INSTRUMENTACIÓN [19.35 h] | 19.35 | 10.64 | PTK | un | 1 | 0,45 | 3.9.2 | 1 |
| A3030 |  | Interruptor de Nivel Tag LCHL-5101 | 1d | 2025-12-01 A | 2026-03-16 | A3020 SS | 1d | 2026-03-24 | 2026-03-25 | 27d |  | SQM-INSTRUMENTACIÓN [19.35 h] | 19.35 | 10.64 | PTK | un | 1 | 0,45 | 3.9.3 | 1 |
|  | 10 | **MONTAJE, PRUEBAS Y CONEXIONADO DE INSTRUMENTOS - INTERRUPTOR DE FLUJO PATIO ESTANQUES** |  | 2025-12-01 | 2026-03-16 |  |  |  |  |  |  |  |  |  |  |  |  |  |  |  |
| A3040 |  | Interruptor de Nivel Tag FS-4101 | 1d | 2025-12-01 A | 2026-03-16 | A3030 SS | 1d | 2026-03-24 | 2026-03-25 | 27d |  | SQM-INSTRUMENTACIÓN [19.35 h] | 19.35 | 3.87 | PTK | un | 1 | 0,8 | 3.10.1 | 1 |
| A3050 |  | Interruptor de Nivel Tag FS-4102 | 1d | 2025-12-01 A | 2026-03-16 | A3040 SS | 1d | 2026-03-24 | 2026-03-25 | 27d |  | SQM-INSTRUMENTACIÓN [19.35 h] | 19.35 | 3.87 | PTK | un | 1 | 0,8 | 3.10.2 | 1 |
| A3060 |  | Interruptor de Nivel Tag FS-5101 | 1d | 2025-12-01 A | 2026-03-16 | A3050 SS | 1d | 2026-03-25 | 2026-03-26 | 27d |  | SQM-INSTRUMENTACIÓN [19.35 h] | 19.35 | 3.87 | PTK | un | 1 | 0,8 | 3.10.3 | 1 |
| A3070 |  | Interruptor de Nivel Tag FS-8101 | 1d | 2025-12-01 A | 2026-03-16 | A3060 SS | 1d | 2026-03-25 | 2026-03-26 | 27d |  | SQM-INSTRUMENTACIÓN [19.35 h] | 19.35 | 1.94 | PTK | un | 1 | 0,9 | 3.10.4 | 1 |
|  | 11 | **MONTAJE DE INSTRUMENTOS - INDICADORES DE PRESIÓN (MANÓMETROS) PATIO ESTANQUES** |  | 2025-12-01 | 2026-03-16 |  |  |  |  |  |  |  |  |  |  |  |  |  |  |  |
| A3080 |  | Indicador de Presión (Manómetro) Tag PI-1201 | 1d | 2025-12-01 A | 2026-03-16 | A3070 SS | 1d | 2026-03-25 | 2026-03-26 | 27d |  | SQM-INSTRUMENTACIÓN [2.5 h] | 2.5 | 0.5 | PTK | un | 1 | 0,8 | 3.11.1 | 1 |
| A3090 |  | Indicador de Presión (Manómetro) Tag PI-1202 | 1d | 2025-12-01 A | 2026-03-16 | A3080 SS | 1d | 2026-03-25 | 2026-03-26 | 27d |  | SQM-INSTRUMENTACIÓN [2.5 h] | 2.5 | 0.5 | PTK | un | 1 | 0,8 | 3.11.2 | 1 |
| A3100 |  | Indicador de Presión (Manómetro) Tag PI-1203 | 1d | 2025-12-01 A | 2026-03-16 | A3090 SS | 1d | 2026-03-26 | 2026-03-27 | 27d |  | SQM-INSTRUMENTACIÓN [2.5 h] | 2.5 | 0.5 | PTK | un | 1 | 0,8 | 3.11.3 | 1 |
| A3130 |  | Indicador de Presión (Manómetro) Tag PI-1301 | 1d | 2025-12-01 A | 2026-03-16 | A3100 SS | 1d | 2026-03-27 | 2026-03-28 | 27d |  | SQM-INSTRUMENTACIÓN [2.5 h] | 2.5 | 0.5 | PTK | un | 1 | 0,8 | 3.11.6 | 1 |
| A3140 |  | Indicador de Presión (Manómetro) Tag PI-1302 | 1d | 2025-12-01 A | 2026-03-16 | A3130 SS, A3100 SS | 1d | 2026-03-28 | 2026-03-29 | 27d |  | SQM-INSTRUMENTACIÓN [2.5 h] | 2.5 | 0.5 | PTK | un | 1 | 0,8 | 3.11.7 | 1 |
| A3150 |  | Indicador de Presión (Manómetro) Tag PI-1303 | 1d | 2025-12-01 A | 2026-03-16 | A3140 SS | 1d | 2026-03-28 | 2026-03-29 | 27d |  | SQM-INSTRUMENTACIÓN [2.5 h] | 2.5 | 0.5 | PTK | un | 1 | 0,8 | 3.11.8 | 1 |
| A3160 |  | Indicador de Presión (Manómetro) Tag PI-1304 | 1d | 2025-12-01 A | 2026-03-16 | A3150 SS | 1d | 2026-03-28 | 2026-03-29 | 27d |  | SQM-INSTRUMENTACIÓN [2.5 h] | 2.5 | 0.5 | PTK | un | 1 | 0,8 | 3.11.9 | 1 |
| A3170 |  | Indicador de Presión (Manómetro) Tag PI-1305 | 1d | 2025-12-01 A | 2026-03-16 | A3160 SS | 1d | 2026-03-28 | 2026-03-29 | 27d |  | SQM-INSTRUMENTACIÓN [2.5 h] | 2.5 | 0.5 | PTK | un | 1 | 0,8 | 3.11.10 | 1 |
| A3180 |  | Indicador de Presión (Manómetro) Tag PI-4103 | 1d | 2025-12-01 A | 2026-03-16 | A3170 SS | 1d | 2026-03-29 | 2026-03-30 | 27d |  | SQM-INSTRUMENTACIÓN [2.5 h] | 2.5 | 0.5 | PTK | un | 1 | 0,8 | 3.11.11 | 1 |
| A3190 |  | Indicador de Presión (Manómetro) Tag PI-4104 | 1d | 2025-12-01 A | 2026-03-16 | A3180 SS | 1d | 2026-03-29 | 2026-03-30 | 27d |  | SQM-INSTRUMENTACIÓN [2.5 h] | 2.5 | 0.5 | PTK | un | 1 | 0,8 | 3.11.12 | 1 |
| A3200 |  | Indicador de Presión (Manómetro) Tag PI-4105 | 1d | 2025-12-01 A | 2026-03-16 | A3190 SS | 1d | 2026-03-29 | 2026-03-30 | 27d |  | SQM-INSTRUMENTACIÓN [2.5 h] | 2.5 | 0.5 | PTK | un | 1 | 0,8 | 3.11.13 | 1 |
| A3210 |  | Indicador de Presión (Manómetro) Tag PI-4106 | 1d | 2025-12-01 A | 2026-03-16 | A3200 SS | 1d | 2026-03-29 | 2026-03-30 | 27d |  | SQM-INSTRUMENTACIÓN [2.5 h] | 2.5 | 0.5 | PTK | un | 1 | 0,8 | 3.11.14 | 1 |
| A3220 |  | Indicador de Presión (Manómetro) Tag PI-4107 | 1d | 2025-12-01 A | 2026-03-16 | A3210 SS | 1d | 2026-03-30 | 2026-03-31 | 27d |  | SQM-INSTRUMENTACIÓN [2.5 h] | 2.5 | 0.5 | PTK | un | 1 | 0,8 | 3.11.15 | 1 |
| A3240 |  | Indicador de Presión (Manómetro) Tag PI-5103 | 1d | 2025-12-01 A | 2026-03-16 | A3230 SS | 1d | 2026-03-30 | 2026-03-31 | 27d |  | SQM-INSTRUMENTACIÓN [2.5 h] | 2.5 | 0.5 | PTK | un | 1 | 0,8 | 3.11.17 | 1 |
| A3250 |  | Indicador de Presión (Manómetro) Tag PI-5104 | 1d | 2025-12-01 A | 2026-03-16 | A3240 SS, A2810 SS | 1d | 2026-03-30 | 2026-03-31 | 13d | 6d | SQM-INSTRUMENTACIÓN [2.5 h] | 2.5 | 0.5 | PTK | un | 1 | 0,8 | 3.11.18 | 1 |
| A3230 |  | Indicador de Presión (Manómetro) Tag PI-4108 | 1d | 2025-12-12 A | 2026-03-16 | A3220 SS | 1d | 2026-03-30 | 2026-03-31 | 27d |  | SQM-INSTRUMENTACIÓN [2.5 h] | 2.5 | 0.5 | PTK | un | 1 | 0,8 | 3.11.16 | 1 |

| ID | WBS | Activity | Duration | Start | Finish | Predecessors | Complete | Planned start | Planned finish | Resources | Cost | Actual cost | Área | Unidad | Cantidad | Remanente | Impacto | Ítem EDP | Forecast | Corregir |
| --- | --- | --- | --- | --- | --- | --- | --- | --- | --- | --- | --- | --- | --- | --- | --- | --- | --- | --- | --- | --- |
|  | 2 | **CONTRATO ADDENDUM 01 - OOCC Y MEM MISCELÁNEOS** |  | 2025-09-11 | 2026-03-30 |  |  |  |  |  |  |  |  |  |  |  |  |  |  |  |
|  | 1 | **HABILITACIÓN DATA CENTER ZONA NORTE - ÁREA 5801** |  | 2025-09-21 | 2026-03-17 |  |  |  |  |  |  |  |  |  |  |  |  |  |  |  |
|  | 1 | **ÁREA 5801 - SECTOR DATA CENTER 5801** |  | 2025-09-21 | 2026-03-17 |  |  |  |  |  |  |  |  |  |  |  |  |  |  |  |
|  | 1 | **OBRAS CIVILES DATA CENTER 5801** |  | 2025-10-16 | 2025-12-16 |  |  |  |  |  |  |  |  |  |  |  |  |  |  |  |
|  | 1 | **SUMINISTRO Y MONTAJE ASOCIADO A CERCO PERIMETRAL DATA CENTER 5801** |  | 2025-10-16 | 2025-12-16 |  |  |  |  |  |  |  |  |  |  |  |  |  |  |  |
| A3340 |  | Excavación para Fundaciones Cerco Perimetral Data Center | 2d | 2025-10-16 A | 2025-12-15 A | A3460 | 100% | 2025-10-06 | 2025-10-07 | SQM-OOCC [42.21 h] | 42.21 | 42.21 | 5801-DC | m3 | 16,08 | 0 | SDC N°71; SDI N°7-8 | 1.1.1.1 | 16,871 |  |
| A3350 |  | Emplantillado (G-05) para Fundaciones Cerco Perimetral Data Center | 1d | 2025-10-18 A | 2025-12-15 A | A3340 | 100% | 2025-10-08 | 2025-10-08 | SQM-OOCC [7.73 h] | 7.73 | 7.73 | 5801-DC | m3 | 0,69 | 0 |  | 1.1.1.2 | 0,9704396 |  |
| A3370 |  | Armadura de Refuerzo para Fundaciones Cerco Perimetral Data Center | 4d | 2025-10-19 A | 2025-12-16 A | A3350 | 100% | 2025-10-09 | 2025-10-12 | SQM-OOCC [211.59 h] | 211.59 | 211.59 | 5801-DC | kg | 1382,95 | 0 |  | 1.1.1.4 | 1383 |  |
| A3360 |  | Hormigonado (G-25) para Fundaciones Cerco Perimetral Data Center | 2d | 2025-10-23 A | 2025-10-25 A | A3370 | 100% | 2025-10-13 | 2025-10-14 | SQM-OOCC [186.48 h] | 186.48 | 186.48 | 5801-DC | m3 | 15,54 | 0 |  | 1.1.1.3 | 8 |  |
| A3390 |  | Pilar prefabricado PP7530 Cerco Perimetral Data Center | 7d | 2025-10-25 A | 2025-12-11 A | A3360 | 100% | 2025-10-15 | 2025-10-21 | SQM-OOCC [723.25 h] | 723.25 | 723.25 | 5801-DC | un | 44 | 0 |  | 1.1.1.6 | 44 |  |
| A3380 |  | Cierro Fijo ACMAFOR Data Center | 3d | 2025-11-01 A | 2025-12-11 A | A3390 | 100% | 2025-10-22 | 2025-10-24 | SQM-OOCC [305.11 h] | 305.11 | 305.11 | 5801-DC | m2 | 209,52 | 0 |  | 1.1.1.5 | 209 |  |
| A3400 |  | Accesos a Cierro Perimetral Data Center | 9d | 2025-11-04 A | 2025-12-15 A | A3380 | 100% | 2025-10-25 | 2025-11-02 | SQM-OOCC [360 h] | 360 | 360 | 5801-DC | un | 4 | 0 | SDC N °71 | 1.1.1.7 | 4 |  |
|  | 2 | **OBRAS ESTRUCTURALES DATA CENTER 5801** |  | 2025-11-13 | 2025-12-16 |  |  |  |  |  |  |  |  |  |  |  |  |  |  |  |
|  | 1 | **ACERO ESTRUCTURAL, PLATAFORMA DATA CENTER 5801** |  | 2025-11-13 | 2025-12-16 |  |  |  |  |  |  |  |  |  |  |  |  |  |  |  |
| A3410 |  | Estructuras Livianas, Plataforma Data Center | 5d | 2025-11-13 A | 2025-12-15 A | A3400 | 100% | 2025-11-03 | 2025-11-07 | SQM-ESTRUCTURA [276.69 h] | 276.69 | 276.69 | 5801-DC | kg | 1820,31 | 0 |  | 1.2.1.1 | 1820,34 | MODIFIDCACIï¿½N DE ESTRUCTURA POR DIFERENCIA DE COTAS |
| A3430 |  | Barandas, Plataforma Data Center | 3d | 2025-11-18 A | 2025-12-15 A | A3410 | 100% | 2025-11-08 | 2025-11-10 | SQM-ESTRUCTURA [147.74 h] | 147.74 | 147.74 | 5801-DC | kg | 971,96 | 0 |  | 1.2.1.3 | 990 |  |
| A3420 |  | Parrillas de Piso, Plataforma Data Center | 2d | 2025-11-21 A | 2025-12-15 A | A3430 | 100% | 2025-11-11 | 2025-11-12 | SQM-ESTRUCTURA [293.75 h] | 293.75 | 293.75 | 5801-DC | kg | 1932,58 | 0 |  | 1.2.1.2 | 1906,3 |  |
| A3440 |  | Escaleras, Plataforma Data Center | 3d | 2025-11-23 A | 2025-12-15 A | A3420 | 100% | 2025-11-13 | 2025-11-15 | SQM-ESTRUCTURA [15.07 h] | 15.07 | 15.07 | 5801-DC | kg | 99,12 | 0 |  | 1.2.1.4 | 100 |  |
| A3450 |  | Grout Fundaciones Estructura Data Center | 3d | 2025-11-26 A | 2025-12-16 A | A3440 | 100% | 2025-11-16 | 2025-11-18 | SQM-ESTRUCTURA [0.76 h] | 0.76 | 0.76 | 5801-DC | m3 | 0,012 | 0 |  | 1.2.1.5 | 0,012 |  |
|  | 3 | **OBRAS MECÁNICAS DATA CENTER 5801** |  | 2025-09-21 | 2025-12-15 |  |  |  |  |  |  |  |  |  |  |  |  |  |  |  |
|  | 1 | **MONTAJE Y PRUEBAS DE DATA CENTER 5801** |  | 2025-09-21 | 2025-12-08 |  |  |  |  |  |  |  |  |  |  |  |  |  |  |  |
| A3460 |  | Data center TAG 5808-SDAT-1701 | 25d | 2025-09-21 A | 2025-12-08 A | A1070 SS | 100% | 2025-09-11 | 2025-10-05 | SQM-MECANICA [1392 h] | 1,392 | 1,392 | 5801-DC | un | 1 | 0 |  | 1.3.1.1 | 1 |  |
|  | 2 | **MONTAJE Y PRUEBAS DE BOMBAS DOSIFICADORAS DATA CENTER 5801** |  | 2025-10-20 | 2025-12-15 |  |  |  |  |  |  |  |  |  |  |  |  |  |  |  |
| A3470 |  | Bomba dosificadora TAG 5801-BBA-3100 | 4d | 2025-10-20 A | 2025-12-15 A | A3520 | 100% | 2025-09-15 | 2025-09-18 | SQM-MECANICA [98.25 h] | 98.25 | 98.25 | 5801-DC | un | 1 | 0 |  | 1.3.2.1 | 1 | BOMBAS SE LIBERAN AYER 07.11 |
| A3480 |  | Bomba dosificadora TAG 5801-BBA-3103 | 4d | 2025-10-24 A | 2025-12-15 A | A3470 SS | 100% | 2025-09-15 | 2025-09-18 | SQM-MECANICA [98.25 h] | 98.25 | 98.25 | 5801-DC | un | 1 | 0 |  | 1.3.2.2 | 1 |  |

| ID | WBS | Activity | Duration | Start | Finish | Predecessors | Complete | Planned start | Planned finish | Resources | Cost | Actual cost | Área | Unidad | Cantidad | Remanente | Ítem EDP | Forecast | Corregir |
| --- | --- | --- | --- | --- | --- | --- | --- | --- | --- | --- | --- | --- | --- | --- | --- | --- | --- | --- | --- |
|  | 3 | **MONTAJE Y PRUEBAS DE ESTANQUES DATA CENTER 5801** |  | 2025-10-16 | 2025-12-08 |  |  |  |  |  |  |  |  |  |  |  |  |  |  |
| A3490 |  | Estanque IBC para almcenamiento de agua. TAG 5801-EST-3106 | 1d | 2025-10-16 A | 2025-12-08 A | A3460 SS | 100% | 2025-09-11 | 2025-09-11 | SQM-MECANICA [12.3 h] | 12.3 | 12.3 | 5801-DC | un | 1 | 0 | 1.3.3.1 | 1 |  |
| A3500 |  | Estanque IBC para almcenamiento de agua. TAG 5801-EST-3107 | 1d | 2025-10-17 A | 2025-12-08 A | A3490 | 100% | 2025-09-12 | 2025-09-12 | SQM-MECANICA [12.3 h] | 12.3 | 12.3 | 5801-DC | un | 1 | 0 | 1.3.3.2 | 1 |  |
| A3510 |  | Estanque IBC para almcenamiento de agua. | 1d | 2025-10-18 A | 2025-12-08 A | A3500 | 100% | 2025-09-13 | 2025-09-13 | SQM-MECANICA [12.3 h] | 12.3 | 12.3 | 5801-DC | un | 1 | 0 | 1.3.3.3 | 1 |  |
| A3520 |  | Estanque IBC para almcenamiento de agua. | 1d | 2025-10-19 A | 2025-12-08 A | A3510 | 100% | 2025-09-14 | 2025-09-14 | SQM-MECANICA [12.3 h] | 12.3 | 12.3 | 5801-DC | un | 1 | 0 | 1.3.3.4 | 1 |  |
|  | 4 | **OBRAS PIPING DATA CENTER 5801** |  | 2025-10-28 | 2025-12-28 |  |  |  |  |  |  |  |  |  |  |  |  |  |  |
|  | 1 | **MONTAJE DE CAÑERÍAS DATA CENTER 5801** |  | 2025-10-28 | 2025-12-28 |  |  |  |  |  |  |  |  |  |  |  |  |  |  |
| A3540 |  | Ø 1" - Cañería Acero Inoxidable - Fabricación | 5d | 2025-10-28 A | 2025-12-15 A | A3480 SS | 100% | 2025-09-15 | 2025-09-19 | SQM-PIPING [162 h] | 162 | 162 | 5801-DC | uniØn | 81 | 0 | 1.4.1.2 | 55 | ASOCIAR CON BOMBAS |
| A3530 |  | Ø 1 " - Cañería Acero Inoxidable - Montaje | 3d | 2025-10-30 A | 2025-12-15 A | A3540 | 100% | 2025-09-20 | 2025-09-22 | SQM-PIPING [27.26 h] | 27.26 | 27.26 | 5801-DC | m | 24,409 | 0 | 1.4.1.1 | 25 |  |
| A3580 |  | Ø 1-1/4" - Cañería Acero Inoxidable - Fabricación | 2d | 2025-11-05 A | 2025-12-18 A | A3550 | 100% | 2025-09-27 | 2025-09-28 | SQM-PIPING [54 h] | 54 | 54 | 5801-DC | uniØn | 18 | 0 | 1.4.1.6 | 2 |  |
| A3570 |  | Ø 1-1/4 " - Cañería Acero Inoxidable - Montaje | 2d | 2025-11-06 A | 2025-12-18 A | A3580 | 100% | 2025-09-29 | 2025-09-30 | SQM-PIPING [1.96 h] | 1.96 | 1.96 | 5801-DC | m | 1,17 | 0 | 1.4.1.5 | 2 | R FF |
| A3600 |  | Ø 2" - Cañería Acero Inoxidable - Fabricación | 3d | 2025-11-08 A | 2025-12-18 A | A3570 | 100% | 2025-10-01 | 2025-10-03 | SQM-PIPING [122.73 h] | 122.73 | 122.73 | 5801-DC | uniØn | 24,3 | 0 | 1.4.1.8 | 15 |  |
| A3590 |  | Ø 2 " - Cañería Acero Inoxidable - Montaje | 3d | 2025-11-09 A | 2025-12-28 A | A3610 FF, A3620, A3600, A3480 | 100% | 2025-10-08 | 2025-10-10 | SQM-PIPING [36.66 h] | 36.66 | 36.66 | 5801-DC | m | 13,1319 | 0 | 1.4.1.7 | 12 | R FF |
| A3560 |  | Ø 3/4" - Cañería Acero Inoxidable - Fabricación | 2d | 2025-12-15 A | 2025-12-17 A | A3530 | 100% | 2025-09-23 | 2025-09-24 | SQM-PIPING [3.5 h] | 3.5 | 3.5 | 5801-DC | uniØn | 2 | 0 | 1.4.1.4 | 2 |  |
| A3550 |  | Ø 3/4 " - Cañería Acero Inoxidable - Montaje | 2d | 2025-12-16 A | 2025-12-18 A | A3560 | 100% | 2025-09-25 | 2025-09-26 | SQM-PIPING [0.32 h] | 0.32 | 0.32 | 5801-DC | m | 0,3 | 0 | 1.4.1.3 | 6 | R FF |
|  | 2 | **MONTAJE DE VÁLVULAS Y FITTING PIPING DATA CENTER 5801** |  | 2025-12-15 | 2025-12-28 |  |  |  |  |  |  |  |  |  |  |  |  |  |  |
| A3610 |  | Montaje de Fitting Acero Inoxidable GL Data Center | 15d | 2025-12-15 A | 2025-12-28 A | A3530 | 100% | 2025-09-23 | 2025-10-07 | SQM-PIPING [388.56 h] | 388.56 | 388.56 | 5801-DC | un | 92 | 0 | 99.4 | 92 |  |
| A3620 |  | Válvulas Data Center (Global) | 15d | 2025-12-15 A | 2025-12-28 A | A3530, A3610 SS | 100% | 2025-09-23 | 2025-10-07 | SQM-PIPING [58.41 h] | 58.41 | 58.41 | 5801-DC | un | 15 | 0 | 99.13 | 15 |  |
|  | 5 | **OBRAS ELÉCTRICAS DATA CENTER 5801** |  | 2025-10-16 | 2026-03-17 |  |  |  |  |  |  |  |  |  |  |  |  |  |  |
|  | 1 | **MONTAJE Y CONEXIONADO CONDUCTORES FUERZA Y CONTROL DATA CENTER 5801** |  | 2025-10-18 | 2026-03-17 |  |  |  |  |  |  |  |  |  |  |  |  |  |  |
|  | 1 | **TENDIDO Y CONEXIONADO CABLES FUERZA MONOCONDUCTOR DATA CENTER 5801** |  | 2025-10-18 | 2025-12-15 |  |  |  |  |  |  |  |  |  |  |  |  |  |  |
| A3630 |  | Cable Fuerza 3x1c # 350 MCM | 5d | 2025-10-18 A | 2025-12-15 A | A3480, A3620 SS | 100% | 2025-09-23 | 2025-09-27 | SQM-ELÉCTRICO [149.48 h] | 149.48 | 149.48 | 5801-DC | m | 284 | 0 | 1.5.1.1.1 | 284 |  |
| A3640 |  | Cable Fuerza 3x1c # 500 MCM | 4d | 2025-10-23 A | 2025-12-15 A | A3630 | 100% | 2025-09-28 | 2025-10-01 | SQM-ELÉCTRICO [60.99 h] | 60.99 | 60.99 | 5801-DC | m | 79 | 0 | 1.5.1.1.2 | 79 |  |
| A3650 |  | Cable tierra 1x1c # 2/0 AWG (VERDE) | 2d | 2025-10-27 A | 2025-12-15 A | A3640 | 100% | 2025-10-02 | 2025-10-03 | SQM-ELÉCTRICO [20.8 h] | 20.8 | 20.8 | 5801-DC | m | 59,2 | 0 | 1.5.1.1.3 | 75 |  |

| ID | WBS | Activity | Duration | Start | Finish | Predecessors | Complete | Remaining | Planned start | Planned finish | Total float | Resources | Cost | Actual cost | Área | Unidad | Cantidad | Remanente | Ítem EDP | Forecast | Corregir | Impacto |
| --- | --- | --- | --- | --- | --- | --- | --- | --- | --- | --- | --- | --- | --- | --- | --- | --- | --- | --- | --- | --- | --- | --- |
|  | 2 | **TENDIDO Y CONEXIONADO CABLES FUERZA MULTICONDUCTOR DATA CENTER 5801** |  | 2025-10-29 | 2026-03-17 |  |  |  |  |  |  |  |  |  |  |  |  |  |  |  |  |  |
| A3660 |  | Cable Fuerza 1x4c # 12 AWG | 2d | 2025-10-29 A | 2025-12-15 A | A3650 | 100% |  | 2025-10-04 | 2025-10-05 |  | SQM-ELÉCTRICO [25.57 h] | 25.57 | 25.57 | 5801-DC | m | 70 | 0 | 1.5.1.2.1 | 70 |  |  |
| A3670 |  | Cable Fuerza 1x4c # 8 AWG | 2d | 2025-10-31 A | 2025-12-16 A | A3660 | 100% |  | 2025-10-06 | 2025-10-07 |  | SQM-ELÉCTRICO [16.23 h] | 16.23 | 16.23 | 5801-DC | m | 30 | 0 | 1.5.1.2.2 | 30 |  |  |
| A3690 |  | Cables Control 1x5c # 14 AWG | 2d | 2025-11-04 A | 2025-12-15 A | A3680 | 100% |  | 2025-10-10 | 2025-10-11 |  | SQM-ELÉCTRICO [24.59 h] | 24.59 | 24.59 | 5801-DC | m | 70 | 0 | 1.5.1.2.4 | 70 |  |  |
| A3700 |  | Cables Control 1x3c # 12 AWG | 2d | 2025-11-06 A | 2025-12-15 A | A3690 | 100% |  | 2025-10-12 | 2025-10-13 |  | SQM-ELÉCTRICO [5.48 h] | 5.48 | 5.48 | 5801-DC | m | 15 | 0 | 1.5.1.2.5 | 26 |  |  |
| A3680 |  | Cable Fuerza 1x5c # 8 AWG | 2d | 2026-03-16 | 2026-03-17 | A3670 |  |  |  |  | 26d | SQM-ELÉCTRICO |  |  | 5801-DC | m | 0 | 0 | 1.5.1.2.3 | 12 |  |  |
|  | 2 | **MONTAJE DE CANALIZACIÓN Y FERRETERÍA DATA CENTER 5801** |  | 2025-10-16 | 2025-12-15 |  |  |  |  |  |  |  |  |  |  |  |  |  |  |  |  |  |
| A3710 |  | C.A.G. 1", con Hilo y Copla de Unión, Según Norma ANSI C80-1. | 2d | 2025-10-16 A | 2025-12-15 A | A3460, A3700 | 100% |  | 2025-10-14 | 2025-10-15 |  | SQM-ELÉCTRICO [17.01 h] | 17.01 | 17.01 | 5801-DC | m | 13,5 | 0 | 1.5.2.1 | 20 |  |  |
| A3720 |  | Conduit Flexible de Acero de 1" de Diámetro, con Chaqueta de PVC. | 2d | 2025-10-18 A | 2025-12-08 A | A3710 | 100% |  | 2025-10-16 | 2025-10-17 |  | SQM-ELÉCTRICO [25.2 h] | 25.2 | 25.2 | 5801-DC | m | 20 | 0 | 1.5.2.2 | 20 | R FF |  |
|  | 3 | **MONTAJE Y CONEXIONADO EQUIPOS DE ALUMBRADO DATA CENTER 5801** |  | 2025-10-18 | 2026-03-16 |  |  |  |  |  |  |  |  |  |  |  |  |  |  |  |  |  |
| A3730 |  | Cable Fuerza 1x3c #12 AWG | 2d | 2025-10-18 A | 2026-03-16 | A3710, A3720 | 95% | 0.1d | 2025-10-18 | 2025-10-19 | 27.9d | SQM-ELÉCTRICO [54.8 h] | 54.8 | 51.15 | 5801-DC | m | 150 | 0 | 1.5.3.1 | 130 |  |  |
| A3740 |  | Montaje y Soportación C.A.G. 1", con Hilo y Copla de Unión, Según Norma ANSI C80-1 | 2d | 2025-10-20 A | 2025-12-09 A | A3730 | 100% |  | 2025-10-20 | 2025-10-21 |  | SQM-ELÉCTRICO [151.2 h] | 151.2 | 151.2 | 5801-DC | m | 120 | 0 | 1.5.3.2 | 120 |  |  |
| A3760 |  | Poste Recto/Curvo de Acero Galvanizado, 6 m útiles. | 6d | 2025-10-22 A | 2025-12-18 A | A3740 | 100% |  | 2025-10-22 | 2025-10-27 |  | SQM-ELÉCTRICO [276 h] | 276 | 276 | 5801-DC | c/u | 11 | 0 | 1.5.3.4 | 11 |  |  |
| A3750 |  | Equipo de Alumbrado Público LED de 120 W, para Poste Tubular 6m.(LUZ CALIDA) | 6d | 2025-10-28 A | 2025-12-18 A | A3740 SS, A3760, A3720 | 100% |  | 2025-10-28 | 2025-11-02 |  | SQM-ELÉCTRICO [276 h] | 276 | 276 | 5801-DC | c/u | 11 | 0 | 1.5.3.3 | 11 |  | LDO N°14-15 |
|  | 4 | **MONTAJE, CONEXIÓN Y PRUEBAS EQUIPOS DE CONTROL BOMBAS DATA CENTER 5801** |  | 2025-11-03 | 2025-12-15 |  |  |  |  |  |  |  |  |  |  |  |  |  |  |  |  |  |
| A3770 |  | Estación Local y Elementos Asociados. | 2d | 2025-11-03 A | 2025-12-15 A | A3750 | 100% |  | 2025-11-03 | 2025-11-04 |  | SQM-ELÉCTRICO [84 h] | 84 | 84 | 5801-DC | c/u | 2 | 0 | 1.5.4.1 | 2 |  |  |
| A3780 |  | Cable de Cobre electrolítico Desnudo, 2/0 AWG | 3d | 2025-11-05 A | 2025-12-15 A | A3770 | 100% |  | 2025-11-05 | 2025-11-07 |  | SQM-ELÉCTRICO [95.04 h] | 95.04 | 95.04 | 5801-DC | c/u | 33 | 0 | 1.5.4.2 | 50 | R FF |  |
|  | 5 | **MONTAJE/HABILITACIÓN DE EQUIPOS ELÉCTRICOS PRINCIPALES DATA CENTER 5801** |  | 2025-11-17 | 2025-12-27 |  |  |  |  |  |  |  |  |  |  |  |  |  |  |  |  |  |
| A3800 |  | Tablero de Distribución de Fuerza y Alumbrado TAG: 5870-PNL-3101 | 3d | 2025-11-17 A | 2025-12-27 A | A3790 | 100% |  | 2025-11-17 | 2025-11-19 |  | SQM-ELÉCTRICO [124.1 h] | 124.1 | 124.1 | 5801-DC | c/u | 1 | 0 | 1.5.5.2 | 1 |  |  |
| A3810 |  | Tablero de Alumbrado TAG: 5870-TDA-3103 | 3d | 2025-11-20 A | 2025-12-27 A | A3800 | 100% |  | 2025-11-20 | 2025-11-22 |  | SQM-ELÉCTRICO [124.1 h] | 124.1 | 124.1 | 5801-DC | c/u | 1 | 0 | 1.5.5.3 | 1 |  |  |
| A3820 |  | Tablero Eléctrico Orion TAG: 5870-PNL-3105 | 3d | 2025-11-23 A | 2025-12-27 A | A3810 | 100% |  | 2025-11-23 | 2025-11-25 |  | SQM-ELÉCTRICO [124.1 h] | 124.1 | 124.1 | 5801-DC | c/u | 1 | 0 | 1.5.5.4 | 1 |  |  |
| A3830 |  | Sistema de Almacenamiento de Energía BESS TAG: 5870-BCB-3102 | 3d | 2025-11-26 A | 2025-12-27 A | A3820 | 100% |  | 2025-11-26 | 2025-11-28 |  | SQM-ELÉCTRICO [124.1 h] | 124.1 | 124.1 | 5801-DC | c/u | 1 | 0 | 1.5.5.5 | 1 |  | LDO N°4 |
| A3790 |  | SubEstación Unitaria TAG: 5870-SEU-3100 | 9d | 2025-12-18 A | 2025-12-27 A | A3460 FF, A3750, A3780, A3700 | 100% |  | 2025-11-08 | 2025-11-16 |  | SQM-ELÉCTRICO [360 h] | 360 | 360 | 5801-DC | c/u | 1 | 0 | 1.5.5.1 | 1 | R FF |  |
|  | 6 | **OBRAS DE INSTRUMENTACIÓN SECTOR DATA CENTER 5801** |  | 2025-11-29 | 2025-12-28 |  |  |  |  |  |  |  |  |  |  |  |  |  |  |  |  |  |
|  | 1 | **MONTAJE DE EQUIPOS DE COMUNICACIÓN Y CABECERAS DE F.O. EN RACK DE 19" DATA CENTER 5801** |  | 2025-11-29 | 2025-12-26 |  |  |  |  |  |  |  |  |  |  |  |  |  |  |  |  |  |
| A3840 |  | Switch cisco catalyst, 9500, 24x1 y colocaciØn de TAGs | 1d | 2025-11-29 A | 2025-12-26 A | A3830 | 100% |  | 2025-11-29 | 2025-11-29 |  | SQM-INSTRUMENTACIÓN [72 h] | 72 | 72 | 5801-DC | c/u | 2 | 0 | 1.6.1.1 | 2 |  |  |
| A3850 |  | Switch networking interr. Connectrix DS-6610B-L | 1d | 2025-11-30 A | 2025-12-26 A | A3840 | 100% |  | 2025-11-30 | 2025-11-30 |  | SQM-INSTRUMENTACIÓN [72 h] | 72 | 72 | 5801-DC | c/u | 2 | 0 | 1.6.1.2 | 2 |  |  |
| A3860 |  | Servidores, poweredge, R660, DELL | 1d | 2025-12-01 A | 2025-12-26 A | A3850 | 100% |  | 2025-12-01 | 2025-12-01 |  | SQM-INSTRUMENTACIÓN [240 h] | 240 | 240 | 5801-DC | c/u | 5 | 0 | 1.6.1.3 | 5 |  |  |
| A3870 |  | Servidores, poweredge, 500T, DELL | 1d | 2025-12-02 A | 2025-12-26 A | A3860 | 100% |  | 2025-12-02 | 2025-12-02 |  | SQM-INSTRUMENTACIÓN [48 h] | 48 | 48 | 5801-DC | c/u | 1 | 0 | 1.6.1.4 | 1 |  |  |
| A3880 |  | TRANSCEIVER,QSFP,100GBASE,LR4 | 1d | 2025-12-03 A | 2025-12-26 A | A3870 | 100% |  | 2025-12-03 | 2025-12-03 |  | SQM-INSTRUMENTACIÓN [6 h] | 6 | 6 | 5801-DC | c/u | 1 | 0 | 1.6.1.5 | 1 |  |  |
| A3890 |  | Conversor,SFP,TRANSCEIVER,10GBASE-T | 1d | 2025-12-04 A | 2025-12-26 A | A3880 | 100% |  | 2025-12-04 | 2025-12-04 |  | SQM-INSTRUMENTACIÓN [120 h] | 120 | 120 | 5801-DC | c/u | 20 | 0 | 1.6.1.6 | 20 |  |  |

| ID | WBS | Activity | Duration | Start | Finish | Predecessors | Complete | Remaining | Planned start | Planned finish | Total float | Free float | Resources | Cost | Actual cost | Área | Unidad | Cantidad | Remanente | Ítem EDP | Forecast | Impacto |
| --- | --- | --- | --- | --- | --- | --- | --- | --- | --- | --- | --- | --- | --- | --- | --- | --- | --- | --- | --- | --- | --- | --- |
|  | 2 | **TENDIDO Y CONEXIONADO DE CABLES DE ALIMENTACIÓN DATA CENTER 5801** |  | 2025-12-05 | 2025-12-13 |  |  |  |  |  |  |  |  |  |  |  |  |  |  |  |  |  |
| A3900 |  | Cable Alimentación Eléctrica de Switches. Considera Suministro y Preparación | 3d | 2025-12-05 A | 2025-12-13 A | A3890 | 100% |  | 2025-12-05 | 2025-12-07 |  |  | SQM-INSTRUMENTACIÓN [126 h] | 126 | 126 | 5801-DC | c/u | 6 | 0 | 1.6.2.1 | 8 |  |
|  | 3 | **SUMINSITRO Y MONTAJE DE PROTECCIONES ELÉCTRICAS DATA CENTER 5801** |  | 2025-12-05 | 2025-12-28 |  |  |  |  |  |  |  |  |  |  |  |  |  |  |  |  |  |
| A3910 |  | Protecciones Eléctricas (CB-01;CB-02;CB-03;CB-04;CB-01R;CB-02R;CB-03R;CB-04R), y Borneras | 3d | 2025-12-05 A | 2025-12-28 A | A3900 FF, A3590 | 100% |  | 2025-12-05 | 2025-12-07 |  |  | SQM-ELÉCTRICO [168 h] | 168 | 168 | 5801-DC | un | 8 | 0 | 1.6.3.1 | 8 | LDO N°17 |
|  | 2 | **RED GN-GL L5 LiOH, ALIMENTACIÓN CALDERA UTILITIES - ÁREA 5801 GNL 5801** |  | 2025-10-06 | 2026-03-17 |  |  |  |  |  |  |  |  |  |  |  |  |  |  |  |  |  |
|  | 1 | **ÁREA 5801 - SECTOR GNL 5801** |  | 2025-10-06 | 2026-03-17 |  |  |  |  |  |  |  |  |  |  |  |  |  |  |  |  |  |
|  | 1 | **OBRAS CIVILES SECTOR LÍNEA DE GAS 5801** |  | 2025-10-29 | 2026-03-17 |  |  |  |  |  |  |  |  |  |  |  |  |  |  |  |  |  |
|  | 1 | **MOVIMIENTO DE TIERRAS, EXCAVACIÓN PARA CRUCE DE CAMINO GNL 5801** |  | 2025-11-02 | 2026-03-16 |  |  |  |  |  |  |  |  |  |  |  |  |  |  |  |  |  |
| A3920 |  | Excavación para Curce de Camino Norte Líneas de Gas | 3d | 2025-11-02 A | 2025-12-15 A | A3960 FF | 100% |  | 2025-09-15 | 2025-09-17 |  |  | SQM-OOCC [149.49 h] | 149.49 | 149.49 | 5801-GNL | m3 | 56,95 | 0 | 2.2.1.1 | 83,538 | SDC N°61 |
| A3950 |  | Arena para Relleno de Curce de Camino Norte Líneas de Gas | 2d | 2025-11-13 A | 2025-12-15 A | A3990 | 100% |  | 2025-09-29 | 2025-09-30 |  |  | SQM-OOCC [24.77 h] | 24.77 | 24.77 | 5801-GNL | m3 | 26,59 | 0 | 2.2.1.4 | 42 |  |
| A3930 |  | Relleno para Curce de Camino Norte Líneas de Gas | 6d | 2025-11-19 A | 2025-12-12 A | A4000 FF | 100% |  | 2025-09-29 | 2025-10-04 |  |  | SQM-OOCC [32.17 h] | 32.17 | 32.17 | 5801-GNL | m3 | 26,81 | 0 | 2.2.1.2 | 83,538 |  |
| A3940 |  | Transporte de Material a Botadero | 1d | 2026-03-16 | 2026-03-16 | A3920, A3960 |  |  |  |  | 12d | 0d | SQM-OOCC |  |  | 5801-GNL | m3 | 0 | 0 | 2.2.1.3 | 144 |  |
|  | 2 | **EXCAVACIÓN PARA CAÉRÍAS ENTERRADA GNL 5801** |  | 2025-10-29 | 2026-03-17 |  |  |  |  |  |  |  |  |  |  |  |  |  |  |  |  |  |
| A3960 |  | Excavación para Curce de Camino Sur Líneas de Gas | 7d | 2025-10-29 A | 2025-12-12 A | A1070 SS | 100% |  | 2025-09-11 | 2025-09-17 |  |  | SQM-OOCC [372.75 h] | 372.75 | 372.75 | 5801-GNL | m3 | 142 | 0 | 2.2.2.1 | 142 |  |
| A3990 |  | Arena para Relleno de Curce de Camino Sur Líneas de Gas | 6d | 2025-11-07 A | 2025-12-13 A | A3980 | 100% |  | 2025-09-23 | 2025-09-28 |  |  | SQM-OOCC [58.83 h] | 58.83 | 58.83 | 5801-GNL | m3 | 63,16 | 0 | 2.2.2.4 | 60,8 |  |
| A3970 |  | Relleno para Curce de Camino Sur Líneas de Gas | 6d | 2025-11-22 A | 2025-12-10 A | A3930 | 100% |  | 2025-10-05 | 2025-10-10 |  |  | SQM-OOCC [81.02 h] | 81.02 | 81.02 | 5801-GNL | m3 | 67,52 | 0 | 2.2.2.2 | 129,675 |  |
| A3980 |  | Transporte de Material a Botadero | 1d | 2026-03-17 | 2026-03-17 | A3940 |  |  |  |  | 12d |  | SQM-OOCC |  |  | 5801-GNL | m3 | 0 | -0,00249999999999773 | 2.2.2.3 | 798 |  |
|  | 3 | **SERVICIOS, CRUCE DE CAMINO GNL 5801** |  | 2025-11-15 | 2025-12-17 |  |  |  |  |  |  |  |  |  |  |  |  |  |  |  |  |  |
| A4000 |  | Camisa de 8" para Cruce de Camino Norte y Sur, Línea de Gas | 4d | 2025-11-15 A | 2025-12-17 A | A3950 | 100% |  | 2025-10-01 | 2025-10-04 |  |  | SQM-OOCC [1359.75 h] | 1,359.75 | 1,359.75 | 5801-GNL | m | 222 | 0 | 2.3.1.1 | 270 |  |
|  | 2 | **OBRAS PIPING SECTOR LÍNEA DE GAS 5801** |  | 2025-10-06 | 2026-03-16 |  |  |  |  |  |  |  |  |  |  |  |  |  |  |  |  |  |
|  | 1 | **MONTAJE DE CAÑERÍA, LÍNEAS DE GAS 5801** |  | 2025-10-09 | 2025-12-25 |  |  |  |  |  |  |  |  |  |  |  |  |  |  |  |  |  |
| A4020 |  | Ø 4" - Cañería Acero Carbono ASTM A106 Gr. B (100mm) | 20d | 2025-10-09 A | 2025-12-25 A | A4000 | 100% |  | 2025-10-05 | 2025-10-24 |  |  | SQM-PIPING [2644.41 h] | 2,644.41 | 2,644.41 | 5801-GNL | m | 740,04 | 0 | 2.1.1.2 | 866 | LDO N°9-10-11-12-14-52; SDC N°52-57 |
| A4010 |  | Ø 110 mm - Cañería HDPE, PE 100, PN10 (4") | 5d | 2025-11-19 A | 2025-12-18 A | A4000 SS | 100% |  | 2025-10-01 | 2025-10-05 |  |  | SQM-PIPING [281.12 h] | 281.12 | 281.12 | 5801-GNL | m | 219,2 | 0 | 2.1.1.1 | 236 | LDO N°6-13; SDC N°68 |
|  | 2 | **MONTAJE DE VÁLVULAS MANUALES Y FITTING, LÍNEA DE GAS 5801** |  | 2025-10-06 | 2026-03-16 |  |  |  |  |  |  |  |  |  |  |  |  |  |  |  |  |  |
| A4030 |  | Montaje de Fitting para Líneas GNL | 24d | 2025-10-06 A | 2026-03-16 | A4010 | 100% | 0.03d | 2025-10-06 | 2025-10-29 | 27.97d | 0.97d | SQM-PIPING [1052.25 h] | 1,052.25 | 1,050.5 | 5801-GNL | un | 120 | 0 | 99.5 | 184 |  |
| A4040 |  | Válvulas Línea de Gas (Global) | 12d | 2025-10-09 A | 2026-03-16 | A4030 FF | 92% | 1d | 2025-10-18 | 2025-10-29 | 27d |  | SQM-PIPING [192 h] | 192 | 168 | 5801-GNL | un | 16 | 0 | 99.14 | 16 |  |

Notes:
- A4000: Corregir: SE SOLICITA POR ITO TODO LO QUE VAYA SOTERRADO LLEVARï¿½A ENCAMISADO
- A4020: Corregir: MODIFICAR FECHA DE INICIO

| ID | WBS | Activity | Duration | Start | Finish | Predecessors | Complete | Remaining | Planned start | Planned finish | Total float | Resources | Cost | Actual cost | Área | Unidad | Cantidad | Remanente | Ítem EDP | Forecast | Corregir |
| --- | --- | --- | --- | --- | --- | --- | --- | --- | --- | --- | --- | --- | --- | --- | --- | --- | --- | --- | --- | --- | --- |
|  | 3 | **TIE-IN LÍNEAS ASOCIADAS A GNL 5801** |  | 2025-10-29 | 2026-03-16 |  |  |  |  |  |  |  |  |  |  |  |  |  |  |  |  |
| A4060 |  | TIE-IN 5801-002 Acero Carbono Ø4" | 1d | 2025-10-29 A | 2026-03-16 | A4050 FF |  | 1d | 2025-10-29 | 2025-10-29 | 13d | SQM-PIPING [120 h] | 120 | 81.6 | 5801-GNL | gl | 1 | 0,32 | 2.1.5.2 | 1 |  |
| A4050 |  | TIE-IN 5801-001 Acero Carbono Ø4" | 1d | 2025-12-25 A | 2025-12-28 A | A4020, A4040 FF, A4030 FF, A3970 | 100% |  | 2025-10-29 | 2025-10-29 |  | SQM-PIPING [76 h] | 76 | 76 | 5801-GNL | gl | 1 | 0,32 | 2.1.5.1 | 1 | R FF |
|  | 4 | **FABRICACIÓN Y MONTAJE DE SOPORTES GNL 5801** |  | 2025-10-30 | 2025-12-29 |  |  |  |  |  |  |  |  |  |  |  |  |  |  |  |  |
| A4070 |  | Soportes tipo SOP 01-A | 6d | 2025-10-30 A | 2025-12-17 A | A4010 | 100% |  | 2025-10-06 | 2025-10-11 |  | SQM-PIPING [3.75 h] | 3.75 | 3.75 | 5801-GNL | un | 10 | 0 | 2.1.6.1 | 10 |  |
| A4080 |  | Soportes tipo SOP 01-B | 6d | 2025-12-17 A | 2025-12-23 A | A4070 | 100% |  | 2025-10-12 | 2025-10-17 |  | SQM-PIPING [55.5 h] | 55.5 | 55.5 | 5801-GNL | un | 6 | 0 | 2.1.6.2 | 6 |  |
| A4090 |  | Soportes tipo SOP 02 | 6d | 2025-12-23 A | 2025-12-29 A | A4080, A4020 FF | 100% |  | 2025-10-19 | 2025-10-24 |  | SQM-PIPING [105.38 h] | 105.38 | 105.38 | 5801-GNL | un | 281 | 0 | 2.1.6.3 | 281 |  |
|  | 3 | **ESTANQUE PIVOTE** |  | 2025-09-11 | 2026-03-30 |  |  |  |  |  |  |  |  |  |  |  |  |  |  |  |  |
|  | 1 | **ÁREA 5817 - SECTOR TK-6060** |  | 2025-09-24 | 2026-03-30 |  |  |  |  |  |  |  |  |  |  |  |  |  |  |  |  |
|  | 1 | **OBRAS CIVILES TK-6060 5817** |  | 2025-09-24 | 2025-12-15 |  |  |  |  |  |  |  |  |  |  |  |  |  |  |  |  |
|  | 1 | **LOSA Y FUNDACIONES TK-6060 5817** |  | 2025-10-03 | 2025-12-13 |  |  |  |  |  |  |  |  |  |  |  |  |  |  |  |  |
|  | 3 | **FABRICACIÓN DE LOSA Y FUNDACIONES 5817** |  | 2025-10-03 | 2025-12-13 |  |  |  |  |  |  |  |  |  |  |  |  |  |  |  |  |
| A4170 |  | Grating FRP T3232 Bomba Sumidero | 2d | 2025-10-03 A | 2025-12-10 A | A3450 | 100% |  | 2025-11-19 | 2025-11-20 |  | SQM-OOCC [4.55 h] | 4.55 | 4.55 | 5817-TK6060 | m2 | 1 | 0 | 8.1.1.1 | 1 |  |
| A4180 |  | Estructura Liviana de Bomba Sumidero | 2d | 2025-10-05 A | 2025-12-13 A | A4170 | 100% |  | 2025-11-21 | 2025-11-22 |  | SQM-OOCC [5.47 h] | 5.47 | 5.47 | 5817-TK6060 | kg | 36 | 0 | 8.1.2.1 | 36 |  |
|  | 2 | **CRUCE DE CAMINO 5817** |  | 2025-09-24 | 2025-12-15 |  |  |  |  |  |  |  |  |  |  |  |  |  |  |  |  |
|  | 1 | **MOVIMIENTO MASIVO DE TIERRA PARA CRUCE DE CAMINOS 5817** |  | 2025-09-24 | 2025-12-15 |  |  |  |  |  |  |  |  |  |  |  |  |  |  |  |  |
| A4190 |  | Excavación Cruce de Camino 1 | 7d | 2025-09-24 A | 2025-12-15 A | A3970, A4070, A4080 | 100% |  | 2025-10-18 | 2025-10-24 |  | SQM-OOCC [144.8 h] | 144.8 | 144.8 | C.CAMINO | m3 | 55,16 | 0 | 8.6.1.6 | 195,8 |  |
| A4210 |  | Relleno Estructural Cruce de Camino 1 | 3d | 2025-10-01 A | 2025-12-15 A | A4190 | 100% |  | 2025-10-25 | 2025-10-27 |  | SQM-OOCC [41.77 h] | 41.77 | 41.77 | C.CAMINO | m3 | 34,81 | 0 | 8.6.1.2 | 108,62 |  |
| A4230 |  | Excavación Cruce de Camino 2 | 5d | 2025-10-01 A | 2025-12-15 A | A4190 | 100% |  | 2025-10-25 | 2025-10-29 |  | SQM-OOCC [133.88 h] | 133.88 | 133.88 | C.CAMINO | m3 | 51 | 0 | 8.6.1.5 | 139,86 |  |
| A4220 |  | Cama de Arena Cruce de Camino 1 | 1d | 2025-10-04 A | 2025-12-15 A | A4210 | 100% |  | 2025-10-28 | 2025-10-28 |  | SQM-OOCC [2.61 h] | 2.61 | 2.61 | C.CAMINO | m3 | 2,8 | 0 | 8.6.1.8 | 9,06 |  |
| A4250 |  | Relleno Estructural Cruce de Camino 2 | 4d | 2025-10-06 A | 2025-12-15 A | A4230 | 100% |  | 2025-10-30 | 2025-11-02 |  | SQM-OOCC [32.4 h] | 32.4 | 32.4 | C.CAMINO | m3 | 27 | 0 | 8.6.1.1 | 77,59 |  |
| A4260 |  | Cama de Arena Cruce de Camino 2 | 1d | 2025-10-10 A | 2025-12-15 A | A4250 | 100% |  | 2025-11-03 | 2025-11-03 |  | SQM-OOCC [2.24 h] | 2.24 | 2.24 | C.CAMINO | m3 | 2,4 | 0 | 8.6.1.7 | 6,47 |  |
| A4200 |  | Relleno compactado Cruce de Camino 1 | 6d | 2025-10-17 A | 2025-12-15 A | A4280 | 100% |  | 2025-11-03 | 2025-11-08 |  | SQM-OOCC [13.67 h] | 13.67 | 13.67 | C.CAMINO | m3 | 11,39 | 0 | 8.6.1.4 | 78,11 |  |
| A4240 |  | Relleno compactado Cruce de Camino 2 | 2d | 2025-10-28 A | 2025-12-15 A | A4300, A4200, A4260 | 100% |  | 2025-11-11 | 2025-11-12 |  | SQM-OOCC [17.94 h] | 17.94 | 17.94 | C.CAMINO | m3 | 14,95 | 0 | 8.6.1.3 | 55,794 |  |

| ID | WBS | Activity | Duration | Start | Finish | Predecessors | Complete | Remaining | Planned start | Planned finish | Total float | Free float | Resources | Cost | Actual cost | Área | Unidad | Cantidad | Remanente | Ítem EDP | Forecast | Impacto | Corregir |
| --- | --- | --- | --- | --- | --- | --- | --- | --- | --- | --- | --- | --- | --- | --- | --- | --- | --- | --- | --- | --- | --- | --- | --- |
|  | 2 | **ENCAMISADO PARA CRUCE DE CAMINOS 5817** |  | 2025-10-08 | 2025-12-15 |  |  |  |  |  |  |  |  |  |  |  |  |  |  |  |  |  |  |
| A4280 |  | Cañería 12" Cruce de Camino 1 | 9d | 2025-10-08 A | 2025-12-15 A | A4190 | 100% |  | 2025-10-25 | 2025-11-02 |  |  | SQM-OOCC [510.09 h] | 510.09 | 510.09 | C.CAMINO | kg | 6246 | 0 | 8.6.2.4 | 6840,42 |  |  |
| A4300 |  | Cañería 12" Cruce de Camino 2 | 8d | 2025-10-20 A | 2025-12-15 A | A4280, A4220 | 100% |  | 2025-11-03 | 2025-11-10 |  |  | SQM-OOCC [396.74 h] | 396.74 | 396.74 | C.CAMINO | kg | 4858 | 0 | 8.6.2.3 | 5898,62 |  |  |
|  | 3 | **OBRAS MECÁNICAS TK-6060 5817** |  | 2025-10-01 | 2025-12-20 |  |  |  |  |  |  |  |  |  |  |  |  |  |  |  |  |  |  |
|  | 1 | **MONTAJE Y PRUEBAS DE EQUIPOS MECÁNICOS TK-6060 5817** |  | 2025-10-01 | 2025-12-20 |  |  |  |  |  |  |  |  |  |  |  |  |  |  |  |  |  |  |
| A4320 |  | Estanque Pivote y Plataforma Sumerior TAG: 5817-EST-6060 | 50d | 2025-10-01 A | 2025-12-14 A | A4190 SS | 100% |  | 2025-10-18 | 2025-12-06 |  |  | SQM-MECANICA [2628 h] | 2,628 | 2,628 | 5817-TK6060 | un | 1 | 0 | 5.1.1.1 | 1 | LDO N°2-3-5-10; sdc n°4-12-66 |  |
| A4340 |  | Bomba Centrífuga y Motor TAG: 5817-BBA-6069; 5817-MTR-6070 | 4d | 2025-10-03 A | 2025-12-16 A | A4300 | 100% |  | 2025-11-11 | 2025-11-14 |  |  | SQM-MECANICA [139.9 h] | 139.9 | 139.9 | 5817-TK6060 | un | 1 | 0 | 5.1.1.5 | 1 |  |  |
| A4350 |  | Bomba Centrífuga y Motor TAG: 5817-BBA-6072; 5817-MTR-6073 | 4d | 2025-10-03 A | 2025-12-10 A | A4340 | 100% |  | 2025-11-15 | 2025-11-18 |  |  | SQM-MECANICA [139.9 h] | 139.9 | 139.9 | 5817-TK6060 | un | 1 | 0 | 5.1.1.6 | 1 | LDO N°18 |  |
| A4360 |  | Bomba Centrífuga y Motor TAG: 5817-BBA-6077; 5817-MTR-6078 | 4d | 2025-10-07 A | 2025-12-16 A | A4350 | 100% |  | 2025-11-19 | 2025-11-22 |  |  | SQM-MECANICA [139.9 h] | 139.9 | 139.9 | 5817-TK6060 | un | 1 | 0 | 5.1.1.3 | 1 | LDO N°15 |  |
| A4330 |  | Agitador Vertical Estanque Pivote TAG: 5817-AGT-6061 / 5817-MTR-6062 | 10d | 2025-11-10 A | 2025-12-16 A | A4320 | 100% |  | 2025-12-07 | 2025-12-16 |  |  | SQM-MECANICA [478.75 h] | 478.75 | 478.75 | 5817-TK6060 | un | 1 | 0 | 5.1.1.4 | 1 |  |  |
| A4370 |  | Bomba Sumidero y Motor TAG: 5817-BBS-6075; 5817-MTR-6076 | 4d | 2025-12-17 A | 2025-12-20 A | A4360, A4180, A4330 | 100% |  |  |  |  |  | SQM-MECANICA [139.9 h] | 139.9 | 139.9 | 5817-TK6060 | un | 1 | 0 | 5.1.1.2 | 1 | SUM M-01 F.Entrega: 14-11-25 |  |
|  | 4 | **OBRAS PIPING TK-6060 5817** |  | 2025-10-05 | 2026-03-30 |  |  |  |  |  |  |  |  |  |  |  |  |  |  |  |  |  |  |
|  | 1 | **MONTAJE Y FABRICACIÓN DE CAÑERÍAS TK-6060 5817** |  | 2025-10-05 | 2026-03-23 |  |  |  |  |  |  |  |  |  |  |  |  |  |  |  |  |  |  |
|  | 1 | **FABRICACIÓN CAÑERÍAS TK-6060 5817** |  | 2025-10-05 | 2026-03-16 |  |  |  |  |  |  |  |  |  |  |  |  |  |  |  |  |  |  |
| A4380 |  | Ø 6" - Cañería Acero Inoxidable - Fabricación | 62d | 2025-10-05 A | 2026-01-09 A | A4320 SS | 100% |  | 2025-10-18 | 2025-12-18 |  |  | SQM-PIPING [5915 h] | 5,915 | 5,915 | 5817-TK6060 | un | 455 | 44,1 | 5.2.1.9 | 632 | SDC N°26 |  |
| A4420 |  | Ø 1-1/2" - Cañería Acero Inoxidable - Fabricación | 2d | 2025-10-25 A | 2026-03-16 | A4090 | 75% | 0.5d | 2025-10-25 | 2025-10-26 | 27.5d |  | SQM-PIPING [18 h] | 18 | 6 | 5817-TK6060 | un | 6 | 0 | 5.2.1.54 | 2 |  |  |
| A4410 |  | Ø 1" - Cañería Acero Inoxidable - Fabricación | 3d | 2025-10-27 A | 2026-03-16 | A4420 SS | 88% | 0.35d | 2025-10-27 | 2025-10-29 | 27.65d |  | SQM-PIPING [30 h] | 30 | 21.6 | 5817-TK6060 | un | 15 | 4,2 | 5.2.1.50 | 15 |  |  |
| A4440 |  | Ø 4" - Cañería CPVC, SCH 80 - Fabricación | 12d | 2025-12-01 A | 2026-01-31 A | A4430 | 100% |  | 2025-12-22 | 2026-01-02 |  |  | SQM-PIPING [123.75 h] | 123.75 | 123.75 | 5817-TK6060 | un | 90 | 0 | 5.2.1.19 | 90 |  |  |
| A4400 |  | Ø 2" - Cañería Acero Inoxidable - Fabricación | 12d | 2025-12-21 A | 2026-03-16 | A4330, A4370 | 95% | 0.6d | 2025-12-21 | 2026-01-01 | 27.4d |  | SQM-PIPING [903.21 h] | 903.21 | 845.73 | 5817-TK6060 | un | 220 | 14 | 5.2.1.33 | 345 |  |  |
| A4390 |  | Ø 4" - Cañería Acero Inoxidable - Fabricación | 14d | 2025-12-28 A | 2026-01-11 A | A4380 FF | 100% |  | 2025-12-05 | 2025-12-18 |  |  | SQM-PIPING [532 h] | 532 | 532 | 5817-TK6060 | un | 70 | 0 | 5.2.1.18 | 107 | SDC N°26 | R FF |
| A4450 |  | Ø 2" - Cañería CPVC, SCH 80 - Fabricación | 3d | 2026-01-20 A | 2026-01-23 A | A4440 | 100% |  | 2026-01-03 | 2026-01-05 |  |  | SQM-PIPING [11.55 h] | 11.55 | 11.55 | 5817-TK6060 | un | 14 | 0 | 5.2.1.34 | 14 |  |  |
| A4430 |  | Ø 8" - Cañería CPVC, SCH 80 - Fabricación | 3d | 2026-01-28 A | 2026-01-31 A | A4380 | 100% |  | 2025-12-19 | 2025-12-21 |  |  | SQM-PIPING [19.25 h] | 19.25 | 19.25 | 5817-TK6060 | un | 7 | 0 | 5.2.1.1 | 11 |  |  |
|  | 2 | **MONTAJE CAÑERÍAS TK-6060 5817** |  | 2025-10-12 | 2026-03-23 |  |  |  |  |  |  |  |  |  |  |  |  |  |  |  |  |  |  |
| A4490 |  | Ø 6" - Cañería Acero Inoxidable - Montaje | 20d | 2025-10-12 A | 2026-03-23 | A4380 | 64% | 7.22d | 2025-12-19 | 2026-01-07 | 20.78d |  | SQM-PIPING [3785.39 h] | 3,785.39 | 3,092.12 | 5817-TK6060 | m | 1436,4 | 262,27 | 5.2.1.15 | 1709 | SDC N°26 | R FF |
| A4470 |  | Ø 4" - Cañería CPVC, SCH 80 - Montaje | 14d | 2025-12-01 A | 2026-01-23 A | A4460, A4430 | 100% |  | 2025-12-25 | 2026-01-07 |  |  | SQM-PIPING [302.4 h] | 302.4 | 302.4 | 5817-TK6060 | m | 96 | 0 | 5.2.1.29 | 121,9 |  |  |
| A4500 |  | Ø 4" - Cañería Acero Inoxidable - Montaje | 12d | 2026-01-19 A | 2026-01-31 A | A4490, A4390 | 100% |  | 2026-01-08 | 2026-01-19 |  |  | SQM-PIPING [229.81 h] | 229.81 | 229.81 | 5817-TK6060 | m | 98 | 0 | 5.2.1.30 | 55,701239341 | SDC N°26 |  |
| A4510 |  | Ø 2" - Cañería Acero Inoxidable - Montaje | 10d | 2026-01-19 A | 2026-03-16 | A4500, A4450 SS, A4400 SS | 92% | 0.82d | 2026-01-20 | 2026-01-29 | 13.18d | 0.7d | SQM-PIPING [568.1 h] | 568.1 | 505.04 | 5817-TK6060 | m | 203,5 | 20 | 5.2.1.48 | 124,8153931 |  |  |
| A4460 |  | Ø 8" - Cañería CPVC, SCH 80 - Montaje | 3d | 2026-01-20 A | 2026-01-23 A | A4320 SS, A4430 | 100% |  | 2025-12-22 | 2025-12-24 |  |  | SQM-PIPING [39.9 h] | 39.9 | 39.9 | 5817-TK6060 | m | 7,6 | 0 | 5.2.1.5 | 6,691406866 |  |  |
| A4530 |  | Ø 1" - Cañería Acero Inoxidable - Montaje | 5d | 2026-01-26 A | 2026-03-16 | A4520 SS | 100% | 0d | 2026-02-01 | 2026-02-05 | 28d |  | SQM-PIPING [0.39 h] | 0.39 | 0.35 | 5817-TK6060 | m | 0,346754672 | 0,0346754672 | 5.2.1.52 | 0,346754672 |  | R FF |
| A4480 |  | Ø 2" - Cañería CPVC, SCH 80 - Montaje | 3d | 2026-01-29 A | 2026-01-31 A | A4240, A4470 | 100% |  | 2026-01-08 | 2026-01-10 |  |  | SQM-PIPING [17.33 h] | 17.33 | 17.33 | 5817-TK6060 | m | 11 | 0 | 5.2.1.47 | 16,9 |  |  |
| A4520 |  | Ø 1-1/2" - Cañería Acero Inoxidable - Montaje | 2d | 2026-01-29 A | 2026-03-16 | A4510 SS | 100% | 0d | 2026-01-30 | 2026-01-31 | 28d |  | SQM-PIPING [0.5 h] | 0.5 | 0.45 | 5817-TK6060 | m | 0,3 | 0,03 | 5.2.1.56 | 0,3 |  |  |

| ID | WBS | Activity | Duration | Start | Finish | Predecessors | Complete | Remaining | Planned start | Planned finish | Total float | Free float | Resources | Cost | Actual cost | Área | Unidad | Cantidad | Remanente | Ítem EDP | Forecast | Corregir |
| --- | --- | --- | --- | --- | --- | --- | --- | --- | --- | --- | --- | --- | --- | --- | --- | --- | --- | --- | --- | --- | --- | --- |
|  | 2 | **MONTAJE DE FITTING Y VÁLVULAS TK-6060 5817** |  | 2025-10-05 | 2026-03-24 |  |  |  |  |  |  |  |  |  |  |  |  |  |  |  |  |  |
| A4540 |  | Montaje de Fitting para Líneas TK-6060 | 93d | 2025-10-05 A | 2026-03-21 | A4380 SS | 94% | 5.2d | 2025-10-18 | 2026-01-18 | 22.8d |  | SQM-PIPING [6575.76 h] | 6,575.76 | 6,079.48 | 5817-TK6060 | un | 518 | 25 | 99.6 | 619 |  |
| A4550 |  | Válvulas Sector TK-6060 (Global) | 93d | 2025-10-05 A | 2026-03-24 | A4540 SS | 91% | 8.09d | 2025-10-18 | 2026-01-18 | 19.91d |  | SQM-PIPING [762.1 h] | 762.1 | 568.02 | 5817-TK6060 | un | 74 | 3,3 | 99.15 | 74 |  |
|  | 3 | **FABRICACIÓN Y MONTAJE DE SOPORTES TK-6060 5817** |  | 2025-10-24 | 2026-03-17 |  |  |  |  |  |  |  |  |  |  |  |  |  |  |  |  |  |
| A4580 |  | Soporte N°002 - Pedestal, Acero Estructural para Tuberías Diámetros Pequeños | 3d | 2025-10-24 A | 2026-03-16 | A4570 | 94% | 0.18d | 2026-01-14 | 2026-01-16 | 27.82d |  | SQM-PIPING [12.75 h] | 12.75 | 8.5 | 5817-TK6060 | un | 3 | 0 | 5.2.4.7 | 2 |  |
| A4560 |  | Soporte N°001A - Pedestal con Repisa de Acero Estructural para Tuberías Diámetros Pequeños | 1d | 2025-12-15 A | 2025-12-16 A | A4380, A4490 | 100% |  | 2026-01-08 | 2026-01-08 |  |  | SQM-PIPING [4.25 h] | 4.25 | 4.25 | 5817-TK6060 | un | 1 | 0 | 5.2.4.9 | 1 |  |
| A4570 |  | Soporte N°001B - Pedestal con Repisa de Acero Estructural para Tuberías Diámetros Pequeños | 5d | 2025-12-17 A | 2025-12-26 A | A4560 | 100% |  | 2026-01-09 | 2026-01-13 |  |  | SQM-PIPING [21.25 h] | 21.25 | 21.25 | 5817-TK6060 | un | 5 | 0 | 5.2.4.8 | 5 |  |
| A4590 |  | Soporte N°003A - Pedestal Tipo TEE, Acero Estructural para Tuberías Diámetros Pequeños | 3d | 2025-12-27 A | 2025-12-30 A | A4580 | 100% |  | 2026-01-17 | 2026-01-19 |  |  | SQM-PIPING [8.5 h] | 8.5 | 8.5 | 5817-TK6060 | un | 2 | 0 | 5.2.4.6 | 2 |  |
| A4600 |  | Soporte N°003B - Pedestal Tipo TEE, Acero Estructural para Tuberías Diámetros Pequeños | 6d | 2025-12-31 A | 2026-01-05 A | A4590 | 100% |  | 2026-01-20 | 2026-01-25 |  |  | SQM-PIPING [12.75 h] | 12.75 | 12.75 | 5817-TK6060 | un | 3 | 0 | 5.2.4.5 | 3 |  |
| A4610 |  | Soporte N°004 - Arco Tipo Vertical, Acero Estructural | 2d | 2026-01-06 A | 2026-01-07 A | A4600 | 100% |  | 2026-01-26 | 2026-01-27 |  |  | SQM-PIPING [4.25 h] | 4.25 | 4.25 | 5817-TK6060 | un | 1 | 0 | 5.2.4.4 | 1 |  |
| A4620 |  | Soporte N°005 - Pedestal y Voladizo Tipo Simple, Acero Estructural para Tuberías Diámetros Pequeños | 4d | 2026-01-08 A | 2026-01-11 A | A4610 | 100% |  | 2026-01-28 | 2026-01-31 |  |  | SQM-PIPING [8.5 h] | 8.5 | 8.5 | 5817-TK6060 | un | 2 | 0 | 5.2.4.3 | 2 |  |
| A4630 |  | Soporte N°006 - Pedestal y Voladizo Tipo Simple, Acero Estructural para Tuberías Diámetros Pequeños | 4d | 2026-01-12 A | 2026-01-15 A | A4620 SS | 100% |  | 2026-01-28 | 2026-01-31 |  |  | SQM-PIPING [8.5 h] | 8.5 | 8.5 | 5817-TK6060 | un | 2 | 0 | 5.2.4.2 | 2 |  |
| A4640 |  | Soporte Primario Tipo "U" (Para Uso General) | 13d | 2026-01-16 A | 2026-03-17 | A4630, A4550 SS | 88% | 1.58d | 2026-02-01 | 2026-02-13 | 26.42d |  | SQM-PIPING [86.63 h] | 86.63 | 48.8 | 5817-TK6060 | un | 450 | 196,5 | 5.2.4.1 | 26 |  |
|  | 4 | **TIE-IN DE LÍNEAS ASOCIADAS A TK-6060 5817** |  | 2026-01-26 | 2026-01-30 |  |  |  |  |  |  |  |  |  |  |  |  |  |  |  |  |  |
| A4650 |  | TIE-IN N° 1433 - 5836-EST-3015 a Línea Proyectada 100-DR-5817-P2-6630 | 2d | 2026-01-26 A | 2026-01-28 A | A4530 FF | 100% |  | 2026-02-04 | 2026-02-05 |  |  | SQM-PIPING [50.67 h] | 50.67 | 50.67 | 5817-TK6060 | un | 1 | 0 | 5.2.3.2 | 1 |  |
| A4660 |  | TIE-IN N° 1434 - 5836-EST-3015 a Línea Proyectada 100-DR-5817-P2-6610 | 2d | 2026-01-29 A | 2026-01-30 A | A4650 FF, A4640 | 100% |  | 2026-02-14 | 2026-02-15 |  |  | SQM-PIPING [50.67 h] | 50.67 | 50.67 | 5817-TK6060 | un | 1 | 0 | 5.2.3.1 | 1 |  |
|  | 5 | **AISLACIÓN LÍNEAS TK-6060 5817** |  | 2025-11-05 | 2026-03-30 |  |  |  |  |  |  |  |  |  |  |  |  |  |  |  |  |  |
| A4670 |  | Ø 6" - Aislación de Lana Mineral de 1,5" de espesor | 15d | 2025-11-05 A | 2026-03-30 | A4490 SS |  | 15d | 2026-01-08 | 2026-01-22 | 13d |  | SQM-PIPING [6005.38 h] | 6,005.38 | 4,146.31 | 5817-TK6060 | un | 1443,6 | 446,89 | 5.2.1.16 | 1709 |  |
| A4680 |  | Ø 4" - Aislación de Lana Mineral de 1,5" de espesor | 7d | 2025-12-01 A | 2026-03-16 | A4500, A4670 SS | 93% | 0.52d | 2026-01-23 | 2026-01-29 | 12.48d | 0d | SQM-PIPING [412.8 h] | 412.8 | 371.52 | 5817-TK6060 | un | 86 | 8,59999999999999 | 5.2.1.31 | 53,899789128 |  |
| A4690 |  | Ø 2" - Aislación de Lana Mineral de 1,5" de espesor | 1d | 2026-03-16 | 2026-03-17 | A4510 FF, A4680 |  |  |  |  | 12.48d |  | SQM-PIPING [32 h] | 32 |  | 5817-TK6060 | un | 10 | 10 | 5.2.1.49 | 16,342386578 |  |
|  | 6 | **RED DE AIRE 5817** |  | 2026-01-08 | 2026-03-24 |  |  |  |  |  |  |  |  |  |  |  |  |  |  |  |  |  |
|  | 1 | **FABRICACIÓN Y MONTAJE DE CAÑERÍAS RED DE AIRE 5817** |  | 2026-01-08 | 2026-03-22 |  |  |  |  |  |  |  |  |  |  |  |  |  |  |  |  |  |
| A4710 |  | Ø 3/4" - Cañería Acero Inoxidable - Fabricación | 7d | 2026-01-08 A | 2026-03-19 | A4720 SS | 45% | 3.84d | 2026-02-14 | 2026-02-20 | 24.16d |  | SQM-PIPING [224 h] | 224 | 58.28 | AIRE | un | 128 | 94,7 | 9.1.1.1 | 128 |  |
| A4700 |  | Ø 1" - Cañería Acero Inoxidable - Fabricación | 7d | 2026-01-14 A | 2026-03-22 | A4410 SS, A4530 SS |  | 7d | 2026-02-06 | 2026-02-12 | 21d |  | SQM-PIPING [396 h] | 396 | 54 | AIRE | un | 198 | 171 | 9.1.1.10 | 198 |  |
| A4720 |  | Ø 1" - Cañería Acero Inoxidable - Montaje | 5d | 2026-01-17 A | 2026-03-18 | A4700 SS+3d, A4410 SS | 45% | 2.76d | 2026-02-09 | 2026-02-13 | 25.24d |  | SQM-PIPING [174.09 h] | 174.09 | 44.39 | AIRE | m | 155,9 | 116,15 | 9.1.1.14 | 155,8135 |  |
| A4730 |  | Ø 3/4" - Cañería Acero Inoxidable - Montaje | 3d | 2026-01-19 A | 2026-03-19 | A4740 FF, A4750 FF, A4710 SS | 85% | 0.44d | 2026-02-21 | 2026-02-23 | 19.14d | 0.14d | SQM-PIPING [12.35 h] | 12.35 | 1.81 | AIRE | m | 15,8 | 8,88 | 9.1.1.7 | 11,059 | R FF |

| ID | WBS | Activity | Duration | Start | Finish | Predecessors | Complete | Remaining | Planned start | Planned finish | Total float | Free float | Resources | Cost | Actual cost | Área | Unidad | Cantidad | Remanente | Ítem EDP | Forecast | Corregir | Impacto |
| --- | --- | --- | --- | --- | --- | --- | --- | --- | --- | --- | --- | --- | --- | --- | --- | --- | --- | --- | --- | --- | --- | --- | --- |
|  | 2 | **MONTAJE DE FITTING Y VÁLVULAS RED DE AIRE 5817** |  | 2026-01-14 | 2026-03-19 |  |  |  |  |  |  |  |  |  |  |  |  |  |  |  |  |  |  |
| A4740 |  | Fitting Líneas de Aire (Global) | 18d | 2026-01-14 A | 2026-03-18 | A4700 SS | 85% | 2.78d | 2026-02-06 | 2026-02-23 | 20.22d | 1.08d | SQM-PIPING [674.11 h] | 674.11 | 102.45 | AIRE | un | 229,972347629797 | 217,97 | 99.7 | 555,972347629797 |  |  |
| A4750 |  | Válvulas Líneas de Aire (Global) | 18d | 2026-01-14 A | 2026-03-19 | A4700 SS | 79% | 3.86d | 2026-02-06 | 2026-02-23 | 19.14d | 0d | SQM-PIPING [325.88 h] | 325.88 | 41.3 | AIRE | un | 114 | 98,7 | 99.16 | 114 |  |  |
|  | 3 | **TIE-IN DE LÍNEAS ASOCIADAS A RED DE AIRE 5817** |  | 2026-03-16 | 2026-03-24 |  |  |  |  |  |  |  |  |  |  |  |  |  |  |  |  |  |  |
| A4760 |  | TIE-IN N° 1425 - 150-IA-5771-I1-2486 a Línea Proyectada 25-IA-5771-I1-1630 | 4d | 2026-03-16 | 2026-03-19 | A4730 FF |  |  |  |  | 19d | 0d | SQM-PIPING [46.67 h] | 46.67 |  | AIRE | un | 1 | 1 | 9.1.3.6 | 1 |  |  |
| A4770 |  | TIE-IN N° 1426 - 25-IA-5871-I1-1644 a Línea Proyectada 25-IA-5871-I1-1634 | 1d | 2026-03-20 | 2026-03-20 | A4760 |  |  |  |  | 19d | 0d | SQM-PIPING [29 h] | 29 |  | AIRE | un | 1 | 1 | 9.1.3.5 | 1 |  |  |
| A4780 |  | TIE-IN N° 1427 - 25-IA-5871-I1-1644 a Línea Proyectada 25-IA-5871-I1-1638 | 1d | 2026-03-21 | 2026-03-21 | A4770 |  |  |  |  | 19d | 0d | SQM-PIPING [29 h] | 29 |  | AIRE | un | 1 | 1 | 9.1.3.4 | 1 |  |  |
| A4790 |  | TIE-IN N° 1428 - LØne Existente (TAG por Confirmar) a Línea Proyectada 25-IA-5871-I1-1642 | 1d | 2026-03-22 | 2026-03-22 | A4780 |  |  |  |  | 19d | 0d | SQM-PIPING [29 h] | 29 |  | AIRE | un | 1 | 1 | 9.1.3.3 | 1 |  |  |
| A4800 |  | TIE-IN N° 1429 - Línea Existente (TAG por Confirmar) a Línea Proyectada 25-IA-5871-I1-1646 | 1d | 2026-03-23 | 2026-03-23 | A4790 |  |  |  |  | 19d | 0d | SQM-PIPING [29 h] | 29 |  | AIRE | un | 1 | 1 | 9.1.3.2 | 1 |  |  |
| A4810 |  | TIE-IN N° 1430 - Línea Existente (TAG por Confirmar) a Línea Proyectada 25-IA-5871-I1-1649 | 1d | 2026-03-24 | 2026-03-24 | A4800 |  |  |  |  | 19d |  | SQM-PIPING [29 h] | 29 |  | AIRE | un | 1 | 1 | 9.1.3.1 | 1 |  |  |
|  | 5 | **OBRAS ELÉCTRICAS TK-6060 5817** |  | 2025-11-08 | 2026-03-19 |  |  |  |  |  |  |  |  |  |  |  |  |  |  |  |  |  |  |
|  | 1 | **MONTAJE DE CANALIZACIÓN Y FERRETERÍA TK-6060 5817** |  | 2025-11-08 | 2026-03-19 |  |  |  |  |  |  |  |  |  |  |  |  |  |  |  |  |  |  |
| A4820 |  | EPC y Copla Porta Conductores 600x100mm e:2,5 mm, tiras 3m. Incluir tapa dos aguas, eclisas y pernos de Unión. | 12d | 2025-11-08 A | 2026-03-16 | A4360, A4330 FF | 93% | 0.81d | 2025-12-05 | 2025-12-16 | 27.19d |  | SQM-ELÉCTRICO [616 h] | 616 | 560 | 5817-TK6060 | m | 110 | 0 | 5.3.2.1 | 200 | MODIFICAR FECHA PARA QUE TERMINE DESPUES DEL PIPING |  |
| A4830 |  | EPC Curva de 90°, 600x100mm e:2,5mm. Incluir tapa dos aguas, eclisas y pernos de Unión. | 3d | 2025-11-17 A | 2025-12-19 A | A4820 FF | 100% |  | 2025-12-14 | 2025-12-16 |  |  | SQM-ELÉCTRICO [72.8 h] | 72.8 | 72.8 | 5817-TK6060 | un | 13 | 0 | 5.3.2.2 | 10 | R FF |  |
| A4840 |  | Canalización y Copla de Conduit de Acero Galvanizado 6"Ø, Conduit ANSI C80.1 | 7d | 2025-11-20 A | 2026-03-19 | A4830 | 52% | 3.36d | 2025-12-17 | 2025-12-23 | 24.64d |  | SQM-ELÉCTRICO [136.37 h] | 136.37 | 48.13 | 5817-TK6060 | m | 34 | 0 | 5.3.2.7 | 110 |  |  |
| A4900 |  | Canalización y Copla de Conduit de Acero Galvanizado 1 1/2"Ø, Conduit ANSI C80.1 | 7d | 2025-11-23 A | 2025-12-22 A | A4750 | 100% |  | 2026-02-24 | 2026-03-02 |  |  | SQM-ELÉCTRICO [205.38 h] | 205.38 | 205.38 | 5817-TK6060 | m | 163 | 0 | 5.3.2.10 | 350 |  |  |
| A4850 |  | Canalización y Copla de Conduit Flexible Metálico con Cubierta PVC 6" Ø Trabajo Pesado | 3d | 2025-11-27 A | 2025-12-20 A | A4840 | 100% |  | 2025-12-24 | 2025-12-26 |  |  | SQM-ELÉCTRICO [10.08 h] | 10.08 | 10.08 | 5817-TK6060 | m | 3 | 0 | 5.3.2.3 | 15 |  |  |
| A4910 |  | Canalización y Copla de Conduit Flexible Metálico con Cubierta PVC 1 1/2" Ø Trabajo Pesado | 4d | 2025-12-02 A | 2025-12-24 A | A4900, A4870 | 100% |  | 2026-03-04 | 2026-03-07 |  |  | SQM-ELÉCTRICO [30.74 h] | 30.74 | 30.74 | 5817-TK6060 | m | 24,4 | 0 | 5.3.2.6 | 60 |  |  |
| A4860 |  | Canalización y Copla de Conduit de Acero Galvanizado 2 1/2"Ø, Conduit ANSI C80.1 | 3d | 2025-12-20 A | 2025-12-23 A | A4850 | 100% |  | 2025-12-27 | 2025-12-29 |  |  | SQM-ELÉCTRICO [11.34 h] | 11.34 | 11.34 | 5817-TK6060 | m | 6 | 0 | 5.3.2.9 | 45 |  |  |
| A4870 |  | Canalización y Copla de Conduit Flexible Metálico con Cubierta PVC 2 1/2" Ø Trabajo Pesado | 1d | 2025-12-22 A | 2025-12-23 A | A4900 | 100% |  | 2026-03-03 | 2026-03-03 |  |  | SQM-ELÉCTRICO [3.78 h] | 3.78 | 3.78 | 5817-TK6060 | m | 2 | 0 | 5.3.2.5 | 5 |  |  |
| A4920 |  | Perno de Ensamble de Malla a Tierra en E.P.C. | 2d | 2025-12-22 A | 2025-12-24 A | A4900 | 100% |  | 2026-03-03 | 2026-03-04 |  |  | SQM-ELÉCTRICO [12.6 h] | 12.6 | 12.6 | 5817-TK6060 | un | 200 | 0 | 5.3.1.1 | 200 |  |  |
|  | 2 | **TENDIDO Y CONEXIONADO DE CABLES DE ALIMENTACIÓN TK-6060 5817** |  | 2025-12-01 | 2026-01-10 |  |  |  |  |  |  |  |  |  |  |  |  |  |  |  |  |  |  |
| A4940 |  | Cable Monoconductor de Cobre con Aislación XLPE, 1C #250 MCM, Clase 1 kV | 3d | 2025-12-01 A | 2026-01-09 A | A4930 | 100% |  | 2026-03-23 | 2026-03-25 |  |  | SQM-ELÉCTRICO [85.95 h] | 85.95 | 85.95 | 5817-TK6060 | m | 136 | 0 | 5.3.3.8 | 170 |  | SUM M-13 F.Entrega: 17-12-25 |
| A4990 |  | Cable Multiconductor de Cobre con Aislación XLPE, 1X4C #2 AWG, Clase 1 kV | 2d | 2025-12-06 A | 2025-12-23 A | A5000 SS | 100% |  | 2026-03-09 | 2026-03-10 |  |  | SQM-ELÉCTRICO [23.38 h] | 23.38 | 23.38 | 5817-TK6060 | m | 37 | 0 | 5.3.3.2 | 50 |  |  |
| A5000 |  | Cable Multiconductor de Cobre con Aislación de XLPE, 1x5C #12 AWG, Clase 1 kV | 2d | 2025-12-06 A | 2025-12-23 A | A5010, A4910 | 100% |  | 2026-03-09 | 2026-03-10 |  |  | SQM-ELÉCTRICO [38.36 h] | 38.36 | 38.36 | 5817-TK6060 | m | 105 | 0 | 5.3.3.6 | 130 |  |  |
| A4970 |  | Cable Multiconductor de Cobre con Aislación XLPE, 1X3C #4 AWG, Clase 1 kV | 3d | 2025-12-23 A | 2025-12-26 A | A4980 SS | 100% |  | 2026-03-11 | 2026-03-13 |  |  | SQM-ELÉCTRICO [121.95 h] | 121.95 | 121.95 | 5817-TK6060 | m | 217 | 0 | 5.3.3.5 | 280 |  | SUM M-13 F.Entrega: 17-12-25 |
| A4980 |  | Cable Multiconductor de Cobre con Aislación XLPE, 1X4C #10 AWG, Clase 1 kV | 2d | 2025-12-23 A | 2025-12-25 A | A4990 | 100% |  | 2026-03-11 | 2026-03-12 |  |  | SQM-ELÉCTRICO [9.2 h] | 9.2 | 9.2 | 5817-TK6060 | m | 17 | 0 | 5.3.3.3 | 20 |  |  |
| A4930 |  | Cable Monoconductor de Cobre con Aislación XLPE, 1C #500 MCM, Clase 1 kV | 15d | 2025-12-24 A | 2026-01-09 A | A4910 | 100% |  | 2026-03-08 | 2026-03-22 |  |  | SQM-ELÉCTRICO [1945.44 h] | 1,945.44 | 1,945.44 | 5817-TK6060 | m | 2520 | 0 | 5.3.3.7 | 2250 |  |  |
| A4960 |  | Cable Multiconductor de Cobre con Aislación XLPE, 1X3C #8 AWG, Clase 1 kV | 8d | 2025-12-26 A | 2026-01-03 A | A4970 | 100% |  | 2026-03-14 | 2026-03-21 |  |  | SQM-ELÉCTRICO [305.67 h] | 305.67 | 305.67 | 5817-TK6060 | m | 565 | 0 | 5.3.3.4 | 710 |  |  |
| A4950 |  | Cable Multiconductor de Cobre con Aislación XLPE, 1X4C #8 AWG, Clase 1 kV | 1d | 2026-01-09 A | 2026-01-10 A | A4960 SS, A4940 | 100% |  | 2026-03-26 | 2026-03-26 |  |  | SQM-ELÉCTRICO [9.2 h] | 9.2 | 9.2 | 5817-TK6060 | m | 17 | 0 | 5.3.3.1 | 20 |  |  |

| ID | WBS | Activity | Duration | Start | Finish | Predecessors | Complete | Remaining | Planned start | Planned finish | Total float | Resources | Cost | Actual cost | Área | Unidad | Cantidad | Remanente | Impacto | Ítem EDP | Forecast |
| --- | --- | --- | --- | --- | --- | --- | --- | --- | --- | --- | --- | --- | --- | --- | --- | --- | --- | --- | --- | --- | --- |
|  | 3 | **MONTAJE DE POSTACIÓN TK-6060 5817** |  | 2025-12-11 | 2025-12-24 |  |  |  |  |  |  |  |  |  |  |  |  |  |  |  |  |
| A5010 |  | Poste de Acero Galvanizado para Iluminación. | 4d | 2025-12-11 A | 2025-12-24 A | A4920 | 100% |  | 2026-03-05 | 2026-03-08 |  | SQM-ELÉCTRICO [130 h] | 130 | 130 | 5817-TK6060 | un | 16 | 0 | LDO N°25 | 5.3.6.1 | 16 |
|  | 4 | **MONTAJE Y CONEXIONADO DE EQUIPOS ELÉCTRICOS TK-6060** |  | 2025-12-24 | 2026-01-15 |  |  |  |  |  |  |  |  |  |  |  |  |  |  |  |  |
| A5020 |  | Tablero Partidor de Motores TAG: 5817-TPM-1501 | 3d | 2025-12-24 A | 2025-12-29 A | A4900 SS | 100% |  | 2026-02-24 | 2026-02-26 |  | SQM-ELÉCTRICO [124.1 h] | 124.1 | 124.1 | 5817-TK6060 | gl | 1 | 0 | LDO N°19-22; SDC N°55 | 5.3.4.9 | 1 |
| A5030 |  | Conexión de Motor TAG: 5817-MTR-6078 a TPM TAG: 5817-TPM-1501. | 1d | 2026-01-10 A | 2026-01-11 A | A4950, A5020 | 100% |  | 2026-03-27 | 2026-03-27 |  | SQM-ELÉCTRICO [4.13 h] | 4.13 | 4.13 | 5817-TK6060 | gl | 1 | 0 |  | 5.3.4.2 | 1 |
| A5040 |  | Conexión de Motor TAG: 5817-MTR-6070 a TPM TAG: 5817-TPM-1501. | 1d | 2026-01-10 A | 2026-01-11 A | A5030 SS | 100% |  | 2026-03-27 | 2026-03-27 |  | SQM-ELÉCTRICO [4.13 h] | 4.13 | 4.13 | 5817-TK6060 | gl | 1 | 0 |  | 5.3.4.5 | 1 |
| A5050 |  | Conexión de Motor TAG: 5817-MTR-6073 a TPM TAG: 5817-TPM-1501. | 1d | 2026-01-11 A | 2026-01-12 A | A5040 | 100% |  | 2026-03-28 | 2026-03-28 |  | SQM-ELÉCTRICO [4.13 h] | 4.13 | 4.13 | 5817-TK6060 | gl | 1 | 0 |  | 5.3.4.4 | 1 |
| A5060 |  | Conexión de Motor TAG: 5817-MTR-6062 a TPM TAG: 5817-TPM-1501. | 1d | 2026-01-11 A | 2026-01-12 A | A5050 SS | 100% |  | 2026-03-28 | 2026-03-28 |  | SQM-ELÉCTRICO [4.13 h] | 4.13 | 4.13 | 5817-TK6060 | gl | 1 | 0 |  | 5.3.4.6 | 1 |
| A5070 |  | Conexión de Motor TAG: 5817-MTR-6076 a TPM TAG: 5817-TPM-1501. | 1d | 2026-01-12 A | 2026-01-13 A | A5060 | 100% |  | 2026-03-29 | 2026-03-29 |  | SQM-ELÉCTRICO [4.13 h] | 4.13 | 4.13 | 5817-TK6060 | gl | 1 | 0 |  | 5.3.4.3 | 1 |
| A5080 |  | Conexión de Tablero Partidor de Motores TAG: 5817-TPM-1501 a Sala Eléctrica TAG: SEL-4016. | 1d | 2026-01-12 A | 2026-01-13 A | A5070 SS | 100% |  | 2026-03-29 | 2026-03-29 |  | SQM-ELÉCTRICO [4.13 h] | 4.13 | 4.13 | 5817-TK6060 | gl | 1 | 0 |  | 5.3.4.1 | 1 |
| A5090 |  | Conexión de Luminarias Tipo Pedestal. | 2d | 2026-01-13 A | 2026-01-15 A | A5080 SS | 100% |  | 2026-03-29 | 2026-03-30 |  | SQM-ELÉCTRICO [28.88 h] | 28.88 | 28.88 | 5817-TK6060 | un | 7 | 0 |  | 5.3.4.8 | 7 |
| A5100 |  | Conexión de Luminarias Tipo Proyector. | 2d | 2026-01-13 A | 2026-01-15 A | A5090 SS, A5000 | 100% |  | 2026-03-29 | 2026-03-30 |  | SQM-ELÉCTRICO [37.13 h] | 37.13 | 37.13 | 5817-TK6060 | un | 9 | 0 |  | 5.3.4.7 | 9 |
|  | 5 | **PRUEBAS DE FUNCIONAMIENTO Y PEM TK-6060** |  | 2026-01-15 | 2026-03-16 |  |  |  |  |  |  |  |  |  |  |  |  |  |  |  |  |
| A5110 |  | Pruebas de Funcionamiento y Puesta en Marcha de Motor TAG: 5817-MTR-6078. | 1d | 2026-01-15 A | 2026-03-16 | A5100 |  | 1d | 2026-03-31 | 2026-03-31 | 27d | SQM-ELÉCTRICO [12 h] | 12 | 1.2 | 5817-TK6060 | gl | 1 | 0,9 |  | 5.3.5.1 | 1 |
| A5120 |  | Pruebas de Funcionamiento y Puesta en Marcha de Motor TAG: 5817-MTR-6070. | 1d | 2026-01-16 A | 2026-03-16 | A5110 SS |  | 1d | 2026-03-31 | 2026-03-31 | 27d | SQM-ELÉCTRICO [12 h] | 12 | 1.2 | 5817-TK6060 | gl | 1 | 0,9 |  | 5.3.5.4 | 1 |
| A5130 |  | Pruebas de Funcionamiento y Puesta en Marcha de Motor TAG: 5817-MTR-6073. | 1d | 2026-01-17 A | 2026-03-16 | A5120 SS |  | 1d | 2026-03-31 | 2026-03-31 | 27d | SQM-ELÉCTRICO [12 h] | 12 | 1.2 | 5817-TK6060 | gl | 1 | 0,9 |  | 5.3.5.3 | 1 |
| A5140 |  | Pruebas de Funcionamiento y Puesta en Marcha de Motor TAG: 5817-MTR-6062. | 1d | 2026-01-18 A | 2026-03-16 | A5130 SS |  | 1d | 2026-03-31 | 2026-03-31 | 27d | SQM-ELÉCTRICO [12 h] | 12 | 1.2 | 5817-TK6060 | gl | 1 | 0,9 |  | 5.3.5.5 | 1 |
| A5150 |  | Pruebas de Funcionamiento y Puesta en Marcha de Motor TAG: 5817-MTR-6076. | 1d | 2026-01-19 A | 2026-03-16 | A5140 SS |  | 1d | 2026-03-31 | 2026-03-31 | 27d | SQM-ELÉCTRICO [12 h] | 12 | 1.2 | 5817-TK6060 | gl | 1 | 0,9 |  | 5.3.5.2 | 1 |
| A5160 |  | Pruebas de Funcionamiento y Puesta de Luminarias Tipo Pedestal. | 1d | 2026-01-20 A | 2026-03-16 | A5150 SS |  | 1d | 2026-03-31 | 2026-03-31 | 27d | SQM-ELÉCTRICO [12 h] | 12 | 1.2 | 5817-TK6060 | gl | 1 | 0,9 |  | 5.3.5.7 | 1 |
| A5170 |  | Pruebas de Funcionamiento y Puesta de Luminarias Tipo Proyector. | 1d | 2026-01-21 A | 2026-03-16 | A5160 SS |  | 1d | 2026-03-31 | 2026-03-31 | 13d | SQM-ELÉCTRICO [12 h] | 12 | 1.2 | 5817-TK6060 | gl | 1 | 0,9 |  | 5.3.5.6 | 1 |
|  | 6 | **OBRAS DE INSTRUMENTACIÓN TK-6060** |  | 2025-11-22 | 2026-03-17 |  |  |  |  |  |  |  |  |  |  |  |  |  |  |  |  |
|  | 1 | **MONTAJE DE CANALIZACIÓN Y FERRETERÍA INST. TK-6060** |  | 2025-11-22 | 2026-01-09 |  |  |  |  |  |  |  |  |  |  |  |  |  |  |  |  |
| A5200 |  | Canalización y Copla de Conduit de Acero Galvanizado 1"Ø, Conduit ANSI C80.1 | 21d | 2025-11-22 A | 2026-01-04 A | A4900 SS | 100% |  | 2026-02-24 | 2026-03-16 |  | SQM-INSTRUMENTACIÓN [1179.36 h] | 1,179.36 | 1,179.36 | 5817-TK6060 | m | 936 | 0 |  | 5.4.1.3 | 1500 |
| A5210 |  | Canalización y Copla de Conduit Flexible Metálico con Cubierta PVC 1" Ø Trabajo Pesado | 5d | 2026-01-04 A | 2026-01-09 A | A5200, A4860 | 100% |  | 2026-03-17 | 2026-03-21 |  | SQM-INSTRUMENTACIÓN [89.59 h] | 89.59 | 89.59 | 5817-TK6060 | m | 71,1 | 0 |  | 5.4.1.4 | 150 |

| ID | WBS | Activity | Duration | Start | Finish | Predecessors | Complete | Planned start | Planned finish | Total float | Resources | Cost | Actual cost | Área | Unidad | Cantidad | Remanente | Impacto | Ítem EDP | Forecast |
| --- | --- | --- | --- | --- | --- | --- | --- | --- | --- | --- | --- | --- | --- | --- | --- | --- | --- | --- | --- | --- |
|  | 2 | **TENDIDO Y CONEXIONADO DE CABLES DE INSTRUMENTACIÓN TK-6060** |  | 2025-12-01 | 2025-12-30 |  |  |  |  |  |  |  |  |  |  |  |  |  |  |  |
| A5220 |  | Cable Multiconductor de Cobre con Aislación de XLPE, 1x3C #12 AWG, Clase 1 kV | 14d | 2025-12-01 A | 2025-12-30 A | A5200 SS | 100% | 2026-02-24 | 2026-03-09 |  | SQM-INSTRUMENTACIÓN [365.33 h] | 365.33 | 365.33 | 5817-TK6060 | m | 1000 | 0 | SUM E-13 F.Entrega: 17-12-25 | 5.4.2.1 | 1400 |
| A5230 |  | Cable de Instrumentación (Señales Análogas), 1x1 par #16 AWG Apantallado | 5d | 2025-12-01 A | 2025-12-22 A | A5220 | 100% | 2026-03-10 | 2026-03-14 |  | SQM-INSTRUMENTACIÓN [74 h] | 74 | 74 | 5817-TK6060 | m | 250 | 0 | SUM E-13 F.Entrega: 17-12-25 | 5.4.2.3 | 230 |
| A5240 |  | Cable Multiconductor de Cobre Blando 1x3C #12 AWG, Clase 0,3 | 4d | 2025-12-01 A | 2025-12-21 A | A5230 SS | 100% | 2026-03-10 | 2026-03-13 |  | SQM-INSTRUMENTACIÓN [299.21 h] | 299.21 | 299.21 | 5817-TK6060 | m | 819 | 0 | SUM E-13 F.Entrega: 17-12-25 | 5.4.2.5 | 600 |
| A5250 |  | Cable Multiconductor de Cobre Blando 1x5C #12 AWG, Clase 0,3 | 4d | 2025-12-21 A | 2025-12-25 A | A5240 | 100% | 2026-03-14 | 2026-03-17 |  | SQM-INSTRUMENTACIÓN [300.3 h] | 300.3 | 300.3 | 5817-TK6060 | m | 822 | 0 |  | 5.4.2.4 | 600 |
| A5260 |  | Conductor Fibra Óptica Multimodo 12 Hilos | 10d | 2025-12-25 A | 2025-12-28 A | A5250 SS | 100% | 2026-03-14 | 2026-03-23 |  | SQM-INSTRUMENTACIÓN [315.48 h] | 315.48 | 315.48 | 5817-TK6060 | m | 660 | 0 |  | 5.4.2.2 | 850 |
|  | 3 | **MONTAJE Y CONEXIONADO DE EQUIPOS E INSTRUMENTOS TK-6060** |  | 2025-12-01 | 2026-03-16 |  |  |  |  |  |  |  |  |  |  |  |  |  |  |  |
| A5290 |  | Instrumento TAG: FIT-6207 a Panel de Señales Remotas TAG: 5817-RIO-1501. | 1d | 2025-12-01 A | 2025-12-23 A | A5280 SS | 100% | 2026-03-24 | 2026-03-24 |  | SQM-INSTRUMENTACIÓN [21.75 h] | 21.75 | 21.75 | 5817-TK6060 | gl | 1 | 0 |  | 5.4.3.33 | 1 |
| A5300 |  | Instrumento TAG: FIT-6209 a Panel de Señales Remotas TAG: 5817-RIO-1501. | 1d | 2025-12-01 A | 2025-12-23 A | A5290 SS | 100% | 2026-03-24 | 2026-03-24 |  | SQM-INSTRUMENTACIÓN [21.75 h] | 21.75 | 21.75 | 5817-TK6060 | gl | 1 | 0 |  | 5.4.3.32 | 1 |
| A5310 |  | Instrumento TAG: FIT-6260 a Panel de Señales Remotas TAG: 5817-RIO-1501. | 1d | 2025-12-01 A | 2025-12-23 A | A5300 SS | 100% | 2026-03-24 | 2026-03-24 |  | SQM-INSTRUMENTACIÓN [21.75 h] | 21.75 | 21.75 | 5817-TK6060 | gl | 1 | 0 |  | 5.4.3.31 | 1 |
| A5320 |  | Instrumento TAG: FIT-6261 a Panel de Señales Remotas TAG: 5817-RIO-1501. | 1d | 2025-12-01 A | 2025-12-23 A | A5310 SS | 100% | 2026-03-24 | 2026-03-24 |  | SQM-INSTRUMENTACIÓN [21.75 h] | 21.75 | 21.75 | 5817-TK6060 | gl | 1 | 0 |  | 5.4.3.30 | 1 |
| A5340 |  | Instrumento TAG: PIT-6226 a Panel de Señales Remotas TAG: 5817-RIO-1501. | 1d | 2025-12-01 A | 2025-12-23 A | A5330 SS | 100% | 2026-03-24 | 2026-03-24 |  | SQM-INSTRUMENTACIÓN [12 h] | 12 | 12 | 5817-TK6060 | gl | 1 | 0 |  | 5.4.3.26 | 1 |
| A5350 |  | Instrumento TAG: PIT-6236 a Panel de Señales Remotas TAG: 5817-RIO-1501. | 1d | 2025-12-01 A | 2025-12-23 A | A5340 SS | 100% | 2026-03-24 | 2026-03-24 |  | SQM-INSTRUMENTACIÓN [12 h] | 12 | 12 | 5817-TK6060 | gl | 1 | 0 |  | 5.4.3.25 | 1 |
| A5360 |  | Instrumento TAG: PIT-6222 a Panel de Señales Remotas TAG: 5817-RIO-1501. | 1d | 2025-12-01 A | 2025-12-23 A | A5350 SS | 100% | 2026-03-24 | 2026-03-24 |  | SQM-INSTRUMENTACIÓN [12 h] | 12 | 12 | 5817-TK6060 | gl | 1 | 0 |  | 5.4.3.27 | 1 |
| A5280 |  | Conexión de Fibra Óptica en RIO y Sala Eléctrica TAG: SEL-4016. | 1d | 2025-12-22 A | 2025-12-23 A | A5270 SS, A5260 | 100% | 2026-03-24 | 2026-03-24 |  | SQM-INSTRUMENTACIÓN [4.13 h] | 4.13 | 4.13 | 5817-TK6060 | gl | 1 | 0 |  | 5.4.3.1 | 1 |
| A5330 |  | Instrumento TAG: DIT-6279 a Panel de Señales Remotas TAG: 5817-RIO-1501. | 1d | 2025-12-22 A | 2025-12-23 A | A5320 SS | 100% | 2026-03-24 | 2026-03-24 |  | SQM-INSTRUMENTACIÓN [21.75 h] | 21.75 | 21.75 | 5817-TK6060 | gl | 1 | 0 |  | 5.4.3.34 | 1 |
| A5370 |  | Instrumento TAG: FV-6208 a Panel de Señales Remotas TAG: 5817-RIO-1501. | 1d | 2025-12-22 A | 2025-12-23 A | A5360 SS | 100% | 2026-03-24 | 2026-03-24 |  | SQM-INSTRUMENTACIÓN [21.75 h] | 21.75 | 21.75 | 5817-TK6060 | gl | 1 | 0 |  | 5.4.3.29 | 1 |
| A5380 |  | Instrumento TAG: FV-6217 a Panel de Señales Remotas TAG: 5817-RIO-1501. | 1d | 2025-12-23 A | 2025-12-24 A | A5370 | 100% | 2026-03-25 | 2026-03-25 |  | SQM-INSTRUMENTACIÓN [21.75 h] | 21.75 | 21.75 | 5817-TK6060 | gl | 1 | 0 |  | 5.4.3.28 | 1 |
| A5390 |  | Instrumento TAG: XV-1178 a Panel de Señales Remotas TAG: 5817-RIO-1501. | 1d | 2025-12-23 A | 2025-12-24 A | A5380 SS | 100% | 2026-03-25 | 2026-03-25 |  | SQM-INSTRUMENTACIÓN [21.75 h] | 21.75 | 21.75 | 5817-TK6060 | gl | 1 | 0 |  | 5.4.3.24 | 1 |
| A5400 |  | Instrumento TAG: XV-1179 a Panel de Señales Remotas TAG: 5817-RIO-1501. | 1d | 2025-12-23 A | 2025-12-24 A | A5390 SS | 100% | 2026-03-25 | 2026-03-25 |  | SQM-INSTRUMENTACIÓN [21.75 h] | 21.75 | 21.75 | 5817-TK6060 | gl | 1 | 0 |  | 5.4.3.23 | 1 |
| A5410 |  | Instrumento TAG: XV-1180 a Panel de Señales Remotas TAG: 5817-RIO-1501. | 1d | 2025-12-23 A | 2025-12-24 A | A5400 SS | 100% | 2026-03-25 | 2026-03-25 |  | SQM-INSTRUMENTACIÓN [21.75 h] | 21.75 | 21.75 | 5817-TK6060 | gl | 1 | 0 |  | 5.4.3.22 | 1 |
| A5420 |  | Instrumento TAG: XV-1181 a Panel de Señales Remotas TAG: 5817-RIO-1501. | 1d | 2025-12-24 A | 2025-12-25 A | A5410 SS | 100% | 2026-03-25 | 2026-03-25 |  | SQM-INSTRUMENTACIÓN [21.75 h] | 21.75 | 21.75 | 5817-TK6060 | gl | 1 | 0 |  | 5.4.3.21 | 1 |
| A5430 |  | Instrumento TAG: XV-1182 a Panel de Señales Remotas TAG: 5817-RIO-1501. | 1d | 2025-12-24 A | 2025-12-25 A | A5420 SS | 100% | 2026-03-25 | 2026-03-25 |  | SQM-INSTRUMENTACIÓN [21.75 h] | 21.75 | 21.75 | 5817-TK6060 | gl | 1 | 0 |  | 5.4.3.20 | 1 |
| A5440 |  | Instrumento TAG: XV-6206 a Panel de Señales Remotas TAG: 5817-RIO-1501. | 1d | 2025-12-24 A | 2025-12-25 A | A5430 SS | 100% | 2026-03-25 | 2026-03-25 |  | SQM-INSTRUMENTACIÓN [21.75 h] | 21.75 | 21.75 | 5817-TK6060 | gl | 1 | 0 |  | 5.4.3.19 | 1 |
| A5450 |  | Instrumento TAG: XV-6209 a Panel de Señales Remotas TAG: 5817-RIO-1501. | 1d | 2025-12-24 A | 2025-12-25 A | A5440 SS | 100% | 2026-03-25 | 2026-03-25 |  | SQM-INSTRUMENTACIÓN [21.75 h] | 21.75 | 21.75 | 5817-TK6060 | gl | 1 | 0 |  | 5.4.3.18 | 1 |
| A5460 |  | Instrumento TAG: XV-6216 a Panel de Señales Remotas TAG: 5817-RIO-1501. | 1d | 2025-12-28 A | 2025-12-29 A | A5450 SS | 100% | 2026-03-25 | 2026-03-25 |  | SQM-INSTRUMENTACIÓN [21.75 h] | 21.75 | 21.75 | 5817-TK6060 | gl | 1 | 0 |  | 5.4.3.17 | 1 |
| A5470 |  | Instrumento TAG: XV-6219 a Panel de Señales Remotas TAG: 5817-RIO-1501. | 1d | 2025-12-28 A | 2025-12-29 A | A5460 SS | 100% | 2026-03-25 | 2026-03-25 |  | SQM-INSTRUMENTACIÓN [21.75 h] | 21.75 | 21.75 | 5817-TK6060 | gl | 1 | 0 |  | 5.4.3.16 | 1 |
| A5490 |  | Instrumento TAG: XV-6223 a Panel de Señales Remotas TAG: 5817-RIO-1501. | 1d | 2025-12-28 A | 2025-12-29 A | A5480 SS | 100% | 2026-03-25 | 2026-03-25 |  | SQM-INSTRUMENTACIÓN [21.75 h] | 21.75 | 21.75 | 5817-TK6060 | gl | 1 | 0 |  | 5.4.3.14 | 1 |
| A5500 |  | Instrumento TAG: XV-6224 a Panel de Señales Remotas TAG: 5817-RIO-1501. | 1d | 2025-12-29 A | 2025-12-30 A | A5490 | 100% | 2026-03-26 | 2026-03-26 |  | SQM-INSTRUMENTACIÓN [21.75 h] | 21.75 | 21.75 | 5817-TK6060 | gl | 1 | 0 |  | 5.4.3.13 | 1 |
| A5510 |  | Instrumento TAG: XV-6225 a Panel de Señales Remotas TAG: 5817-RIO-1501. | 1d | 2025-12-29 A | 2025-12-30 A | A5500 SS | 100% | 2026-03-26 | 2026-03-26 |  | SQM-INSTRUMENTACIÓN [21.75 h] | 21.75 | 21.75 | 5817-TK6060 | gl | 1 | 0 |  | 5.4.3.12 | 1 |
| A5520 |  | Instrumento TAG: XV-6226 a Panel de Señales Remotas TAG: 5817-RIO-1501. | 1d | 2025-12-29 A | 2025-12-30 A | A5510 SS | 100% | 2026-03-26 | 2026-03-26 |  | SQM-INSTRUMENTACIÓN [21.75 h] | 21.75 | 21.75 | 5817-TK6060 | gl | 1 | 0 |  | 5.4.3.11 | 1 |
| A5530 |  | Instrumento TAG: XV-6227 a Panel de Señales Remotas TAG: 5817-RIO-1501. | 1d | 2025-12-29 A | 2025-12-30 A | A5520 SS | 100% | 2026-03-26 | 2026-03-26 |  | SQM-INSTRUMENTACIÓN [21.75 h] | 21.75 | 21.75 | 5817-TK6060 | gl | 1 | 0 |  | 5.4.3.10 | 1 |
| A5540 |  | Instrumento TAG: XV-6228 a Panel de Señales Remotas TAG: 5817-RIO-1501. | 1d | 2025-12-30 A | 2025-12-31 A | A5530 SS | 100% | 2026-03-26 | 2026-03-26 |  | SQM-INSTRUMENTACIÓN [21.75 h] | 21.75 | 21.75 | 5817-TK6060 | gl | 1 | 0 |  | 5.4.3.9 | 1 |
| A5550 |  | Instrumento TAG: XV-6233 a Panel de Señales Remotas TAG: 5817-RIO-1501. | 1d | 2025-12-30 A | 2025-12-31 A | A5540 SS | 100% | 2026-03-26 | 2026-03-26 |  | SQM-INSTRUMENTACIÓN [21.75 h] | 21.75 | 21.75 | 5817-TK6060 | gl | 1 | 0 |  | 5.4.3.8 | 1 |
| A5560 |  | Instrumento TAG: XV-6234 a Panel de Señales Remotas TAG: 5817-RIO-1501. | 1d | 2025-12-30 A | 2025-12-31 A | A5550 SS | 100% | 2026-03-26 | 2026-03-26 |  | SQM-INSTRUMENTACIÓN [21.75 h] | 21.75 | 21.75 | 5817-TK6060 | gl | 1 | 0 |  | 5.4.3.7 | 1 |
| A5570 |  | Instrumento TAG: XV-6237 a Panel de Señales Remotas TAG: 5817-RIO-1501. | 1d | 2025-12-30 A | 2025-12-31 A | A5560 SS | 100% | 2026-03-26 | 2026-03-26 |  | SQM-INSTRUMENTACIÓN [21.75 h] | 21.75 | 21.75 | 5817-TK6060 | gl | 1 | 0 |  | 5.4.3.6 | 1 |
| A5580 |  | Instrumento TAG: XV-6238 a Panel de Señales Remotas TAG: 5817-RIO-1501. | 1d | 2025-12-31 A | 2026-01-01 A | A5570 SS | 100% | 2026-03-26 | 2026-03-26 |  | SQM-INSTRUMENTACIÓN [21.75 h] | 21.75 | 21.75 | 5817-TK6060 | gl | 1 | 0 |  | 5.4.3.5 | 1 |
| A5590 |  | Instrumento TAG: XV-6243 a Panel de Señales Remotas TAG: 5817-RIO-1501. | 1d | 2025-12-31 A | 2026-01-01 A | A5580 SS | 100% | 2026-03-26 | 2026-03-26 |  | SQM-INSTRUMENTACIÓN [21.75 h] | 21.75 | 21.75 | 5817-TK6060 | gl | 1 | 0 |  | 5.4.3.4 | 1 |
| A5600 |  | Instrumento TAG: XV-6259 a Panel de Señales Remotas TAG: 5817-RIO-1501. | 1d | 2025-12-31 A | 2026-01-01 A | A5590 SS | 100% | 2026-03-26 | 2026-03-26 |  | SQM-INSTRUMENTACIÓN [21.75 h] | 21.75 | 21.75 | 5817-TK6060 | gl | 1 | 0 |  | 5.4.3.3 | 1 |
| A5610 |  | Instrumento TAG: XV-6263 a Panel de Señales Remotas TAG: 5817-RIO-1501. | 1d | 2025-12-31 A | 2026-01-01 A | A5600 SS | 100% | 2026-03-26 | 2026-03-26 |  | SQM-INSTRUMENTACIÓN [21.75 h] | 21.75 | 21.75 | 5817-TK6060 | gl | 1 | 0 |  | 5.4.3.2 | 1 |
| A5270 |  | Pruebas de Funcionamiento y Puesta en Marcha de TAG: 5817-RIO-1501. | 1d | 2026-03-16 | 2026-03-16 | A5020 |  |  |  | 27d | SQM-INSTRUMENTACIÓN [12 h] | 12 |  | 5817-TK6060 | gl | 1 | 1 | SUM E-13 F.Entrega: 17-12-25 | 5.4.3.35 | 1 |
| A5480 |  | Instrumento TAG: XV-6223 a Panel de Señales Remotas TAG: 5817-RIO-1501. | 1d | 2026-03-16 | 2026-03-16 | A5470 SS |  |  |  | 27d | SQM-INSTRUMENTACIÓN [21.75 h] | 21.75 |  | 5817-TK6060 | gl | 1 | 1 |  | 5.4.3.15 | 1 |

| ID | WBS | Activity | Duration | Start | Finish | Predecessors | Remaining | Planned start | Planned finish | Total float | Resources | Cost | Actual cost | Área | Unidad | Cantidad | Remanente | Impacto | Ítem EDP | Forecast |
| --- | --- | --- | --- | --- | --- | --- | --- | --- | --- | --- | --- | --- | --- | --- | --- | --- | --- | --- | --- | --- |
|  | 4 | **PRUEBAS DE FUNCIONAMIENTO Y PEM INST. TK-6060** |  | 2025-12-31 | 2026-03-17 |  |  |  |  |  |  |  |  |  |  |  |  |  |  |  |
| A5630 |  | Pruebas de Operación y Puesta en Marcha de Instrumento TAG: FIT-6207 | 1d | 2025-12-31 A | 2026-03-16 | A5620 SS | 1d | 2026-03-29 | 2026-03-29 | 27d | SQM-INSTRUMENTACIÓN [12 h] | 12 | 2.16 | 5817-TK6060 | gl | 1 | 0,82 | SDC N°55 | 5.4.4.32 | 1 |
| A5640 |  | Pruebas de Operación y Puesta en Marcha de Instrumento TAG: FIT-6209 | 1d | 2025-12-31 A | 2026-03-16 | A5630 SS | 1d | 2026-03-29 | 2026-03-29 | 27d | SQM-INSTRUMENTACIÓN [12 h] | 12 | 2.16 | 5817-TK6060 | gl | 1 | 0,82 |  | 5.4.4.31 | 1 |
| A5650 |  | Pruebas de Operación y Puesta en Marcha de Instrumento TAG: FIT-6260 | 1d | 2025-12-31 A | 2026-03-16 | A5640 SS | 1d | 2026-03-29 | 2026-03-29 | 27d | SQM-INSTRUMENTACIÓN [12 h] | 12 | 2.16 | 5817-TK6060 | gl | 1 | 0,82 |  | 5.4.4.30 | 1 |
| A5660 |  | Pruebas de Operación y Puesta en Marcha de Instrumento TAG: FIT-6261 | 1d | 2025-12-31 A | 2026-03-16 | A5650 SS | 1d | 2026-03-29 | 2026-03-29 | 27d | SQM-INSTRUMENTACIÓN [12 h] | 12 | 2.16 | 5817-TK6060 | gl | 1 | 0,82 |  | 5.4.4.29 | 1 |
| A5670 |  | Pruebas de Operación y Puesta en Marcha de Instrumento TAG: DIT-6279 | 1d | 2025-12-31 A | 2026-03-16 | A5660 SS | 1d | 2026-03-29 | 2026-03-29 | 27d | SQM-INSTRUMENTACIÓN [12 h] | 12 | 2.16 | 5817-TK6060 | gl | 1 | 0,82 |  | 5.4.4.33 | 1 |
| A5680 |  | Pruebas de Operación y Puesta en Marcha de Instrumento TAG: PIT-6226 | 1d | 2025-12-31 A | 2026-03-16 | A5670 SS | 1d | 2026-03-29 | 2026-03-29 | 27d | SQM-INSTRUMENTACIÓN [12 h] | 12 | 2.16 | 5817-TK6060 | gl | 1 | 0,82 |  | 5.4.4.25 | 1 |
| A5690 |  | Pruebas de Operación y Puesta en Marcha de Instrumento TAG: PIT-6236 | 1d | 2025-12-31 A | 2026-03-16 | A5680 SS | 1d | 2026-03-29 | 2026-03-29 | 27d | SQM-INSTRUMENTACIÓN [12 h] | 12 | 2.16 | 5817-TK6060 | gl | 1 | 0,82 |  | 5.4.4.24 | 1 |
| A5700 |  | Pruebas de Operación y Puesta en Marcha de Instrumento TAG: PIT-6222 | 1d | 2025-12-31 A | 2026-03-16 | A5690 SS | 1d | 2026-03-29 | 2026-03-29 | 27d | SQM-INSTRUMENTACIÓN [12 h] | 12 | 2.16 | 5817-TK6060 | gl | 1 | 0,82 |  | 5.4.4.26 | 1 |
| A5710 |  | Pruebas de Operación y Puesta en Marcha de Instrumento TAG: FV-6208 | 1d | 2025-12-31 A | 2026-03-16 | A5700 SS | 1d | 2026-03-29 | 2026-03-29 | 27d | SQM-INSTRUMENTACIÓN [12 h] | 12 | 2.16 | 5817-TK6060 | gl | 1 | 0,82 |  | 5.4.4.28 | 1 |
| A5720 |  | Pruebas de Operación y Puesta en Marcha de Instrumento TAG: FV-6217 | 1d | 2025-12-31 A | 2026-03-16 | A5710 SS | 1d | 2026-03-29 | 2026-03-29 | 27d | SQM-INSTRUMENTACIÓN [12 h] | 12 | 2.16 | 5817-TK6060 | gl | 1 | 0,82 |  | 5.4.4.27 | 1 |
| A5730 |  | Pruebas de Operación y Puesta en Marcha de Instrumento TAG: XV-1178 | 1d | 2025-12-31 A | 2026-03-16 | A5720 SS | 1d | 2026-03-29 | 2026-03-29 | 27d | SQM-INSTRUMENTACIÓN [12 h] | 12 | 2.16 | 5817-TK6060 | gl | 1 | 0,82 |  | 5.4.4.23 | 1 |
| A5740 |  | Pruebas de Operación y Puesta en Marcha de Instrumento TAG: XV-1179 | 1d | 2025-12-31 A | 2026-03-16 | A5730 SS | 1d | 2026-03-29 | 2026-03-29 | 27d | SQM-INSTRUMENTACIÓN [12 h] | 12 | 2.16 | 5817-TK6060 | gl | 1 | 0,82 |  | 5.4.4.22 | 1 |
| A5750 |  | Pruebas de Operación y Puesta en Marcha de Instrumento TAG: XV-1180 | 1d | 2025-12-31 A | 2026-03-16 | A5740 SS | 1d | 2026-03-29 | 2026-03-29 | 27d | SQM-INSTRUMENTACIÓN [12 h] | 12 | 2.16 | 5817-TK6060 | gl | 1 | 0,82 |  | 5.4.4.21 | 1 |
| A5760 |  | Pruebas de Operación y Puesta en Marcha de Instrumento TAG: XV-1181 | 1d | 2025-12-31 A | 2026-03-16 | A5750 SS | 1d | 2026-03-30 | 2026-03-30 | 27d | SQM-INSTRUMENTACIÓN [12 h] | 12 | 2.16 | 5817-TK6060 | gl | 1 | 0,82 |  | 5.4.4.20 | 1 |
| A5770 |  | Pruebas de Operación y Puesta en Marcha de Instrumento TAG: XV-1182 | 1d | 2025-12-31 A | 2026-03-16 | A5760 SS | 1d | 2026-03-30 | 2026-03-30 | 27d | SQM-INSTRUMENTACIÓN [12 h] | 12 | 2.16 | 5817-TK6060 | gl | 1 | 0,82 |  | 5.4.4.19 | 1 |
| A5780 |  | Pruebas de Operación y Puesta en Marcha de Instrumento TAG: XV-6206 | 1d | 2025-12-31 A | 2026-03-16 | A5770 SS | 1d | 2026-03-30 | 2026-03-30 | 27d | SQM-INSTRUMENTACIÓN [12 h] | 12 | 2.16 | 5817-TK6060 | gl | 1 | 0,82 |  | 5.4.4.18 | 1 |
| A5790 |  | Pruebas de Operación y Puesta en Marcha de Instrumento TAG: XV-6209 | 1d | 2025-12-31 A | 2026-03-16 | A5780 SS | 1d | 2026-03-30 | 2026-03-30 | 27d | SQM-INSTRUMENTACIÓN [12 h] | 12 | 2.16 | 5817-TK6060 | gl | 1 | 0,82 |  | 5.4.4.17 | 1 |
| A5800 |  | Pruebas de Operación y Puesta en Marcha de Instrumento TAG: XV-6216 | 1d | 2025-12-31 A | 2026-03-16 | A5790 SS | 1d | 2026-03-30 | 2026-03-30 | 27d | SQM-INSTRUMENTACIÓN [12 h] | 12 | 2.16 | 5817-TK6060 | gl | 1 | 0,82 |  | 5.4.4.16 | 1 |
| A5810 |  | Pruebas de Operación y Puesta en Marcha de Instrumento TAG: XV-6219 | 1d | 2025-12-31 A | 2026-03-16 | A5800 SS | 1d | 2026-03-30 | 2026-03-30 | 27d | SQM-INSTRUMENTACIÓN [12 h] | 12 | 2.16 | 5817-TK6060 | gl | 1 | 0,82 |  | 5.4.4.15 | 1 |
| A5820 |  | Pruebas de Operación y Puesta en Marcha de Instrumento TAG: XV-6223 | 1d | 2025-12-31 A | 2026-03-16 | A5810 SS | 1d | 2026-03-30 | 2026-03-30 | 27d | SQM-INSTRUMENTACIÓN [12 h] | 12 | 2.16 | 5817-TK6060 | gl | 1 | 0,82 |  | 5.4.4.13 | 1 |
| A5830 |  | Pruebas de Operación y Puesta en Marcha de Instrumento TAG: XV-6223 | 1d | 2025-12-31 A | 2026-03-16 | A5820 SS | 1d | 2026-03-30 | 2026-03-30 | 27d | SQM-INSTRUMENTACIÓN [12 h] | 12 | 2.16 | 5817-TK6060 | gl | 1 | 0,82 |  | 5.4.4.13 | 1 |
| A5840 |  | Pruebas de Operación y Puesta en Marcha de Instrumento TAG: XV-6224 | 1d | 2025-12-31 A | 2026-03-16 | A5830 SS | 1d | 2026-03-30 | 2026-03-30 | 27d | SQM-INSTRUMENTACIÓN [12 h] | 12 | 2.16 | 5817-TK6060 | gl | 1 | 0,82 |  | 5.4.4.12 | 1 |
| A5850 |  | Pruebas de Operación y Puesta en Marcha de Instrumento TAG: XV-6225 | 1d | 2025-12-31 A | 2026-03-16 | A5840 SS | 1d | 2026-03-30 | 2026-03-30 | 27d | SQM-INSTRUMENTACIÓN [12 h] | 12 | 2.16 | 5817-TK6060 | gl | 1 | 0,82 |  | 5.4.4.11 | 1 |
| A5860 |  | Pruebas de Operación y Puesta en Marcha de Instrumento TAG: XV-6226 | 1d | 2025-12-31 A | 2026-03-16 | A5850 SS | 1d | 2026-03-30 | 2026-03-30 | 27d | SQM-INSTRUMENTACIÓN [12 h] | 12 | 2.16 | 5817-TK6060 | gl | 1 | 0,82 |  | 5.4.4.10 | 1 |
| A5880 |  | Pruebas de Operación y Puesta en Marcha de Instrumento TAG: XV-6228 | 1d | 2025-12-31 A | 2026-03-16 | A5870 SS | 1d | 2026-03-31 | 2026-03-31 | 27d | SQM-INSTRUMENTACIÓN [24 h] | 24 | 2.16 | 5817-TK6060 | gl | 2 | 0,82 |  | 5.4.4.8 | 1 |
| A5890 |  | Pruebas de Operación y Puesta en Marcha de Instrumento TAG: XV-6233 | 1d | 2025-12-31 A | 2026-03-16 | A5880 SS | 1d | 2026-03-31 | 2026-03-31 | 27d | SQM-INSTRUMENTACIÓN [12 h] | 12 | 2.16 | 5817-TK6060 | gl | 1 | 0,82 |  | 5.4.4.7 | 1 |
| A5900 |  | Pruebas de Operación y Puesta en Marcha de Instrumento TAG: XV-6234 | 1d | 2025-12-31 A | 2026-03-16 | A5890 SS | 1d | 2026-03-31 | 2026-03-31 | 27d | SQM-INSTRUMENTACIÓN [12 h] | 12 | 2.16 | 5817-TK6060 | gl | 1 | 0,82 |  | 5.4.4.6 | 1 |
| A5910 |  | Pruebas de Operación y Puesta en Marcha de Instrumento TAG: XV-6237 | 1d | 2025-12-31 A | 2026-03-16 | A5900 SS | 1d | 2026-03-31 | 2026-03-31 | 27d | SQM-INSTRUMENTACIÓN [12 h] | 12 | 2.16 | 5817-TK6060 | gl | 1 | 0,82 |  | 5.4.4.5 | 1 |
| A5920 |  | Pruebas de Operación y Puesta en Marcha de Instrumento TAG: XV-6238 | 1d | 2025-12-31 A | 2026-03-16 | A5910 SS | 1d | 2026-03-31 | 2026-03-31 | 27d | SQM-INSTRUMENTACIÓN [12 h] | 12 | 2.16 | 5817-TK6060 | gl | 1 | 0,82 |  | 5.4.4.4 | 1 |
| A5930 |  | Pruebas de Operación y Puesta en Marcha de Instrumento TAG: XV-6243 | 1d | 2025-12-31 A | 2026-03-16 | A5920 SS | 1d | 2026-03-31 | 2026-03-31 | 27d | SQM-INSTRUMENTACIÓN [12 h] | 12 | 2.16 | 5817-TK6060 | gl | 1 | 0,82 |  | 5.4.4.3 | 1 |
| A5940 |  | Pruebas de Operación y Puesta en Marcha de Instrumento TAG: XV-6259 | 1d | 2025-12-31 A | 2026-03-16 | A5930 SS | 1d | 2026-03-31 | 2026-03-31 | 27d | SQM-INSTRUMENTACIÓN [12 h] | 12 | 2.16 | 5817-TK6060 | gl | 1 | 0,82 |  | 5.4.4.2 | 1 |
| A5950 |  | Pruebas de Operación y Puesta en Marcha de Instrumento TAG: XV-6263 | 1d | 2026-01-27 A | 2026-03-16 | A5940 SS, A5210, A4810 SS | 1d | 2026-03-31 | 2026-03-31 | 13d | SQM-INSTRUMENTACIÓN [12 h] | 12 | 2.16 | 5817-TK6060 | gl | 1 | 0,82 |  | 5.4.4.1 | 1 |
| A5620 |  | Pruebas de Funcionamiento y Puesta en Marcha de TAG: 5817-RIO-1501. | 2d | 2026-03-16 | 2026-03-17 | A5610 |  |  |  | 26d | SQM-INSTRUMENTACIÓN [12 h] | 12 |  | 5817-TK6060 | gl | 1 | 1 | SUM E-13 F.Entrega: 17-12-25 | 5.4.4.34 | 1 |
| A5870 |  | Pruebas de Operación y Puesta en Marcha de Instrumento TAG: XV-6227 | 1d | 2026-03-16 | 2026-03-16 | A5860 SS |  |  |  | 27d | SQM-INSTRUMENTACIÓN |  |  | 5817-TK6060 | gl | 0 | 0,82 |  | 5.4.4.9 | 1 |

| ID | WBS | Activity | Duration | Start | Finish | Predecessors | Complete | Remaining | Planned start | Planned finish | Total float | Resources | Cost | Actual cost | Área | Unidad | Cantidad | Remanente | Ítem EDP | Forecast | Impacto |
| --- | --- | --- | --- | --- | --- | --- | --- | --- | --- | --- | --- | --- | --- | --- | --- | --- | --- | --- | --- | --- | --- |
|  | 2 | **ÁREA 5772 - SECTOR TK-800** |  | 2025-09-11 | 2026-03-16 |  |  |  |  |  |  |  |  |  |  |  |  |  |  |  |  |
|  | 1 | **OBRAS CIVILES TK-800** |  | 2025-10-05 | 2025-12-15 |  |  |  |  |  |  |  |  |  |  |  |  |  |  |  |  |
|  | 1 | **OOCC SECTOR ESTANQUE DE AGUA BLANDA TAG:5772-EST-800** |  | 2025-10-05 | 2025-12-15 |  |  |  |  |  |  |  |  |  |  |  |  |  |  |  |  |
| A5970 |  | Nivelación Pedestal | 3d | 2025-10-05 A | 2025-12-10 A | A3920 | 100% |  | 2025-09-18 | 2025-09-20 |  | SQM-OOCC [2.7 h] | 2.7 | 2.7 | 5772-TK800 | m3 | 0,03 | 0 | 8.3.1.2 | 0,03 |  |
| A5980 |  | Armadura de Refuerzo A630-420H para Estructura Monorriel | 3d | 2025-10-08 A | 2025-12-15 A | A5970 | 100% |  | 2025-09-21 | 2025-09-23 |  | SQM-OOCC [8.95 h] | 8.95 | 8.95 | 5772-TK800 | kg | 65 | 0 | 8.3.2.1 | 65 |  |
| A5960 |  | Ampliación Pedestal (TAG: 5772-BBA-1601 y TAG: 5772-BBA-1604) | 3d | 2025-10-11 A | 2025-12-15 A | A5980 | 100% |  | 2025-09-24 | 2025-09-26 |  | SQM-OOCC [13.44 h] | 13.44 | 13.44 | 5772-TK800 | m3 | 1,05 | 0 | 8.3.1.1 | 1,05 |  |
| A6000 |  | Emplantillado Estructura Monorriel | 3d | 2025-10-14 A | 2025-12-10 A | A5960 | 100% |  | 2025-09-27 | 2025-09-29 |  | SQM-OOCC [0.22 h] | 0.22 | 0.22 | 5772-TK800 | m3 | 0,02 | 0 | 8.3.4.1 | 0,02 |  |
| A5990 |  | Estructura Monorriel | 3d | 2025-10-17 A | 2025-12-15 A | A6000 | 100% |  | 2025-09-30 | 2025-10-02 |  | SQM-OOCC [168.22 h] | 168.22 | 168.22 | 5772-TK800 | kg | 1106,7 | 0 | 8.3.3.1 | 1106,7 | SDC N°65 |
|  | 2 | **OBRAS MECÁNICAS TK-800** |  | 2025-10-14 | 2025-12-17 |  |  |  |  |  |  |  |  |  |  |  |  |  |  |  |  |
|  | 1 | **MONTAJE Y PRUEBAS DE EQUIPOS MECÁNICOS ÁREA 5772 SECTOR TK-800** |  | 2025-10-14 | 2025-12-17 |  |  |  |  |  |  |  |  |  |  |  |  |  |  |  |  |
| A6010 |  | Bomba Centrífuga y Motor TAG: 5772-BBA-1601; 5772-MTR-1602 | 4d | 2025-10-14 A | 2025-12-16 A | A5960, A5990 | 100% |  | 2025-10-03 | 2025-10-06 |  | SQM-MECANICA [139.9 h] | 139.9 | 139.9 | 5772-TK800 | un | 1 | 0 | 4.1.1.1 | 1 |  |
| A6020 |  | Bomba Centrífuga y Motor TAG: 5772-BBA-1604; 5772-MTR-1605 | 4d | 2025-10-18 A | 2025-12-16 A | A6010 | 100% |  | 2025-10-07 | 2025-10-10 |  | SQM-MECANICA [139.9 h] | 139.9 | 139.9 | 5772-TK800 | un | 1 | 0 | 4.1.1.2 | 1 |  |
| A6030 |  | Tecle Mantenimiento de Bombas TAG: 5772-TEC-1607 | 3d | 2025-10-22 A | 2025-12-17 A | A5990, A6020 | 100% |  | 2025-10-11 | 2025-10-13 |  | SQM-MECANICA [62 h] | 62 | 62 | 5772-TK800 | un | 1 | 0 | 4.1.1.3 | 1 |  |
|  | 3 | **OBRAS PIPING TK-800** |  | 2025-09-11 | 2026-03-16 |  |  |  |  |  |  |  |  |  |  |  |  |  |  |  |  |
|  | 1 | **FABRICACIÓN Y MONTAJE DE CAÑERÍAS ÁREA TK-800** |  | 2025-09-11 | 2026-03-16 |  |  |  |  |  |  |  |  |  |  |  |  |  |  |  |  |
| A6040 |  | Ø 200 mm - Cañería HDPE, PE 100, PN20 (8") - Fabricación | 18d | 2025-09-11 A | 2025-12-24 A | A1070, A5970 | 100% |  | 2025-09-21 | 2025-10-08 |  | SQM-PIPING [199.5 h] | 199.5 | 199.5 | 5772-TK800 | un | 57 | 0 | 4.2.1.3 | 65 | LDO N°11; SDC N°26 |
| A6060 |  | Ø 6" - Cañería Acero Inoxidable - Fabricación | 7d | 2025-10-09 A | 2025-12-13 A | A6050 | 100% |  | 2025-10-14 | 2025-10-20 |  | SQM-PIPING [546 h] | 546 | 546 | 5772-TK800 | un | 42 | 0 | 4.2.1.15 | 37 |  |
| A6110 |  | Ø 200 mm - Cañería HDPE, PE 100, PN20 (8") - Montaje | 28d | 2025-10-09 A | 2025-12-15 A | A6040 SS+3d | 100% |  | 2025-09-24 | 2025-10-21 |  | SQM-PIPING [478.8 h] | 478.8 | 478.8 | 5772-TK800 | m | 240 | 0 | 4.2.1.10 | 240 | LDO N°11; SDC N°26 |
| A6130 |  | Ø 6" - Cañería Acero Inoxidable - Montaje | 7d | 2025-10-28 A | 2025-12-12 A | A6120 | 100% |  | 2025-11-17 | 2025-11-23 |  | SQM-PIPING [28.73 h] | 28.73 | 28.73 | 5772-TK800 | m | 10,9 | 0 | 4.2.1.20 | 10,9 |  |
| A6160 |  | Ø 2" - Cañería Acero Inoxidable - Montaje | 3d | 2025-12-13 A | 2026-03-16 | A6150, A6180 FF, A6179 FF, A6170 | 97% | 0.1d | 2025-12-13 | 2025-12-15 | 27.9d | SQM-PIPING [11.17 h] | 11.17 | 8.68 | 5772-TK800 | m | 4 | 0,00112411369999998 | 4.2.1.35 | 3,2 |  |
| A6050 |  | Ø 8" - Cañería Acero Inoxidable - Fabricación | 5d | 2025-12-15 A | 2025-12-19 A | A6040 | 100% |  | 2025-10-09 | 2025-10-13 |  | SQM-PIPING [29.6 h] | 29.6 | 29.6 | 5772-TK800 | un | 2 | 0 | 4.2.1.4 | 4 |  |
| A6070 |  | Ø 4" - Cañería Acero Inoxidable - Fabricación | 14d | 2025-12-15 A | 2025-12-28 A | A6060 | 100% |  | 2025-10-21 | 2025-11-03 |  | SQM-PIPING [494 h] | 494 | 494 | 5772-TK800 | un | 65 | 0 | 4.2.1.21 | 79 |  |
| A6080 |  | Ø 3" - Cañería Acero Inoxidable - Fabricación | 2d | 2025-12-29 A | 2025-12-30 A | A6070 | 100% |  | 2025-11-04 | 2025-11-05 |  | SQM-PIPING [28 h] | 28 | 28 | 5772-TK800 | un | 5 | 0 | 4.2.1.28 | 4 |  |
| A6120 |  | Ø 8" - Cañería Acero Inoxidable - Montaje | 5d | 2025-12-29 A | 2026-01-02 A | A6070, A6100, A6110 | 100% |  | 2025-11-12 | 2025-11-16 |  | SQM-PIPING [7.26 h] | 7.26 | 7.26 | 5772-TK800 | m | 0,65 | 0 | 4.2.1.11 | 0,65 |  |
| A6090 |  | Ø 2" - Cañería Acero Inoxidable - Fabricación | 4d | 2025-12-31 A | 2026-01-03 A | A6080 | 100% |  | 2025-11-06 | 2025-11-09 |  | SQM-PIPING [73.9 h] | 73.9 | 73.9 | 5772-TK800 | un | 18 | 0 | 4.2.1.33 | 12 |  |
| A6100 |  | Ø 1" - Cañería Acero Inoxidable - Fabricación | 2d | 2025-12-31 A | 2026-01-01 A | A6090 | 100% |  | 2025-11-10 | 2025-11-11 |  | SQM-PIPING [2 h] | 2 | 2 | 5772-TK800 | un | 1 | 0 | 4.2.1.36 | 1 |  |
| A6140 |  | Ø 4" - Cañería Acero Inoxidable - Montaje | 14d | 2026-01-02 A | 2026-01-15 A | A6130, A6100 | 100% |  | 2025-11-24 | 2025-12-07 |  | SQM-PIPING [77.85 h] | 77.85 | 77.85 | 5772-TK800 | m | 33,2 | 0 | 4.2.1.27 | 20,704785914 |  |
| A6150 |  | Ø 3" - Cañería Acero Inoxidable - Montaje | 4d | 2026-01-16 A | 2026-01-19 A | A6140 | 100% |  | 2025-12-08 | 2025-12-11 |  | SQM-PIPING [0.4 h] | 0.4 | 0.4 | 5772-TK800 | m | 0,20092 | 9,1999999999981E-005 | 4.2.1.31 | 0,20092 |  |

Notes:
- A6000: Corregir: ATRASO POR INTERFERENCIA POR TERRENO Y LLEGADA DE EQUIPO TECLE
- A6030: Corregir: LLEGADA DE TECLE, SE RETIRA EL 7-11
- A6160: Corregir: R FF

| ID | WBS | Activity | Duration | Start | Finish | Predecessors | Complete | Remaining | Planned start | Planned finish | Total float | Resources | Cost | Actual cost | Área | Unidad | Cantidad | Remanente | Ítem EDP | Forecast | Corregir |
| --- | --- | --- | --- | --- | --- | --- | --- | --- | --- | --- | --- | --- | --- | --- | --- | --- | --- | --- | --- | --- | --- |
|  | 2 | **MONTAJE DE VÁLVULAS Y FITTING SECTOR TK-800** |  | 2025-09-11 | 2026-01-05 |  |  |  |  |  |  |  |  |  |  |  |  |  |  |  |  |
| A6180 |  | Válvulas Sector TK-800 (Global) | 80d | 2025-09-11 A | 2026-01-05 A | A6040 SS, A6179 SS | 100% |  | 2025-09-27 | 2025-12-15 |  | SQM-PIPING [266.25 h] | 266.25 | 266.25 | 5772-TK800 | un | 22 | 0 | 99.17 | 21 |  |
| A6179 |  | Fitting Sector TK-800 (Global) | 80d | 2025-12-10 A | 2025-12-17 A | A6040 SS+3d, A6110 SS+3d | 100% |  | 2025-09-27 | 2025-12-15 |  | SQM-PIPING [1443.59 h] | 1,443.59 | 1,443.59 | 5772-TK800 | un | 135 | 0 | 99.8 | 320 |  |
|  | 3 | **TIE IN LÍNEAS ASOCIADAS A TK-800** |  | 2026-01-19 | 2026-01-20 |  |  |  |  |  |  |  |  |  |  |  |  |  |  |  |  |
| A6190 |  | TIE-IN N° 1431 - 5772-EST-800 FRP a Línea Proyectada 150-TW-5772-I1-1661 | 2d | 2026-01-19 A | 2026-01-20 A | A6160 | 100% |  | 2025-12-16 | 2025-12-17 |  | SQM-PIPING [50.67 h] | 50.67 | 50.67 | 5772-TK800 | un | 1 | 0 | 4.2.3.2 | 1 |  |
| A6200 |  | TIE-IN N° 1432 - 5772-EST-800 FRP a Línea Proyectada 150-TW-5772-I1-1663 | 2d | 2026-01-19 A | 2026-01-20 A | A6190 | 100% |  | 2025-12-18 | 2025-12-19 |  | SQM-PIPING [50.67 h] | 50.67 | 50.67 | 5772-TK800 | un | 1 | 0 | 4.2.3.1 | 1 |  |
|  | 4 | **FABRICACIÓN Y MONTAJE DE SOPORTES TK-800** |  | 2025-09-11 | 2026-03-16 |  |  |  |  |  |  |  |  |  |  |  |  |  |  |  |  |
| A6170 |  | Retiro Perfil Exsitente y Soporte de Tuberias Existentes | 7d | 2025-09-11 A | 2026-01-05 A | A5990, A6250 | 100% |  | 2025-11-03 | 2025-11-09 |  | SQM-PIPING [432 h] | 432 | 432 | 5728-TK3000 | gl | 1 | 1 |  | 0,12 |  |
| A6220 |  | Soporte N°001 - Pedestal Tipo TEE, Acero Estructural para Tuberías Diámetros Pequeños | 4d | 2025-12-15 A | 2025-12-18 A | A6110 | 100% |  | 2025-10-22 | 2025-10-25 |  | SQM-PIPING [9 h] | 9 | 9 | 5772-TK800 | un | 2 | 0 | 4.2.4.4 | 2 | R FF |
| A6230 |  | Soporte N°002B - Pedestal con Repisa de Acero Estructural para Tuberías Diámetros Pequeños | 4d | 2025-12-15 A | 2025-12-18 A | A6220 | 100% |  | 2025-10-26 | 2025-10-29 |  | SQM-PIPING [9 h] | 9 | 9 | 5772-TK800 | un | 2 | 0 | 4.2.4.3 | 2 |  |
| A6250 |  | Soporte Primario Tipo "U" (Para Uso General) | 3d | 2025-12-15 A | 2025-12-17 A | A6240 | 100% |  | 2025-10-31 | 2025-11-02 |  | SQM-PIPING [12.5 h] | 12.5 | 12.5 | 5772-TK800 | un | 75 | 0 | 4.2.4.1 | 6 |  |
| A6240 |  | Soporte N°003 - Tirángulo Tipo Repisa (Existente), Acero Estructural (NOTA 4) | 1d | 2026-03-16 | 2026-03-16 | A6230 |  |  |  |  | 27d | SQM-PIPING |  |  | 5772-TK800 | (NOTA 4) | 0 | 0 | 4.2.4.2 | 0 |  |
|  | 4 | **OBRAS ELÉCTRICAS TK-800** |  | 2025-10-25 | 2026-03-16 |  |  |  |  |  |  |  |  |  |  |  |  |  |  |  |  |
|  | 1 | **MONTAJE DE CANALIZACIÓN Y FERRETERÍA TK-800** |  | 2025-10-25 | 2025-12-23 |  |  |  |  |  |  |  |  |  |  |  |  |  |  |  |  |
| A6260 |  | Canalización y Copla de Conduit de Acero Galvanizado 6"Ø, Conduit ANSI C80.1 | 10d | 2025-10-25 A | 2025-12-23 A | A6030, A6170 | 100% |  | 2025-11-10 | 2025-11-19 |  | SQM-ELÉCTRICO [64.18 h] | 64.18 | 64.18 | 5772-TK800 | m | 16 | 0 | 4.3.1.3 | 130 |  |
| A6270 |  | Canalización y Copla de Conduit Flexible Metálico con Cubierta PVC 6" Ø Trabajo Pesado | 2d | 2025-11-04 A | 2025-12-16 A | A6260 | 100% |  | 2025-11-20 | 2025-11-21 |  | SQM-ELÉCTRICO [6.72 h] | 6.72 | 6.72 | 5772-TK800 | m | 2 | 0 | 4.3.1.1 | 10 |  |
| A6280 |  | Canalización y Copla de Conduit de Acero Galvanizado 1 Ø"Ø, Conduit ANSI C80.1 | 4d | 2025-11-06 A | 2025-12-18 A | A6270 | 100% |  | 2025-11-22 | 2025-11-25 |  | SQM-ELÉCTRICO [7.56 h] | 7.56 | 7.56 | 5772-TK800 | m | 6 | 0 | 4.3.1.4 | 100 |  |
| A6290 |  | Canalización y Copla de Conduit Flexible Metálico con Cubierta PVC 1 Ø" Ø Trabajo Pesado | 2d | 2025-12-10 A | 2025-12-16 A | A6280 | 100% |  | 2025-11-26 | 2025-11-27 |  | SQM-ELÉCTRICO [2.52 h] | 2.52 | 2.52 | 5772-TK800 | m | 2 | 0 | 4.3.1.2 | 5 |  |
|  | 2 | **TENDIDO Y CONEXIONADO DE CABLES DE ALIMENTACIÓN TK-800** |  | 2025-11-12 | 2026-03-16 |  |  |  |  |  |  |  |  |  |  |  |  |  |  |  |  |
| A6300 |  | Cable Monoconductor de Cobre con Aislación XLPE, 1C #350 MCM, Clase 1 kV | 14d | 2025-11-12 A | 2026-03-16 | A6290, A6280 | 98% | 0.23d | 2025-11-28 | 2025-12-11 | 27.78d | SQM-ELÉCTRICO [710.24 h] | 710.24 | 694.8 | 5772-TK800 | m | 920 | 0 | 4.3.2.2 | 2500 |  |
| A6310 |  | Cable Multiconductor de Cobre con Aislación de XLPE, 1x5C #12 AWG, Clase 1 kV | 5d | 2025-11-21 A | 2025-12-16 A | A6300 FF | 100% |  | 2025-12-07 | 2025-12-11 |  | SQM-ELÉCTRICO [63.57 h] | 63.57 | 63.57 | 5772-TK800 | m | 174 | 0 | 4.3.2.1 | 500 | R FF |
|  | 3 | **MONTAJE Y CONEXIONADO DE EQUIPOS ELÉCTRICOS TK-800** |  | 2025-11-26 | 2025-12-16 |  |  |  |  |  |  |  |  |  |  |  |  |  |  |  |  |
| A6320 |  | Variador de Frecuencia TAG: 5772-VSD-1603 en SEL-403. | 2d | 2025-11-26 A | 2025-12-12 A | A6310 | 100% |  | 2025-12-12 | 2025-12-13 |  | SQM-ELÉCTRICO [36 h] | 36 | 36 | 5772-TK800 | gl | 1 | 0 | 4.3.3.2 | 1 |  |
| A6330 |  | Variador de Frecuencia TAG: 5772-VSD-1605 en SEL-403. | 2d | 2025-11-28 A | 2025-12-13 A | A6320 | 100% |  | 2025-12-14 | 2025-12-15 |  | SQM-ELÉCTRICO [36 h] | 36 | 36 | 5772-TK800 | gl | 1 | 0 | 4.3.3.1 | 1 |  |
| A6340 |  | Modificación de Cubiculo Existente en TAG: 5770-CCM-488, para Suministro de Energía de TAG: 5772-VSD-1603. | 2d | 2025-11-30 A | 2025-12-13 A | A6330 | 100% |  | 2025-12-16 | 2025-12-17 |  | SQM-ELÉCTRICO [35 h] | 35 | 35 | 5772-TK800 | gl | 1 | 0 | 4.3.3.4 | 1 |  |
| A6350 |  | Modificación de Cubiculo Existente en TAG: 5770-CCM-488, para Suministro de Energía de TAG: 5772-VSD-1605. | 2d | 2025-12-02 A | 2025-12-12 A | A6340 | 100% |  | 2025-12-18 | 2025-12-19 |  | SQM-ELÉCTRICO [35 h] | 35 | 35 | 5772-TK800 | gl | 1 | 0 | 4.3.3.3 | 1 |  |
| A6360 |  | Conexión de entre CCM TAG: 5770-CCM-488 y VDF TAG: 5772-VSD-1603. | 1d | 2025-12-04 A | 2025-12-16 A | A6350 | 100% |  | 2025-12-20 | 2025-12-20 |  | SQM-ELÉCTRICO [4.13 h] | 4.13 | 4.13 | 5772-TK800 | gl | 1 | 0 | 4.4.4.6 | 1 |  |
| A6370 |  | Conexión de entre CCM TAG: 5770-CCM-488 y VDF TAG: 5772-VSD-1605. | 1d | 2025-12-04 A | 2025-12-16 A | A6360 SS | 100% |  | 2025-12-20 | 2025-12-20 |  | SQM-ELÉCTRICO [4.13 h] | 4.13 | 4.13 | 5772-TK800 | gl | 1 | 0 | 4.4.4.5 | 1 |  |
| A6380 |  | Conexión de entre VDF TAG: 5772-VSD-1603 y Motor TAG: 5772-MTR-1602. | 1d | 2025-12-04 A | 2025-12-16 A | A6370 SS | 100% |  | 2025-12-20 | 2025-12-20 |  | SQM-ELÉCTRICO [4.13 h] | 4.13 | 4.13 | 5772-TK800 | gl | 1 | 0 | 4.4.4.4 | 1 |  |
| A6390 |  | Conexión de entre VDF TAG: 5772-VSD-1605 y Motor TAG: 5772-MTR-1604. | 1d | 2025-12-04 A | 2025-12-16 A | A6380 SS | 100% |  | 2025-12-20 | 2025-12-20 |  | SQM-ELÉCTRICO [4.13 h] | 4.13 | 4.13 | 5772-TK800 | gl | 1 | 0 | 4.4.4.3 | 1 |  |

| ID | WBS | Activity | Duration | Start | Finish | Predecessors | Complete | Remaining | Planned start | Planned finish | Total float | Resources | Cost | Actual cost | Área | Unidad | Cantidad | Remanente | Ítem EDP | Forecast |
| --- | --- | --- | --- | --- | --- | --- | --- | --- | --- | --- | --- | --- | --- | --- | --- | --- | --- | --- | --- | --- |
|  | 4 | **PRUEBAS DE FUNCIONAMIENTO Y PEM TK-800** |  | 2025-12-06 | 2025-12-06 |  |  |  |  |  |  |  |  |  |  |  |  |  |  |  |
| A6400 |  | Pruebas de Funcionamiento y Puesta en Marcha de Motor TAG: 5772-MTR-1602. | 1d | 2025-12-06 A | 2025-12-06 A | A6390 | 100% |  | 2025-12-21 | 2025-12-21 |  | SQM-ELÉCTRICO [12 h] | 12 | 12 | 5772-TK800 | gl | 1 | 0 | 4.3.4.2 | 1 |
| A6410 |  | Pruebas de Funcionamiento y Puesta en Marcha de Motor TAG: 5772-MTR-1604. | 1d | 2025-12-06 A | 2025-12-06 A | A6400, A6250 | 100% |  | 2025-12-22 | 2025-12-22 |  | SQM-ELÉCTRICO [12 h] | 12 | 12 | 5772-TK800 | gl | 1 | 0 | 4.3.4.1 | 1 |
|  | 5 | **OBRAS DE INSTRUMENTACIÓN TK-800** |  | 2025-12-04 | 2026-03-16 |  |  |  |  |  |  |  |  |  |  |  |  |  |  |  |
|  | 1 | **MONTAJE DE CANALIZACIÓN Y FERRETERÍA INST. TK-800** |  | 2025-12-16 | 2025-12-25 |  |  |  |  |  |  |  |  |  |  |  |  |  |  |  |
| A6420 |  | Canalización y Copla de Conduit de Acero Galvanizado 1"Ø, Conduit ANSI C80.1 | 7d | 2025-12-16 A | 2025-12-23 A | A6290, A6300 | 100% |  | 2025-12-12 | 2025-12-18 |  | SQM-INSTRUMENTACIÓN [16.38 h] | 16.38 | 16.38 | 5772-TK800 | m | 13 | 0 | 4.4.1.1 | 120 |
| A6430 |  | Canalización y Copla de Conduit Flexible Metálico con Cubierta PVC 1" Ø Trabajo Pesado | 2d | 2025-12-23 A | 2025-12-25 A | A6420 | 100% |  | 2025-12-19 | 2025-12-20 |  | SQM-INSTRUMENTACIÓN [5.04 h] | 5.04 | 5.04 | 5772-TK800 | m | 4 | 0 | 4.4.1.2 | 10 |
|  | 2 | **TENDIDO Y CONEXIONADO DE CABLES INSTRUMENTACIÓN TK-800** |  | 2025-12-25 | 2026-01-07 |  |  |  |  |  |  |  |  |  |  |  |  |  |  |  |
| A6440 |  | Cable Multiconductor de Cobre con Aislación de XLPE, 1x3C #12 AWG, Clase 1 kV | 3d | 2025-12-25 A | 2025-12-28 A | A6430 | 100% |  | 2025-12-21 | 2025-12-23 |  | SQM-INSTRUMENTACIÓN [54.8 h] | 54.8 | 54.8 | 5772-TK800 | m | 150 | 0 | 4.4.2.1 | 190 |
| A6450 |  | Cable de Instrumentación (Señales Análogas), 1x1 par #16 AWG Apantallado | 10d | 2025-12-28 A | 2026-01-07 A | A6440 | 100% |  | 2025-12-24 | 2026-01-02 |  | SQM-INSTRUMENTACIÓN [88.8 h] | 88.8 | 88.8 | 5772-TK800 | m | 300 | 0 | 4.4.2.2 | 370 |
|  | 3 | **MONTAJE Y CONEXIONADO DE EQUIPOS E INSTRUMENTOSTK-800** |  | 2025-12-04 | 2025-12-15 |  |  |  |  |  |  |  |  |  |  |  |  |  |  |  |
| A6460 |  | Instrumento TAG: PIT-1151 | 1d | 2025-12-04 A | 2025-12-15 A | A6450 | 100% |  | 2026-01-03 | 2026-01-03 |  | SQM-INSTRUMENTACIÓN [12 h] | 12 | 12 | 5772-TK800 | gl | 1 | 0 | 4.4.3.1 | 1 |
| A6470 |  | Instrumento TAG: FIT-1152 | 1d | 2025-12-05 A | 2025-12-15 A | A6460 | 100% |  | 2026-01-04 | 2026-01-04 |  | SQM-INSTRUMENTACIÓN [12 h] | 12 | 12 | 5772-TK800 | gl | 1 | 0 | 4.4.3.2 | 1 |
|  | 4 | **PRUEBAS DE FUNCIONAMIENTO Y PEM INST. TK-800** |  | 2025-12-15 | 2026-03-16 |  |  |  |  |  |  |  |  |  |  |  |  |  |  |  |
| A6480 |  | Pruebas de Operación y Puesta en Marcha de Instrumento TAG: PIT-1151 | 1d | 2025-12-15 A | 2026-03-16 | A6470 |  | 1d | 2026-01-05 | 2026-01-05 | 27d | SQM-INSTRUMENTACIÓN [12 h] | 12 | 1.2 | 5772-TK800 | gl | 1 | 0,9 | 4.4.4.1 | 1 |
| A6490 |  | Pruebas de Operación y Puesta en Marcha de Instrumento TAG: FIT-1152 | 1d | 2025-12-16 A | 2026-03-16 | A6480 SS, A6410 |  | 1d | 2026-01-06 | 2026-01-06 | 13d | SQM-INSTRUMENTACIÓN [12 h] | 12 | 1.2 | 5772-TK800 | gl | 1 | 0,9 | 4.4.4.2 | 1 |
|  | 3 | **ÁREA 5728 - SECTOR TK-3000** |  | 2025-11-15 | 2026-03-21 |  |  |  |  |  |  |  |  |  |  |  |  |  |  |  |
|  | 1 | **OBRAS CIVILES TK-3000** |  | 2025-12-17 | 2025-12-22 |  |  |  |  |  |  |  |  |  |  |  |  |  |  |  |
|  | 2 | **FABRICACIÓN Y MONTAJE DE ESTRUCTURA MONORRIEL TK-3000** |  | 2025-12-17 | 2025-12-22 |  |  |  |  |  |  |  |  |  |  |  |  |  |  |  |
| A6550 |  | Armadura de refuerzo A630-420H Fundaciones TK-3000 | 3d | 2025-12-17 A | 2025-12-20 A | A5960 | 100% |  | 2025-09-27 | 2025-09-29 |  | SQM-OOCC [10.19 h] | 10.19 | 10.19 | 5728-TK3000 | kg | 74 | 0 | 8.4.3.1 | 74 |
| A6540 |  | Hormigón G30 Pedestal PD-1 (TAG: 5728-BBA-6066 y TAG: 5728-BBA-6063) | 2d | 2025-12-20 A | 2025-12-22 A | A6550 | 100% |  | 2025-09-30 | 2025-10-01 |  | SQM-OOCC [9.63 h] | 9.63 | 9.63 | 5728-TK3000 | m3 | 0,86 | 0 | 8.4.2.1 | 0,86 |
|  | 2 | **OBRAS MECÁNICAS TK-3000** |  | 2025-11-15 | 2025-12-25 |  |  |  |  |  |  |  |  |  |  |  |  |  |  |  |
|  | 1 | **MONTAJE Y PRUEBAS DE EQUIPOS MECÁNICOS TK-3000** |  | 2025-11-15 | 2025-12-25 |  |  |  |  |  |  |  |  |  |  |  |  |  |  |  |
| A6580 |  | Bomba Centrífuga y Motor TAG: 5728-BBA-6063; 5728-MTR-6064 | 4d | 2025-11-15 A | 2025-12-25 A | A8370 | 100% |  | 2026-02-07 | 2026-02-10 |  | SQM-MECANICA [139.9 h] | 139.9 | 139.9 | 5728-TK3000 | un | 1 | 0 | 3.1.1.1 | 1 |
| A6590 |  | Bomba Centrífuga y Motor TAG: 5728-BBA-6066; 5728-MTR-6067 | 4d | 2025-11-19 A | 2025-12-25 A | A6580 SS | 100% |  | 2026-02-07 | 2026-02-10 |  | SQM-MECANICA [139.9 h] | 139.9 | 139.9 | 5728-TK3000 | un | 1 | 0 | 3.1.1.2 | 1 |

| ID | WBS | Activity | Duration | Start | Finish | Predecessors | Complete | Remaining | Planned start | Planned finish | Total float | Resources | Cost | Actual cost | Área | Unidad | Cantidad | Remanente | Impacto | Ítem EDP | Forecast | Corregir |
| --- | --- | --- | --- | --- | --- | --- | --- | --- | --- | --- | --- | --- | --- | --- | --- | --- | --- | --- | --- | --- | --- | --- |
|  | 4 | **OBRAS PIPING TK-3000** |  | 2025-11-19 | 2026-03-21 |  |  |  |  |  |  |  |  |  |  |  |  |  |  |  |  |  |
|  | 1 | **FABRICACIÓN Y MONTAJE DE CAÑERÍAS ÁREA TK-3000** |  | 2025-11-19 | 2026-01-29 |  |  |  |  |  |  |  |  |  |  |  |  |  |  |  |  |  |
| A6610 |  | Ø 6" - Cañería Acero Inoxidable - Fabricación | 30d | 2025-11-19 A | 2025-12-22 A | A6550 SS+4d, A4380 | 100% |  | 2025-12-19 | 2026-01-17 |  | SQM-PIPING [5616 h] | 5,616 | 5,616 | 5728-TK3000 | un | 432 | 0 | LDO N°1-12; SDC N°26 | 3.2.1.7 | 706 |  |
| A6660 |  | Ø 6" - Cañería Acero Inoxidable - Montaje | 30d | 2025-11-21 A | 2025-12-23 A | A6610 SS+4d, A6700 SS, A6710 SS, A4490 SS | 100% |  | 2025-12-23 | 2026-01-21 |  | SQM-PIPING [3765.89 h] | 3,765.89 | 3,765.89 | 5728-TK3000 | m | 1429 | 0 | LDO N°1-12; SDC N°26 | 3.2.1.12 | 1428 | R FF |
| A6640 |  | Ø 2" - Cañería Acero Inoxidable - Fabricación | 14d | 2025-12-15 A | 2025-12-28 A | A6630 | 100% |  | 2026-01-22 | 2026-02-04 |  | SQM-PIPING [1059.22 h] | 1,059.22 | 1,059.22 | 5728-TK3000 | un | 258 | 4,89999999999999 |  | 3.2.1.25 | 258 |  |
| A6620 |  | Ø 4" - Cañería Acero Inoxidable - Fabricación | 4d | 2025-12-22 A | 2025-12-26 A | A6610 | 100% |  | 2026-01-18 | 2026-01-21 |  | SQM-PIPING [45.6 h] | 45.6 | 45.6 | 5728-TK3000 | un | 6 | 0 |  | 3.2.1.14 | 8 |  |
| A6630 |  | Ø 3" - Cañería Acero Inoxidable - Fabricación | 3d | 2025-12-23 A | 2025-12-26 A | A6620 FF | 100% |  | 2026-01-19 | 2026-01-21 |  | SQM-PIPING [22.4 h] | 22.4 | 22.4 | 5728-TK3000 | un | 4 | 0 |  | 3.2.1.19 | 4 |  |
| A6650 |  | Ø 1" - Cañería Acero Inoxidable - Fabricación | 3d | 2025-12-26 A | 2025-12-28 A | A6640 FF, A4000 | 100% |  | 2026-02-02 | 2026-02-04 |  | SQM-PIPING [8 h] | 8 | 8 | 5728-TK3000 | un | 4 | 0 |  | 3.2.1.33 | 4 |  |
| A6670 |  | Ø 4" - Cañería Acero Inoxidable - Montaje | 2d | 2026-01-19 A | 2026-01-20 A | A6620 | 100% |  | 2026-01-22 | 2026-01-23 |  | SQM-PIPING [0.36 h] | 0.36 | 0.36 | 5728-TK3000 | m | 0,152475419 | 0 |  | 3.2.1.17 | 0,152475419 |  |
| A6680 |  | Ø 3" - Cañería Acero Inoxidable - Montaje | 3d | 2026-01-20 A | 2026-01-22 A | A6670 FF | 100% |  | 2026-01-21 | 2026-01-23 |  | SQM-PIPING [0.34 h] | 0.34 | 0.34 | 5728-TK3000 | m | 0,170091882 | 0 |  | 3.2.1.22 | 0,170091882 |  |
| A6690 |  | Ø 2" - Cañería Acero Inoxidable - Montaje | 13d | 2026-01-20 A | 2026-01-29 A | A6680, A6640 FF, A6640 | 100% |  | 2026-02-05 | 2026-02-17 |  | SQM-PIPING [362.92 h] | 362.92 | 362.92 | 5728-TK3000 | m | 130 | 7 |  | 3.2.1.32 | 98,025434821 |  |
|  | 2 | **MONTAJE DE VÁLVULAS Y FITTING SECTOR TK-3000** |  | 2025-12-15 | 2026-03-21 |  |  |  |  |  |  |  |  |  |  |  |  |  |  |  |  |  |
| A6700 |  | Fitting Sector TK-3000 (Global) | 72d | 2025-12-15 A | 2025-12-16 A | A6610 SS | 100% |  | 2025-12-19 | 2026-02-28 |  | SQM-PIPING [5983.57 h] | 5,983.57 | 5,983.57 | 5728-TK3000 | un | 418 | 0 |  | 99.9 | 464 |  |
| A6710 |  | Válvulas Sector TK-3000 (Global) | 72d | 2025-12-15 A | 2026-03-21 | A6610 SS | 92% | 5.5d | 2025-12-19 | 2026-02-28 | 22.5d | SQM-PIPING [607.5 h] | 607.5 | 475.5 | 5728-TK3000 | un | 63 | 1 |  | 99.18 | 61 |  |
|  | 3 | **TIE IN LÍNEAS ASOCIADAS A TK-3000** |  | 2026-01-25 | 2026-01-29 |  |  |  |  |  |  |  |  |  |  |  |  |  |  |  |  |  |
| A6720 |  | Perforación de Estanque Existente TK-001 para TIE-IN N°6451, 6452 y 6453. | 5d | 2026-01-25 A | 2026-01-29 A | A6690 FF | 100% |  | 2026-02-13 | 2026-02-17 |  | SQM-PIPING [50.67 h] | 50.67 | 50.67 | 5728-TK3000 | un | 1 | 0 |  | 3.2.1.1 | 1 |  |
| A6730 |  | TIE-IN N° 6451 - 5728-EST-001 FRP a Línea Proyectada 150-LC-5728-I1-6633-A | 1d | 2026-01-25 A | 2026-01-25 A | A6720 FF | 100% |  | 2026-02-17 | 2026-02-17 |  | SQM-PIPING [50.67 h] | 50.67 | 50.67 | 5728-TK3000 | un | 1 | 0 |  | 3.2.3.3 | 1 |  |
| A6740 |  | TIE-IN N° 6452 - 5728-EST-001 FRP a Línea Proyectada 150-LC-5728-I1-6605-A | 1d | 2026-01-25 A | 2026-01-25 A | A6730 FF | 100% |  | 2026-02-17 | 2026-02-17 |  | SQM-PIPING [50.67 h] | 50.67 | 50.67 | 5728-TK3000 | un | 1 | 0 |  | 3.2.3.2 | 1 |  |
| A6750 |  | TIE-IN N° 6453 - 5728-EST-001 FRP a Línea Proyectada 150-LC-5817-I1-6604-A | 1d | 2026-01-25 A | 2026-01-25 A | A6740 FF, A6650 | 100% |  | 2026-02-17 | 2026-02-17 |  | SQM-PIPING [50.67 h] | 50.67 | 50.67 | 5728-TK3000 | un | 1 | 0 |  | 3.2.3.1 | 1 |  |
|  | 4 | **AISLACIÓN LÍNEAS TK-3000** |  | 2025-12-15 | 2026-01-22 |  |  |  |  |  |  |  |  |  |  |  |  |  |  |  |  |  |
| A6760 |  | Ø 6" - Aislación de Lana Mineral de 1,5" de espesor | 30d | 2025-12-15 A | 2026-01-13 A | A6660 FF+8d, A6660 | 100% |  | 2026-01-22 | 2026-02-20 |  | SQM-PIPING [5940.48 h] | 5,940.48 | 5,940.48 | 5728-TK3000 | un | 1428 | 0 | LDO N°9 | 3.2.1.13 | 1428 | R FF |
| A6770 |  | Ø 4" - Aislación de Lana Mineral de 1,5" de espesor | 3d | 2026-01-19 A | 2026-01-21 A | A6670, A6760 | 100% |  | 2026-02-21 | 2026-02-23 |  | SQM-PIPING [0.73 h] | 0.73 | 0.73 | 5728-TK3000 | un | 0,152475419 | 0 |  | 3.2.1.18 | 0,152475419 |  |
| A6780 |  | Ø 3" - Aislación de Lana Mineral de 1,5" de espesor | 3d | 2026-01-20 A | 2026-01-22 A | A6680, A6770 | 100% |  | 2026-02-24 | 2026-02-26 |  | SQM-PIPING [0.54 h] | 0.54 | 0.54 | 5728-TK3000 | un | 0,170091882 | 0,170091882 |  | 3.2.1.23 | 0,170091882 |  |
|  | 6 | **FABRICACIÓN Y MONTAJE DE SOPORTES TK-3000** |  | 2026-01-16 | 2026-03-19 |  |  |  |  |  |  |  |  |  |  |  |  |  |  |  |  |  |
| A6820 |  | Soporte N°001 - Pedestal Tipo TEE, Acero Estructural para Tuberías Diámetros Pequeños | 6d | 2026-01-16 A | 2026-01-21 A | A6660 SS, A4630 SS | 100% |  | 2026-01-28 | 2026-02-02 |  | SQM-PIPING [12.75 h] | 12.75 | 12.75 | 5728-TK3000 | un | 3 | 0 |  | 3.2.4.6 | 3 |  |
| A6830 |  | Soporte N°002 - Pedestal con Repisa de Acero Estructural para Tuberías Diámetros Pequeños | 4d | 2026-01-22 A | 2026-01-25 A | A6820 SS | 100% |  | 2026-01-28 | 2026-01-31 |  | SQM-PIPING [8.5 h] | 8.5 | 8.5 | 5728-TK3000 | un | 2 | 0 |  | 3.2.4.5 | 2 |  |
| A6870 |  | Soporte Primario Tipo "U" (Para Uso General) | 6d | 2026-01-24 A | 2026-01-29 A | A6860 SS | 100% |  | 2026-01-28 | 2026-02-02 |  | SQM-PIPING [69.3 h] | 69.3 | 69.3 | 5728-TK3000 | un | 360 | 0 |  | 3.2.4.1 | 360 |  |
| A6840 |  | Soporte N°003 - Pedestal, Acero Estructural para Tuberías Diámetros Pequeños | 4d | 2026-01-26 A | 2026-01-29 A | A6830 SS | 100% |  | 2026-01-28 | 2026-01-31 |  | SQM-PIPING [4.25 h] | 4.25 | 4.25 | 5728-TK3000 | un | 1 | 0 |  | 3.2.4.4 | 1 |  |
| A6850 |  | Soporte N°004 - Pedestal y Voladizo Tipo Simple, Acero Estructural para Tuberías Diámetros Pequeños | 4d | 2026-01-26 A | 2026-01-29 A | A6840 SS | 100% |  | 2026-01-28 | 2026-01-31 |  | SQM-PIPING [4.25 h] | 4.25 | 4.25 | 5728-TK3000 | un | 1 | 0 |  | 3.2.4.3 | 1 |  |
| A6860 |  | Soporte N°005 - Arco Tipo Colgante, Acero Estructural para Tuberías Diámetros Pequeños | 4d | 2026-03-16 | 2026-03-19 | A6850 SS |  |  |  |  | 24d | SQM-PIPING |  |  | 5728-TK3000 | (NOTA 4) | 0 | 0 |  | 3.2.4.2 | 1 |  |

| ID | WBS | Activity | Duration | Start | Finish | Predecessors | Complete | Remaining | Planned start | Planned finish | Total float | Resources | Cost | Actual cost | Área | Unidad | Cantidad | Remanente | Ítem EDP | Forecast | Corregir |
| --- | --- | --- | --- | --- | --- | --- | --- | --- | --- | --- | --- | --- | --- | --- | --- | --- | --- | --- | --- | --- | --- |
|  | 5 | **OBRAS ELÉCTRICAS TK-3000** |  | 2025-11-23 | 2026-03-16 |  |  |  |  |  |  |  |  |  |  |  |  |  |  |  |  |
|  | 1 | **MONTAJE DE CANALIZACIÓN Y FERRETERÍA TK-3000** |  | 2025-11-23 | 2025-12-26 |  |  |  |  |  |  |  |  |  |  |  |  |  |  |  |  |
| A6880 |  | Canalización y Copla de Conduit de Acero Galvanizado 6"Ø, Conduit ANSI C80.1 | 4d | 2025-11-23 A | 2025-12-25 A | A6590, A6260 SS | 100% |  | 2026-02-11 | 2026-02-14 |  | SQM-ELÉCTRICO [40.11 h] | 40.11 | 40.11 | 5728-TK3000 | m | 10 | 0 | 3.3.1.2 | 10 |  |
| A6890 |  | Canalización y Copla de Conduit Flexible Metálico con Cubierta PVC 6" Ø Trabajo Pesado. | 2d | 2025-11-27 A | 2025-12-23 A | A6880 SS | 100% |  | 2026-02-11 | 2026-02-12 |  | SQM-ELÉCTRICO [6.72 h] | 6.72 | 6.72 | 5728-TK3000 | m | 2 | 0 | 3.3.1.3 | 4 |  |
| A6900 |  | Canalización y Copla de Conduit de Acero Galvanizado 1 Ø"Ø, Conduit ANSI C80.1 | 5d | 2025-11-29 A | 2025-12-26 A | A6890 | 100% |  | 2026-02-13 | 2026-02-17 |  | SQM-ELÉCTRICO [10.08 h] | 10.08 | 10.08 | 5728-TK3000 | m | 8 | 0 | 3.3.1.4 | 8 |  |
| A6910 |  | Canalización y Copla de Conduit Flexible Metálico con Cubierta PVC 1 Ø" Ø Trabajo Pesado. | 2d | 2025-12-04 A | 2025-12-22 A | A6900 SS | 100% |  | 2026-02-13 | 2026-02-14 |  | SQM-ELÉCTRICO [2.52 h] | 2.52 | 2.52 | 5728-TK3000 | m | 2 | 0 | 3.3.1.1 | 2 |  |
|  | 2 | **TENDIDO Y CONEXIONADO DE CABLES DE ALIMENTACIÓN TK-3000** |  | 2025-12-01 | 2025-12-24 |  |  |  |  |  |  |  |  |  |  |  |  |  |  |  |  |
| A6930 |  | Cable Multiconductor de Cobre con Aislación de XLPE, 1x5C #12 AWG, Clase 1 kV | 5d | 2025-12-01 A | 2025-12-24 A | A6920 FF | 100% |  | 2026-02-23 | 2026-02-27 |  | SQM-ELÉCTRICO [226.32 h] | 226.32 | 226.32 | 5728-TK3000 | m | 460 | 0 | 3.3.1.5 | 580 |  |
| A6920 |  | Cable Monoconductor de Cobre con Aislación XLPE, 1C #350 MCM, Clase 1 kV | 15d | 2025-12-04 A | 2025-12-24 A | A6880 SS, A6910 SS | 100% |  | 2026-02-13 | 2026-02-27 |  | SQM-ELÉCTRICO [1791.04 h] | 1,791.04 | 1,791.04 | 5728-TK3000 | m | 2320 | 0 | 3.3.2.1 | 2320 |  |
|  | 3 | **MONTAJE Y CONEXIONADO DE EQUIPOS ELÉCTRICOS TK-3000** |  | 2025-12-01 | 2026-01-09 |  |  |  |  |  |  |  |  |  |  |  |  |  |  |  |  |
| A6940 |  | Variador de Frecuencia TAG: 5728-VSD-6065 en SEL-401. | 2d | 2025-12-01 A | 2025-12-25 A | A6920, A6930 | 100% |  | 2026-02-28 | 2026-03-01 |  | SQM-ELÉCTRICO [36 h] | 36 | 36 | 5728-TK3000 | gl | 1 | 0 | 3.3.3.8 | 1 |  |
| A6950 |  | Variador de Frecuencia TAG: 5728-VSD-6068 en SEL-401. | 2d | 2025-12-01 A | 2025-12-25 A | A6940 | 100% |  | 2026-03-02 | 2026-03-03 |  | SQM-ELÉCTRICO [36 h] | 36 | 36 | 5728-TK3000 | gl | 1 | 0 | 3.3.3.7 | 1 |  |
| A6960 |  | Modificación de Cubiculo Existente en TAG: 5770-CCM-431, para Suministro de Energía de TAG: 5728-VSD-6065. | 2d | 2025-12-01 A | 2025-12-02 A | A6950 | 100% |  | 2026-03-04 | 2026-03-05 |  | SQM-ELÉCTRICO [35 h] | 35 | 35 | 5728-TK3000 | gl | 1 | 0 | 3.3.3.6 | 1 |  |
| A6970 |  | Modificación de Cubiculo Existente en TAG: 5770-CCM-431, para Suministro de Energía de TAG: 5728-VSD-6068. | 2d | 2025-12-01 A | 2025-12-02 A | A6960 | 100% |  | 2026-03-06 | 2026-03-07 |  | SQM-ELÉCTRICO [35 h] | 35 | 35 | 5728-TK3000 | gl | 1 | 0 | 3.3.3.5 | 1 |  |
| A6980 |  | Conexión de entre CCM TAG: 5770-CCM-431 y VDF TAG: 5728-VSD-6065. | 1d | 2025-12-01 A | 2025-12-24 A | A6970 FF | 100% |  | 2026-03-07 | 2026-03-07 |  | SQM-ELÉCTRICO [4.13 h] | 4.13 | 4.13 | 5728-TK3000 | gl | 1 | 0 | 3.3.3.4 | 1 |  |
| A6990 |  | Conexión de entre CCM TAG: 5770-CCM-431 y VDF TAG: 5728-VSD-6068. | 1d | 2025-12-01 A | 2025-12-24 A | A6980 | 100% |  | 2026-03-08 | 2026-03-08 |  | SQM-ELÉCTRICO [4.13 h] | 4.13 | 4.13 | 5728-TK3000 | gl | 1 | 0 | 3.3.3.3 | 1 |  |
| A7000 |  | Conexión de entre VDF TAG: 5728-VSD-6065 y Motor TAG: 5728-MTR-6064. | 1d | 2026-01-07 A | 2026-01-08 A | A6990 | 100% |  | 2026-03-09 | 2026-03-09 |  | SQM-ELÉCTRICO [4.13 h] | 4.13 | 4.13 | 5728-TK3000 | gl | 1 | 0 | 3.3.3.2 | 1 |  |
| A7010 |  | Conexión de entre VDF TAG: 5728-VSD-6068 y Motor TAG: 5728-MTR-6067. | 1d | 2026-01-08 A | 2026-01-09 A | A7000 | 100% |  | 2026-03-10 | 2026-03-10 |  | SQM-ELÉCTRICO [4.13 h] | 4.13 | 4.13 | 5728-TK3000 | gl | 1 | 0 | 3.3.3.1 | 1 |  |
|  | 4 | **PRUEBAS DE FUNCIONAMIENTO Y PEM TK-3000** |  | 2026-01-09 | 2026-03-16 |  |  |  |  |  |  |  |  |  |  |  |  |  |  |  |  |
| A7020 |  | Pruebas de Funcionamiento y Puesta en Marcha de Motor TAG: 5728-MTR-6065. | 2d | 2026-01-09 A | 2026-03-16 | A7010, A6690 | 78% | 0.45d | 2026-03-11 | 2026-03-12 | 27.55d | SQM-ELÉCTRICO [12 h] | 12 | 1.2 | 5728-TK3000 | gl | 1 | 0,9 | 3.3.4.2 | 1 |  |
| A7030 |  | Pruebas de Funcionamiento y Puesta en Marcha de Motor TAG: 5728-MTR-6067. | 2d | 2026-01-11 A | 2026-03-16 | A7020 SS | 78% | 0.45d | 2026-03-13 | 2026-03-14 | 27.55d | SQM-ELÉCTRICO [12 h] | 12 | 1.2 | 5728-TK3000 | gl | 1 | 0,9 | 3.3.4.1 | 1 |  |
|  | 6 | **OBRAS DE INSTRUMENTACIÓN TK-3000** |  | 2025-12-01 | 2026-03-16 |  |  |  |  |  |  |  |  |  |  |  |  |  |  |  |  |
|  | 1 | **MONTAJE DE CANALIZACIÓN Y FERRETERÍA INST. TK-3000** |  | 2025-12-04 | 2026-01-07 |  |  |  |  |  |  |  |  |  |  |  |  |  |  |  |  |
| A7040 |  | EPC y Copla Porta Conductores 600x100mm e:2,5 mm, tiras 3m. Incluir tapa dos aguas, eclisas y pernos de Unión. | 3d | 2025-12-04 A | 2025-12-24 A | A6910 SS | 100% |  | 2026-02-13 | 2026-02-15 |  | SQM-INSTRUMENTACIÓN [140 h] | 140 | 140 | 5728-TK3000 | m | 25 | 0 | 3.4.1.2 | 25 |  |
| A7050 |  | EPC Curva Tipo "T", 600x100x2,5mm. Incluir tapa dos aguas, eclisas y pernos de Unión. | 3d | 2025-12-04 A | 2025-12-24 A | A7040 FF | 100% |  | 2026-02-13 | 2026-02-15 |  | SQM-INSTRUMENTACIÓN [5.6 h] | 5.6 | 5.6 | 5728-TK3000 | un | 1 | 0 | 3.4.1.1 | 1 | R FF |
| A7060 |  | Canalización y Copla de Conduit de Acero Galvanizado 1"Ø, Conduit ANSI C80.1 | 12d | 2025-12-22 A | 2026-01-03 A | A7050 SS | 100% |  | 2026-02-13 | 2026-02-24 |  | SQM-INSTRUMENTACIÓN [368.55 h] | 368.55 | 368.55 | 5728-TK3000 | m | 292,5 | 0 | 3.4.1.4 | 720 |  |
| A7070 |  | Canalización y Copla de Conduit Flexible Metálico con Cubierta PVC 1" Ø Trabajo Pesado | 4d | 2026-01-03 A | 2026-01-07 A | A7060 | 100% |  | 2026-02-25 | 2026-02-28 |  | SQM-INSTRUMENTACIÓN [44.35 h] | 44.35 | 44.35 | 5728-TK3000 | m | 35,2 | 0 | 3.4.1.3 | 35,2 |  |

| ID | WBS | Activity | Duration | Start | Finish | Predecessors | Complete | Remaining | Planned start | Planned finish | Total float | Resources | Cost | Actual cost | Área | Unidad | Cantidad | Remanente | Ítem EDP | Forecast |
| --- | --- | --- | --- | --- | --- | --- | --- | --- | --- | --- | --- | --- | --- | --- | --- | --- | --- | --- | --- | --- |
|  | 2 | **TENDIDO Y CONEXIONADO DE CABLES INSTRUMENTACIÓN TK-3000** |  | 2025-12-01 | 2026-03-16 |  |  |  |  |  |  |  |  |  |  |  |  |  |  |  |
| A7100 |  | Cable Multiconductor de Cobre Blando 1x3C #12 AWG, Clase 0,3 | 14d | 2025-12-01 A | 2026-03-16 | A7090 | 97% | 0.48d | 2026-02-21 | 2026-03-06 | 27.52d | SQM-INSTRUMENTACIÓN [617.41 h] | 617.41 | 589.01 | 5728-TK3000 | m | 1690 | 78 | 3.4.2.3 | 1690 |
| A7090 |  | Cable de Instrumentación (Señales Análogas), 1x1 par #16 AWG Apantallado | 8d | 2025-12-04 A | 2025-12-27 A | A7080 SS | 100% |  | 2026-02-13 | 2026-02-20 |  | SQM-INSTRUMENTACIÓN [153.92 h] | 153.92 | 153.92 | 5728-TK3000 | m | 520 | 0 | 3.4.2.4 | 531 |
| A7080 |  | Cable Multiconductor de Cobre con Aislación de XLPE, 1x3C #12 AWG, Clase 1 kV | 5d | 2025-12-22 A | 2025-12-27 A | A7060 SS | 100% |  | 2026-02-13 | 2026-02-17 |  | SQM-INSTRUMENTACIÓN [94.99 h] | 94.99 | 94.99 | 5728-TK3000 | m | 260 | 0 | 3.4.2.1 | 330 |
| A7110 |  | Cable Multiconductor de Cobre Blando 1x5C #12 AWG, Clase 0,3 | 14d | 2025-12-23 A | 2026-03-16 | A7100 SS | 97% | 0.36d | 2026-02-21 | 2026-03-06 | 27.64d | SQM-INSTRUMENTACIÓN [617.41 h] | 617.41 | 596.04 | 5728-TK3000 | m | 1690 | 58,5 | 3.4.2.2 | 1690 |
|  | 3 | **MONTAJE Y CONEXIONADO DE EQUIPOS E INSTRUMENTOSTK-3000** |  | 2025-12-01 | 2026-03-16 |  |  |  |  |  |  |  |  |  |  |  |  |  |  |  |
| A7120 |  | Instrumento TAG: PIT-6204 | 2d | 2025-12-01 A | 2026-01-06 A | A6660, A7110 | 100% |  | 2026-03-07 | 2026-03-08 |  | SQM-INSTRUMENTACIÓN [12 h] | 12 | 12 | 5728-TK3000 | gl | 1 | 0 | 3.4.3.17 | 1 |
| A7130 |  | Instrumento TAG: PIT-6214 | 2d | 2025-12-01 A | 2026-01-06 A | A7120 SS | 100% |  | 2026-03-07 | 2026-03-08 |  | SQM-INSTRUMENTACIÓN [12 h] | 12 | 12 | 5728-TK3000 | gl | 1 | 0 | 3.4.3.16 | 1 |
| A7140 |  | Instrumento TAG: UIT-6218 | 2d | 2026-01-04 A | 2026-01-06 A | A7130 SS | 100% |  | 2026-03-07 | 2026-03-08 |  | SQM-INSTRUMENTACIÓN [12 h] | 12 | 12 | 5728-TK3000 | gl | 1 | 0 | 3.4.3.15 | 1 |
| A7150 |  | Instrumento TAG: UIT-6220 | 2d | 2026-01-04 A | 2026-01-06 A | A7140 SS | 100% |  | 2026-03-07 | 2026-03-08 |  | SQM-INSTRUMENTACIÓN [12 h] | 12 | 12 | 5728-TK3000 | gl | 1 | 0 | 3.4.3.14 | 1 |
| A7160 |  | Instrumento TAG: XV-1153 | 2d | 2026-01-04 A | 2026-03-16 | A7150 SS | 59% | 0.82d | 2026-03-07 | 2026-03-08 | 27.18d | SQM-INSTRUMENTACIÓN [21.75 h] | 21.75 | 2.18 | 5728-TK3000 | gl | 1 | 0,9 | 3.4.3.13 | 1 |
| A7170 |  | Instrumento TAG: XV-1154 | 2d | 2026-01-06 A | 2026-03-16 | A7160 SS | 59% | 0.82d | 2026-03-09 | 2026-03-10 | 27.18d | SQM-INSTRUMENTACIÓN [21.75 h] | 21.75 | 2.18 | 5728-TK3000 | gl | 1 | 0,9 | 3.4.3.12 | 1 |
| A7180 |  | Instrumento TAG: XV-1155 | 2d | 2026-01-06 A | 2026-03-16 | A7170 SS | 59% | 0.82d | 2026-03-09 | 2026-03-10 | 27.18d | SQM-INSTRUMENTACIÓN [21.75 h] | 21.75 | 2.18 | 5728-TK3000 | gl | 1 | 0,9 | 3.4.3.11 | 1 |
| A7190 |  | Instrumento TAG: XV-1156 | 2d | 2026-01-06 A | 2026-03-16 | A7180 SS | 59% | 0.82d | 2026-03-09 | 2026-03-10 | 27.18d | SQM-INSTRUMENTACIÓN [21.75 h] | 21.75 | 2.18 | 5728-TK3000 | gl | 1 | 0,9 | 3.4.3.10 | 1 |
| A7200 |  | Instrumento TAG: XV-1157 | 2d | 2026-01-06 A | 2026-03-16 | A7190 SS | 98% | 0.05d | 2026-03-09 | 2026-03-10 | 27.95d | SQM-INSTRUMENTACIÓN [21.75 h] | 21.75 | 20.66 | 5728-TK3000 | gl | 1 | 0,0499999999999999 | 3.4.3.9 | 1 |
| A7210 |  | Instrumento TAG: XV-6201 | 2d | 2026-01-06 A | 2026-03-16 | A7200 SS | 59% | 0.82d | 2026-03-09 | 2026-03-10 | 27.18d | SQM-INSTRUMENTACIÓN [21.75 h] | 21.75 | 2.18 | 5728-TK3000 | gl | 1 | 0,9 | 3.4.3.8 | 1 |
| A7220 |  | Instrumento TAG: XV-6204 | 2d | 2026-01-08 A | 2026-01-10 A | A7210 | 100% |  | 2026-03-11 | 2026-03-12 |  | SQM-INSTRUMENTACIÓN [21.75 h] | 21.75 | 21.75 | 5728-TK3000 | gl | 1 | 0 | 3.4.3.7 | 1 |
| A7230 |  | Instrumento TAG: XV-6205 | 2d | 2026-01-08 A | 2026-01-10 A | A7220 SS | 100% |  | 2026-03-11 | 2026-03-12 |  | SQM-INSTRUMENTACIÓN [21.75 h] | 21.75 | 21.75 | 5728-TK3000 | gl | 1 | 0 | 3.4.3.6 | 1 |
| A7240 |  | Instrumento TAG: XV-6210 | 2d | 2026-01-08 A | 2026-01-10 A | A7230 SS | 100% |  | 2026-03-11 | 2026-03-12 |  | SQM-INSTRUMENTACIÓN [21.75 h] | 21.75 | 21.75 | 5728-TK3000 | gl | 1 | 0 | 3.4.3.5 | 1 |
| A7250 |  | Instrumento TAG: XV-6211 | 2d | 2026-01-08 A | 2026-01-10 A | A7240 SS | 100% |  | 2026-03-11 | 2026-03-12 |  | SQM-INSTRUMENTACIÓN [21.75 h] | 21.75 | 21.75 | 5728-TK3000 | gl | 1 | 0 | 3.4.3.4 | 1 |
| A7260 |  | Instrumento TAG: XV-6214 | 2d | 2026-01-08 A | 2026-01-10 A | A7250 SS | 100% |  | 2026-03-11 | 2026-03-12 |  | SQM-INSTRUMENTACIÓN [21.75 h] | 21.75 | 21.75 | 5728-TK3000 | gl | 1 | 0 | 3.4.3.3 | 1 |
| A7270 |  | Instrumento TAG: XV-6215 | 2d | 2026-01-10 A | 2026-01-12 A | A7260 | 100% |  | 2026-03-13 | 2026-03-14 |  | SQM-INSTRUMENTACIÓN [21.75 h] | 21.75 | 21.75 | 5728-TK3000 | gl | 1 | 0 | 3.4.3.2 | 1 |
| A7280 |  | Instrumento TAG: XV-6221 | 2d | 2026-01-10 A | 2026-03-16 | A7270 SS | 59% | 0.82d | 2026-03-13 | 2026-03-14 | 27.18d | SQM-INSTRUMENTACIÓN [21.75 h] | 21.75 | 2.18 | 5728-TK3000 | gl | 1 | 0,9 | 3.4.3.1 | 1 |
|  | 4 | **PRUEBAS DE FUNCIONAMIENTO Y PEM INST. TK-3000** |  | 2026-01-08 | 2026-03-16 |  |  |  |  |  |  |  |  |  |  |  |  |  |  |  |
| A7290 |  | Pruebas de Operación y Puesta en Marcha de Instrumento TAG: PIT-6204 | 2d | 2026-01-08 A | 2026-03-16 | A7210 SS | 86% | 0.27d | 2026-03-11 | 2026-03-12 | 27.72d | SQM-INSTRUMENTACIÓN [12 h] | 12 | 5.4 | 5728-TK3000 | gl | 1 | 0,55 | 3.4.4.16 | 1 |
| A7300 |  | Pruebas de Operación y Puesta en Marcha de Instrumento TAG: PIT-6214 | 2d | 2026-01-08 A | 2026-03-16 | A7290 SS | 86% | 0.27d | 2026-03-11 | 2026-03-12 | 27.72d | SQM-INSTRUMENTACIÓN [12 h] | 12 | 5.4 | 5728-TK3000 | gl | 1 | 0,55 | 3.4.4.15 | 1 |
| A7310 |  | Pruebas de Operación y Puesta en Marcha de Instrumento TAG: UIT-6218 | 2d | 2026-01-08 A | 2026-03-16 | A7300 SS | 86% | 0.27d | 2026-03-11 | 2026-03-12 | 27.72d | SQM-INSTRUMENTACIÓN [12 h] | 12 | 5.4 | 5728-TK3000 | gl | 1 | 0,55 | 3.4.4.14 | 1 |
| A7320 |  | Pruebas de Operación y Puesta en Marcha de Instrumento TAG: UIT-6220 | 2d | 2026-01-08 A | 2026-03-16 | A7310 SS | 86% | 0.27d | 2026-03-11 | 2026-03-12 | 27.72d | SQM-INSTRUMENTACIÓN [12 h] | 12 | 5.4 | 5728-TK3000 | gl | 1 | 0,55 | 3.4.4.13 | 1 |
| A7330 |  | Pruebas de Operación y Puesta en Marcha de Instrumento TAG: XV-1153 | 2d | 2026-01-08 A | 2026-03-16 | A7320 SS | 86% | 0.27d | 2026-03-11 | 2026-03-12 | 27.72d | SQM-INSTRUMENTACIÓN [12 h] | 12 | 5.4 | 5728-TK3000 | gl | 1 | 0,55 | 3.4.4.12 | 1 |
| A7340 |  | Pruebas de Operación y Puesta en Marcha de Instrumento TAG: XV-1154 | 2d | 2026-01-10 A | 2026-03-16 | A7260, A7330 SS | 86% | 0.27d | 2026-03-13 | 2026-03-14 | 27.72d | SQM-INSTRUMENTACIÓN [12 h] | 12 | 5.4 | 5728-TK3000 | gl | 1 | 0,55 | 3.4.4.11 | 1 |
| A7350 |  | Pruebas de Operación y Puesta en Marcha de Instrumento TAG: XV-1155 | 2d | 2026-01-10 A | 2026-03-16 | A7340 SS | 86% | 0.27d | 2026-03-13 | 2026-03-14 | 27.72d | SQM-INSTRUMENTACIÓN [12 h] | 12 | 5.4 | 5728-TK3000 | gl | 1 | 0,55 | 3.4.4.10 | 1 |
| A7360 |  | Pruebas de Operación y Puesta en Marcha de Instrumento TAG: XV-1156 | 2d | 2026-01-10 A | 2026-03-16 | A7350 SS | 86% | 0.27d | 2026-03-13 | 2026-03-14 | 27.72d | SQM-INSTRUMENTACIÓN [12 h] | 12 | 5.4 | 5728-TK3000 | gl | 1 | 0,55 | 3.4.4.9 | 1 |
| A7370 |  | Pruebas de Operación y Puesta en Marcha de Instrumento TAG: XV-1157 | 2d | 2026-01-10 A | 2026-03-16 | A7360 SS | 86% | 0.27d | 2026-03-13 | 2026-03-14 | 27.72d | SQM-INSTRUMENTACIÓN [12 h] | 12 | 5.4 | 5728-TK3000 | gl | 1 | 0,55 | 3.4.4.8 | 1 |
| A7380 |  | Pruebas de Operación y Puesta en Marcha de Instrumento TAG: XV-6201 | 2d | 2026-01-10 A | 2026-03-16 | A7370 SS | 86% | 0.27d | 2026-03-13 | 2026-03-14 | 27.72d | SQM-INSTRUMENTACIÓN [12 h] | 12 | 5.4 | 5728-TK3000 | gl | 1 | 0,55 | 3.4.4.7 | 1 |
| A7390 |  | Pruebas de Operación y Puesta en Marcha de Instrumento TAG: XV-6204 | 2d | 2026-01-13 A | 2026-03-16 | A7280 SS, A7380 SS, A7030 SS | 86% | 0.27d | 2026-03-15 | 2026-03-16 | 27.72d | SQM-INSTRUMENTACIÓN [12 h] | 12 | 5.4 | 5728-TK3000 | gl | 1 | 0,55 | 3.4.4.6 | 1 |
| A7400 |  | Pruebas de Operación y Puesta en Marcha de Instrumento TAG: XV-6205 | 2d | 2026-01-13 A | 2026-03-16 | A7390 SS | 86% | 0.27d | 2026-03-15 | 2026-03-16 | 27.72d | SQM-INSTRUMENTACIÓN [12 h] | 12 | 5.4 | 5728-TK3000 | gl | 1 | 0,55 | 3.4.4.5 | 1 |
| A7410 |  | Pruebas de Operación y Puesta en Marcha de Instrumento TAG: XV-6210 | 2d | 2026-01-13 A | 2026-03-16 | A7400 SS | 86% | 0.27d | 2026-03-15 | 2026-03-16 | 27.72d | SQM-INSTRUMENTACIÓN [12 h] | 12 | 5.4 | 5728-TK3000 | gl | 1 | 0,55 | 3.4.4.4 | 1 |
| A7420 |  | Pruebas de Operación y Puesta en Marcha de Instrumento TAG: XV-6211 | 2d | 2026-01-13 A | 2026-03-16 | A7410 SS | 86% | 0.27d | 2026-03-15 | 2026-03-16 | 27.72d | SQM-INSTRUMENTACIÓN [12 h] | 12 | 5.4 | 5728-TK3000 | gl | 1 | 0,55 | 3.4.4.3 | 1 |
| A7430 |  | Pruebas de Operación y Puesta en Marcha de Instrumento TAG: XV-6214 | 2d | 2026-01-13 A | 2026-03-16 | A7420 SS | 86% | 0.27d | 2026-03-15 | 2026-03-16 | 27.72d | SQM-INSTRUMENTACIÓN [12 h] | 12 | 5.4 | 5728-TK3000 | gl | 1 | 0,55 | 3.4.4.2 | 1 |
| A7440 |  | Pruebas de Operación y Puesta en Marcha de Instrumento TAG: XV-6215 | 2d | 2026-01-28 A | 2026-03-16 | A7430 SS | 50% | 1d | 2026-03-15 | 2026-03-16 | 13d | SQM-INSTRUMENTACIÓN [12 h] | 12 | 5.4 | 5728-TK3000 | gl | 1 | 0,55 | 3.4.4.1 | 1 |

| ID | WBS | Activity | Duration | Start | Finish | Predecessors | Complete | Remaining | Planned start | Planned finish | Total float | Free float | Resources | Cost | Actual cost | Área | Unidad | Cantidad | Remanente | Ítem EDP | Forecast | Corregir |
| --- | --- | --- | --- | --- | --- | --- | --- | --- | --- | --- | --- | --- | --- | --- | --- | --- | --- | --- | --- | --- | --- | --- |
|  | 4 | **ÁREA 5827 - SECTOR ESTANQUES L5 LiOH (TK-6100)** |  | 2025-12-01 | 2026-03-29 |  |  |  |  |  |  |  |  |  |  |  |  |  |  |  |  |  |
|  | 1 | **OBRAS PIPING SECTOR ESTANQUES L5 LiOH (TK-6100)** |  | 2025-12-15 | 2026-03-29 |  |  |  |  |  |  |  |  |  |  |  |  |  |  |  |  |  |
|  | 1 | **FABRICACIÓN Y MONTAJE DE CAÑERÍAS ÁREA ESTANQUES L5 LiOH (TK-6100)** |  | 2025-12-15 | 2026-03-28 |  |  |  |  |  |  |  |  |  |  |  |  |  |  |  |  |  |
| A7450 |  | Ø 6" - Cañería Acero Inoxidable - Fabricación | 34d | 2025-12-15 A | 2026-03-26 | A6610 | 70% | 10.07d | 2026-01-18 | 2026-02-20 | -2.81d | 0d | SQM-PIPING [1755 h] | 1,755 | 1,053 | 5827-L5 LiOH | un | 135 | 109 | 6.1.1.3 | 190 |  |
| A7500 |  | Ø 6" - Cañería Acero Inoxidable - Montaje | 30d | 2025-12-17 A | 2026-03-23 | A7450 SS+2d, A7450 SS | 76% | 7.35d | 2026-02-21 | 2026-03-22 | 4.65d | 0d | SQM-PIPING [903.92 h] | 903.92 | 605.07 | 5827-L5 LiOH | m | 343 | 120,4 | 6.1.1.8 | 468,9 | R FF |
| A7470 |  | Ø 3" - Cañería Acero Inoxidable - Fabricación | 28d | 2025-12-26 A | 2026-03-20 | A7450 SS+5d | 82% | 5d | 2026-01-23 | 2026-02-19 | 7d | 5.46d | SQM-PIPING [1635.2 h] | 1,635.2 | 131.04 | 5827-L5 LiOH | un | 292 | 268,6 | 6.1.1.18 | 292 |  |
| A7520 |  | Ø 3" - Cañería Acero Inoxidable - Montaje | 28d | 2025-12-28 A | 2026-03-28 | A7470 FF+2d | 55% | 12.46d | 2026-01-25 | 2026-02-21 | 1.54d |  | SQM-PIPING [345.72 h] | 345.72 | 46.63 | 5827-L5 LiOH | m | 172 | 148,8 | 6.1.1.29 | 147 | R FF |
| A7480 |  | Ø 2" - Cañería Acero Inoxidable - Fabricación | 14d | 2026-01-12 A | 2026-03-26 | A7460 FF | 48% | 7.26d | 2026-02-07 | 2026-02-20 | -2.81d | 0d | SQM-PIPING [258.65 h] | 258.65 | 77.59 | 5827-L5 LiOH | un | 63 | 44,1 | 6.1.1.31 | 63 |  |
| A7530 |  | Ø 2" - Cañería Acero Inoxidable - Montaje | 14d | 2026-01-12 A | 2026-03-26 | A7480 FF, A7480 SS | 82% | 2.45d | 2026-02-21 | 2026-03-06 | 3.93d | 0d | SQM-PIPING [75.38 h] | 75.38 | 16.47 | 5827-L5 LiOH | m | 27 | 21,1 | 6.1.1.34 | 27 |  |
| A7540 |  | Ø 3" - Cañería CPVC, SCH 80 - Montaje | 14d | 2026-01-12 A | 2026-03-23 | A7490 FF, A6750 | 75% | 3.47d | 2026-02-18 | 2026-03-03 | 0d |  | SQM-PIPING [92.4 h] | 92.4 | 9.24 | 5827-L5 LiOH | m | 44 | 39,6 | 6.1.1.28 | 68,4 |  |
| A7460 |  | Ø 4" - Cañería Acero Inoxidable - Fabricación | 10d | 2026-01-16 A | 2026-03-26 | A7450 FF | 52% | 4.84d | 2026-02-11 | 2026-02-20 | -2.81d | 0d | SQM-PIPING [197.6 h] | 197.6 | 68.4 | 5827-L5 LiOH | un | 26 | 47 | 6.1.1.11 | 56 |  |
| A7510 |  | Ø 4" - Cañería Acero Inoxidable - Montaje | 10d | 2026-01-16 A | 2026-03-26 | A7500 FF, A7460 FF, A7460 SS | 97% | 0.25d | 2026-03-13 | 2026-03-22 | 3.93d | 0d | SQM-PIPING [35.18 h] | 35.18 | 29.08 | 5827-L5 LiOH | m | 15 | 71,6 | 6.1.1.16 | 155 |  |
| A7490 |  | Ø 3" - Cañería CPVC, SCH 80 - Fabricación | 8d | 2026-03-16 | 2026-03-23 | A7480 SS |  |  |  |  | 0d |  | SQM-PIPING [407 h] | 407 |  | 5827-L5 LiOH | un | 148 | 148 | 6.1.1.19 | 148 |  |
|  | 2 | **MONTAJE DE VÁLVULAS Y FITTING SECTOR ESTANQUES L5 LiOH (TK-6100)** |  | 2025-12-15 | 2026-03-26 |  |  |  |  |  |  |  |  |  |  |  |  |  |  |  |  |  |
| A7550 |  | Fitting Sector L5 LiOH - TK-6100 (Global) | 64d | 2025-12-15 A | 2026-03-26 | A7450 SS, A7530 FF | 92% | 5d | 2026-01-18 | 2026-03-22 | 6.93d | 17.93d | SQM-PIPING [3375.27 h] | 3,375.27 | 504.02 | 5827-L5 LiOH | un | 395 | 449 | 99.10 | 431 | R FF |
| A7560 |  | Válvulas Sector L5 LiOH - TK-6100 (Global) | 2d | 2026-03-24 | 2026-03-26 | A7450 SS, A7530 FF, A7550 SS |  |  |  |  | 3.93d | 0d | SQM-PIPING [290.25 h] | 290.25 |  | 5827-L5 LiOH | un | 28 | 19 | 99.19 | 28 | R FF |
|  | 3 | **TIE IN LÍNEAS ASOCIADAS A ESTANQUES L5 LiOH (TK-6100)** |  | 2026-03-24 | 2026-03-29 |  |  |  |  |  |  |  |  |  |  |  |  |  |  |  |  |  |
| A7610 |  | TIE-IN N° 6456 - 5827-EST-6050 Ac. Inoc. a Línea Proyectada 80-DR-5827-P2-6625 | 2d | 2026-03-24 | 2026-03-25 | A7540 |  |  |  |  | 0d |  | SQM-PIPING [46.67 h] | 46.67 |  | 5827-L5 LiOH | un | 1 | 1 | 6.1.3.6 | 1 |  |
| A7620 |  | TIE-IN N° 6457 - 5827-EST-6050 Ac. Inox. a Línea Proyectada 80-DR-5827-P2-6622 | 2d | 2026-03-24 | 2026-03-25 | A7610 SS |  |  |  |  | 0d |  | SQM-PIPING [46.67 h] | 46.67 |  | 5827-L5 LiOH | un | 1 | 1 | 6.1.3.5 | 1 |  |
| A7570 |  | TIE-IN N° 6454 - 5827-EST-6100 Ac. Inox. a Línea Proyectada 100-LC-5827-I1-6615-A | 2d | 2026-03-24 | 2026-03-26 | A7530 FF, A7560 FF, A7500 |  |  |  |  | 3.93d | 0d | SQM-PIPING [50.67 h] | 50.67 |  | 5827-L5 LiOH | un | 1 | 1 | 6.1.3.8 | 1 |  |
| A7580 |  | TIE-IN N° 6455 - 5827-EST-6100 Ac. Inox. a Línea Proyectada 100-LC-5827-I1-6619-A | 2d | 2026-03-24 | 2026-03-26 | A7570 SS |  |  |  |  | 3.93d | 0d | SQM-PIPING [50.67 h] | 50.67 |  | 5827-L5 LiOH | un | 1 | 1 | 6.1.3.7 | 1 |  |
| A7590 |  | TIE-IN N° 6458 - 5827-EST-7100 Ac Inox. a Línea Proyectada 80-LC-5827-I1-6623-A | 2d | 2026-03-24 | 2026-03-26 | A7580 FF |  |  |  |  | 3.93d |  | SQM-PIPING [46.67 h] | 46.67 |  | 5827-L5 LiOH | un | 1 | 1 | 6.1.3.4 | 1 |  |
| A7630 |  | TIE-IN N° 6460 -5827-EST-7050 Ac. Inox. a Línea Proyectada 80-DR-5827-P2-6627 | 2d | 2026-03-26 | 2026-03-27 | A7620 |  |  |  |  | 0d |  | SQM-PIPING [46.67 h] | 46.67 |  | 5827-L5 LiOH | un | 1 | 1 | 6.1.3.2 | 1 |  |
| A7640 |  | TIE-IN N° 6461 - 5827-EST-7050 Ac. Inox. a Línea Proyectada 80-DR-5827-P2-6624 | 2d | 2026-03-26 | 2026-03-27 | A7630 SS |  |  |  |  | 0d |  | SQM-PIPING [46.67 h] | 46.67 |  | 5827-L5 LiOH | un | 1 | 1 | 6.1.3.1 | 1 |  |
| A7600 |  | TIE-IN N° 6459 - 5827-EST-7100 Ac. Inox. a Línea Proyectada 80-LC-5827-I1-6626-A | 2d | 2026-03-28 | 2026-03-29 | A7590 FF, A7640, A7520 FF |  |  |  |  | 0d |  | SQM-PIPING [46.67 h] | 46.67 |  | 5827-L5 LiOH | un | 1 | 1 | 6.1.3.3 | 1 |  |

| ID | WBS | Activity | Duration | Start | Finish | Predecessors | Complete | Remaining | Planned start | Planned finish | Total float | Free float | Resources | Cost | Actual cost | Área | Unidad | Cantidad | Corregir | Remanente | Ítem EDP | Forecast |
| --- | --- | --- | --- | --- | --- | --- | --- | --- | --- | --- | --- | --- | --- | --- | --- | --- | --- | --- | --- | --- | --- | --- |
|  | 4 | **AISLACIÓN LÍNEAS L5 LiOH (TK-6100)** |  | 2025-12-31 | 2026-03-29 |  |  |  |  |  |  |  |  |  |  |  |  |  |  |  |  |  |
| A7650 |  | Ø 6" - Aislación de Lana Mineral de 1,5" de espesor | 3d | 2025-12-31 A | 2026-03-23 | A7500 FF, A7500 SS |  | 3d | 2026-03-23 | 2026-03-25 | 6.65d | 2.73d | SQM-PIPING [1426.88 h] | 1,426.88 | 436.81 | 5827-L5 LiOH | un | 343 | R FF | 244,997 | 6.1.1.9 | 468,9 |
| A7670 |  | Ø 3" - Aislación de Lana Mineral de 1,5" de espesor | 7d | 2026-03-23 | 2026-03-29 | A7660 FF, A7530 FF, A7640 FF, A7520 FF, A7600 FF |  |  |  |  | 0d |  | SQM-PIPING [550.4 h] | 550.4 |  | 5827-L5 LiOH | un | 172 |  | 172 | 6.1.1.30 | 147 |
| A7660 |  | Ø 4" - Aislación de Lana Mineral de 1,5" de espesor | 3d | 2026-03-23 | 2026-03-26 | A7650 FF, A7510 FF |  |  |  |  | 3.93d |  | SQM-PIPING [72 h] | 72 |  | 5827-L5 LiOH | un | 15 |  | 84 | 6.1.1.17 | 14 |
|  | 2 | **OBRAS DE INSTRUMENTACIÓN SECTOR ESTANQUES L5 LiOH (TK-6100)** |  | 2025-12-01 | 2026-03-23 |  |  |  |  |  |  |  |  |  |  |  |  |  |  |  |  |  |
|  | 1 | **MONTAJE DE CANALIZACIÓN Y FERRETERÍA INST. ESTANQUES L5 LiOH (TK-6100)** |  | 2025-12-22 | 2026-03-16 |  |  |  |  |  |  |  |  |  |  |  |  |  |  |  |  |  |
| A7680 |  | Canalización y Copla de Conduit de Acero Galvanizado 1"Ø, Conduit ANSI C80.1 | 1d | 2025-12-22 A | 2026-03-16 | A6910 |  | 1d | 2026-02-15 | 2026-02-15 | 27d |  | SQM-INSTRUMENTACIÓN [333.9 h] | 333.9 | 33.39 | 5827-L5 LiOH | m | 265 |  | 238,5 | 6.2.1.2 | 1 |
| A7690 |  | Canalización y Copla de Conduit Flexible Metálico con Cubierta PVC 1" Ø Trabajo Pesado | 1d | 2025-12-23 A | 2026-03-16 | A7680 SS |  | 1d | 2026-02-15 | 2026-02-15 | 27d |  | SQM-INSTRUMENTACIÓN [70.56 h] | 70.56 | 7.06 | 5827-L5 LiOH | m | 56 |  | 50,4 | 6.2.1.1 | 1 |
|  | 2 | **TENDIDO Y CONEXIONADO DE CABLES INSTRUMENTACIÓN ESTANQUES L5 LiOH (TK-6100)** |  | 2025-12-01 | 2026-03-21 |  |  |  |  |  |  |  |  |  |  |  |  |  |  |  |  |  |
| A7710 |  | Cable de Instrumentación (Señales Análogas), 1x1 par #16 AWG Apantallado | 3d | 2025-12-01 A | 2026-03-18 | A7700 SS |  | 3d | 2026-02-15 | 2026-02-17 | 25d |  | SQM-INSTRUMENTACIÓN [346.32 h] | 346.32 | 17.09 | 5827-L5 LiOH | m | 1170 |  | 1036,75 | 6.2.2.3 | 1500 |
| A7720 |  | Cable Multiconductor de Cobre Blando 1x3C #12 AWG, Clase 0,3 | 5d | 2025-12-01 A | 2026-03-18 | A7710 SS | 43% | 2.85d | 2026-02-18 | 2026-02-22 | 25.15d |  | SQM-INSTRUMENTACIÓN [189.97 h] | 189.97 | 43.85 | 5827-L5 LiOH | m | 520 |  | 467,9875 | 6.2.2.4 | 650 |
| A7700 |  | Cable Multiconductor de Cobre con Aislación de XLPE, 1x3C #12 AWG, Clase 1 kV | 6d | 2025-12-05 A | 2026-03-21 | A7690 SS |  | 6d | 2026-02-15 | 2026-02-20 | 22d |  | SQM-INSTRUMENTACIÓN [94.99 h] | 94.99 | 9.5 | 5827-L5 LiOH | m | 260 |  | 234 | 6.2.2.1 | 350 |
| A7730 |  | Cable Multiconductor de Cobre Blando 1x5C #12 AWG, Clase 0,3 | 5d | 2025-12-23 A | 2026-03-20 | A7720 SS |  | 5d | 2026-02-18 | 2026-02-22 | 23d |  | SQM-INSTRUMENTACIÓN [427.44 h] | 427.44 | 42.74 | 5827-L5 LiOH | m | 1170 |  | 1053 | 6.2.2.2 | 1500 |
|  | 3 | **MONTAJE Y CONEXIONADO DE EQUIPOS E INSTRUMENTOS ESTANQUES L5 LiOH (TK-6100)** |  | 2025-12-20 | 2026-03-23 |  |  |  |  |  |  |  |  |  |  |  |  |  |  |  |  |  |
| A7740 |  | Módulos de Entradas y Salidas Análogas/Digitales en TAG: 5804-PNC-6402. | 8d | 2025-12-20 A | 2026-03-23 | A7730 SS |  | 8d | 2026-02-23 | 2026-03-02 | 20d |  | SQM-INSTRUMENTACIÓN [620.5 h] | 620.5 | 12.41 | 5827-L5 LiOH | un | 5 |  | 4,9 | 6.2.3.1 | 5 |
| A7750 |  | Módulos de Entradas y Salidas Análogas/Digitales en TAG: 5804-PNC-7502. | 8d | 2025-12-20 A | 2026-03-23 | A7740 SS |  | 8d | 2026-02-23 | 2026-03-02 | 20d |  | SQM-INSTRUMENTACIÓN [620.5 h] | 620.5 | 12.41 | 5827-L5 LiOH | un | 5 |  | 4,9 | 6.2.3.2 | 5 |
| A7760 |  | Brazo Prealambrado para Módulos de Entradas y Salidas Análogas/Digitales en TAG: 5804-PNC-6402. | 8d | 2025-12-20 A | 2026-03-23 | A7750 SS |  | 8d | 2026-02-23 | 2026-03-02 | 20d |  | SQM-INSTRUMENTACIÓN [620.5 h] | 620.5 | 12.41 | 5827-L5 LiOH | un | 5 |  | 4,9 | 6.2.3.3 | 5 |
| A7770 |  | Brazo Prealambrado para Módulos de Entradas y Salidas Análogas/Digitales en TAG: 5804-PNC-7502. | 8d | 2025-12-20 A | 2026-03-23 | A7760 SS |  | 8d | 2026-02-23 | 2026-03-02 | 20d | 0d | SQM-INSTRUMENTACIÓN [620.5 h] | 620.5 | 12.41 | 5827-L5 LiOH | un | 5 |  | 4,9 | 6.2.3.4 | 5 |
| A7780 |  | Instrumento TAG: FIT-6230 | 1d | 2025-12-27 A | 2026-03-23 | A7770 FF, A7280 SS |  | 1d | 2026-03-15 | 2026-03-15 | 20d |  | SQM-INSTRUMENTACIÓN [43.5 h] | 43.5 | 10.88 | 5827-L5 LiOH | gl | 2 |  | 1,5 | 6.2.3.30 | 1 |
| A7790 |  | Instrumento TAG: FIT-6240 | 1d | 2025-12-27 A | 2026-03-16 | A7780 SS |  | 1d | 2026-03-15 | 2026-03-15 | 27d |  | SQM-INSTRUMENTACIÓN [43.5 h] | 43.5 | 10.88 | 5827-L5 LiOH | gl | 2 |  | 1,5 | 6.2.3.29 | 1 |
| A7800 |  | Instrumento TAG: FIT-6268 | 1d | 2025-12-27 A | 2026-03-16 | A7790 SS |  | 1d | 2026-03-15 | 2026-03-15 | 27d |  | SQM-INSTRUMENTACIÓN [43.5 h] | 43.5 | 10.88 | 5827-L5 LiOH | gl | 2 |  | 1,5 | 6.2.3.28 | 1 |
| A7810 |  | Instrumento TAG: FIT-6670 | 1d | 2025-12-27 A | 2026-03-16 | A7800 SS |  | 1d | 2026-03-15 | 2026-03-15 | 27d |  | SQM-INSTRUMENTACIÓN [43.5 h] | 43.5 | 10.88 | 5827-L5 LiOH | gl | 2 |  | 1,5 | 6.2.3.27 | 1 |
| A7820 |  | Instrumento TAG: FV-6264 | 1d | 2025-12-27 A | 2026-03-16 | A7810 SS |  | 1d | 2026-03-15 | 2026-03-15 | 27d |  | SQM-INSTRUMENTACIÓN [21.75 h] | 21.75 | 5.44 | 5827-L5 LiOH | gl | 1 |  | 0,75 | 6.2.3.26 | 1 |
| A7830 |  | Instrumento TAG: FV-6265 | 1d | 2025-12-27 A | 2026-03-16 | A7820 SS |  | 1d | 2026-03-15 | 2026-03-15 | 27d |  | SQM-INSTRUMENTACIÓN [21.75 h] | 21.75 | 5.44 | 5827-L5 LiOH | gl | 1 |  | 0,75 | 6.2.3.24 | 1 |
| A7840 |  | Instrumento TAG: FV-6264 | 1d | 2025-12-27 A | 2026-03-16 | A7830 SS |  | 1d | 2026-03-15 | 2026-03-15 | 27d |  | SQM-INSTRUMENTACIÓN [21.75 h] | 21.75 | 5.44 | 5827-L5 LiOH | gl | 1 |  | 0,75 | 6.2.3.25 | 1 |
| A7850 |  | Instrumento TAG: FV-6265 | 1d | 2025-12-27 A | 2026-03-16 | A7840 SS |  | 1d | 2026-03-15 | 2026-03-15 | 27d |  | SQM-INSTRUMENTACIÓN [21.75 h] | 21.75 | 5.44 | 5827-L5 LiOH | gl | 1 |  | 0,75 | 6.2.3.23 | 1 |
| A7860 |  | Instrumento TAG: XV-6251 | 1d | 2025-12-28 A | 2026-03-16 | A7850 SS |  | 1d | 2026-03-16 | 2026-03-16 | 27d |  | SQM-INSTRUMENTACIÓN [21.75 h] | 21.75 | 4.35 | 5827-L5 LiOH | gl | 1 |  | 0,8 | 6.2.3.9 | 1 |
| A7880 |  | Instrumento TAG: XV-6232 | 1d | 2025-12-28 A | 2026-03-16 | A7870 SS |  | 1d | 2026-03-16 | 2026-03-16 | 27d |  | SQM-INSTRUMENTACIÓN [21.75 h] | 21.75 | 11.96 | 5827-L5 LiOH | gl | 1 |  | 0,45 | 6.2.3.19 | 1 |
| A7890 |  | Instrumento TAG: XV-6245 | 1d | 2025-12-28 A | 2026-03-16 | A7880 SS |  | 1d | 2026-03-16 | 2026-03-16 | 27d |  | SQM-INSTRUMENTACIÓN [21.75 h] | 21.75 | 19.58 | 5827-L5 LiOH | gl | 1 |  | 0,1 | 6.2.3.15 | 1 |
| A7900 |  | Instrumento TAG: XV-6246 | 1d | 2025-12-29 A | 2026-03-16 | A7890 SS |  | 1d | 2026-03-16 | 2026-03-16 | 27d |  | SQM-INSTRUMENTACIÓN [21.75 h] | 21.75 | 4.35 | 5827-L5 LiOH | gl | 1 |  | 0,8 | 6.2.3.14 | 1 |
| A7910 |  | Instrumento TAG: XV-6247 | 1d | 2025-12-29 A | 2026-03-16 | A7900 SS |  | 1d | 2026-03-16 | 2026-03-16 | 27d |  | SQM-INSTRUMENTACIÓN [21.75 h] | 21.75 | 4.35 | 5827-L5 LiOH | gl | 1 |  | 0,8 | 6.2.3.13 | 1 |
| A7920 |  | Instrumento TAG: XV-6252 | 1d | 2025-12-29 A | 2026-03-16 | A7910 SS |  | 1d | 2026-03-16 | 2026-03-16 | 27d |  | SQM-INSTRUMENTACIÓN [21.75 h] | 21.75 | 4.35 | 5827-L5 LiOH | gl | 1 |  | 0,8 | 6.2.3.8 | 1 |
| A7930 |  | Instrumento TAG: XV-6253 | 1d | 2025-12-29 A | 2026-03-16 | A7920 SS |  | 1d | 2026-03-16 | 2026-03-16 | 27d |  | SQM-INSTRUMENTACIÓN [21.75 h] | 21.75 | 4.35 | 5827-L5 LiOH | gl | 1 |  | 0,8 | 6.2.3.7 | 1 |
| A7940 |  | Instrumento TAG: XV-6258 | 1d | 2025-12-30 A | 2026-03-16 | A7930 SS |  | 1d | 2026-03-17 | 2026-03-17 | 27d |  | SQM-INSTRUMENTACIÓN [21.75 h] | 21.75 | 19.58 | 5827-L5 LiOH | gl | 1 |  | 0,1 | 6.2.3.5 | 1 |
| A7950 |  | Instrumento TAG: XV-6249 | 1d | 2025-12-30 A | 2026-03-16 | A7940 SS |  | 1d | 2026-03-17 | 2026-03-17 | 27d |  | SQM-INSTRUMENTACIÓN [21.75 h] | 21.75 | 4.35 | 5827-L5 LiOH | gl | 1 |  | 0,8 | 6.2.3.12 | 1 |
| A7960 |  | Instrumento TAG: XV-6229 | 1d | 2025-12-30 A | 2026-03-16 | A7950 SS |  | 1d | 2026-03-17 | 2026-03-17 | 27d |  | SQM-INSTRUMENTACIÓN [21.75 h] | 21.75 | 19.58 | 5827-L5 LiOH | gl | 1 |  | 0,1 | 6.2.3.22 | 1 |
| A7970 |  | Instrumento TAG: XV-6230 | 1d | 2025-12-30 A | 2026-03-16 | A7960 SS |  | 1d | 2026-03-17 | 2026-03-17 | 27d |  | SQM-INSTRUMENTACIÓN [21.75 h] | 21.75 | 6.53 | 5827-L5 LiOH | gl | 1 |  | 0,7 | 6.2.3.20 | 1 |
| A7980 |  | Instrumento TAG: XV-6240 | 1d | 2025-12-31 A | 2026-03-16 | A7970 SS |  | 1d | 2026-03-17 | 2026-03-17 | 27d |  | SQM-INSTRUMENTACIÓN [21.75 h] | 21.75 | 4.35 | 5827-L5 LiOH | gl | 1 |  | 0,8 | 6.2.3.18 | 1 |
| A7990 |  | Instrumento TAG: XV-6242 | 1d | 2025-12-31 A | 2026-03-16 | A7980 SS |  | 1d | 2026-03-17 | 2026-03-17 | 27d |  | SQM-INSTRUMENTACIÓN [21.75 h] | 21.75 | 4.35 | 5827-L5 LiOH | gl | 1 |  | 0,8 | 6.2.3.17 | 1 |
| A8000 |  | Instrumento TAG: XV-6245 | 1d | 2025-12-31 A | 2026-03-16 | A7990 SS |  | 1d | 2026-03-17 | 2026-03-17 | 27d |  | SQM-INSTRUMENTACIÓN [21.75 h] | 21.75 | 6.53 | 5827-L5 LiOH | gl | 1 |  | 0,7 | 6.2.3.16 | 1 |
| A8010 |  | Instrumento TAG: XV-6250 | 1d | 2025-12-31 A | 2026-03-16 | A8000 SS |  | 1d | 2026-03-17 | 2026-03-17 | 27d |  | SQM-INSTRUMENTACIÓN [21.75 h] | 21.75 | 19.58 | 5827-L5 LiOH | gl | 1 |  | 0,1 | 6.2.3.11 | 1 |
| A8020 |  | Instrumento TAG: XV-6251 | 1d | 2026-01-01 A | 2026-03-16 | A8010 SS |  | 1d | 2026-03-18 | 2026-03-18 | 8d | 0d | SQM-INSTRUMENTACIÓN [21.75 h] | 21.75 | 6.53 | 5827-L5 LiOH | gl | 1 |  | 0,7 | 6.2.3.10 | 1 |
| A7870 |  | Instrumento TAG: XV-6229 | 1d | 2026-03-16 | 2026-03-16 | A7860 SS |  |  |  |  | 27d |  | SQM-INSTRUMENTACIÓN |  |  |  | gl | 0 |  | 1 |  |  |
| A8030 |  | Instrumento TAG: XV-6258 | 1d | 2026-03-17 | 2026-03-17 | A8020 |  |  |  |  | 8d | 0d | SQM-INSTRUMENTACIÓN |  |  |  | gl | 0 |  | 1 |  |  |

| ID | WBS | Activity | Duration | Start | Finish | Predecessors | Total float | Free float | Resources | Cost | Área | Unidad | Cantidad | Remanente | Ítem EDP | Forecast |
| --- | --- | --- | --- | --- | --- | --- | --- | --- | --- | --- | --- | --- | --- | --- | --- | --- |
|  | 4 | **PRUEBAS DE FUNCIONAMIENTO Y PEM INST. ESTANQUES L5 LiOH (TK-6100)** |  | 2026-03-18 | 2026-03-21 |  |  |  |  |  |  |  |  |  |  |  |
| A8040 |  | Pruebas de Operación y PEM de Entradas y Salidas Análogas/Digitales en TAG: 5801-PNC-7502 | 1d | 2026-03-18 | 2026-03-18 | A8030 | 8d | 0d | SQM-INSTRUMENTACIÓN [60 h] | 60 | 5827-L5 LiOH | un | 5 | 5 | 6.2.4.28 | 5 |
| A8050 |  | Pruebas de Operación y PEM Módulos de Entradas y Salidas Análogas/Digitales en TAG: 5804-PNC-6402 | 1d | 2026-03-18 | 2026-03-18 | A8040 SS | 8d | 0d | SQM-INSTRUMENTACIÓN [60 h] | 60 | 5827-L5 LiOH | un | 5 | 5 | 6.2.4.1 | 5 |
| A8060 |  | Pruebas de Operación y PEM de Brazo Prealambrado Módulos de Entradas y Salidas Análogas/Digitales en TAG: 5804-PNC | 1d | 2026-03-18 | 2026-03-18 | A8050 SS | 8d | 0d | SQM-INSTRUMENTACIÓN [60 h] | 60 | 5827-L5 LiOH | un | 5 | 5 | 6.2.4.29 | 5 |
| A8070 |  | Pruebas de Operación y PEM de Brazo Prealambrado Módulos de Entradas y Salidas Análogas/Digitales en TAG: 5801-PNC | 1d | 2026-03-18 | 2026-03-18 | A8060 SS | 8d | 0d | SQM-INSTRUMENTACIÓN [60 h] | 60 | 5827-L5 LiOH | un | 5 | 5 | 6.2.4.30 | 5 |
| A8080 |  | Pruebas de Operación y Puesta en Marcha de Instrumento TAG: FIT-6230 | 1d | 2026-03-18 | 2026-03-18 | A8070 SS | 8d | 0d | SQM-INSTRUMENTACIÓN [12 h] | 12 | 5827-L5 LiOH | gl | 1 | 1 | 6.2.4.27 | 1 |
| A8090 |  | Pruebas de Operación y Puesta en Marcha de Instrumento TAG: FIT-6240 | 1d | 2026-03-18 | 2026-03-18 | A8080 SS | 8d | 0d | SQM-INSTRUMENTACIÓN [12 h] | 12 | 5827-L5 LiOH | gl | 1 | 1 | 6.2.4.26 | 1 |
| A8100 |  | Pruebas de Operación y Puesta en Marcha de Instrumento TAG: FIT-6268 | 1d | 2026-03-18 | 2026-03-18 | A8090 SS | 8d | 0d | SQM-INSTRUMENTACIÓN [12 h] | 12 | 5827-L5 LiOH | gl | 1 | 1 | 6.2.4.25 | 1 |
| A8110 |  | Pruebas de Operación y Puesta en Marcha de Instrumento TAG: FIT-6670 | 1d | 2026-03-19 | 2026-03-19 | A8100 | 8d | 0d | SQM-INSTRUMENTACIÓN [12 h] | 12 | 5827-L5 LiOH | gl | 1 | 1 | 6.2.4.24 | 1 |
| A8120 |  | Pruebas de Operación y Puesta en Marcha de Instrumento TAG: FV-6264 | 1d | 2026-03-19 | 2026-03-19 | A8110 SS | 8d | 0d | SQM-INSTRUMENTACIÓN [12 h] | 12 | 5827-L5 LiOH | gl | 1 | 1 | 6.2.4.23 | 1 |
| A8130 |  | Pruebas de Operación y Puesta en Marcha de Instrumento TAG: FV-6265 | 1d | 2026-03-19 | 2026-03-19 | A8120 SS | 8d | 0d | SQM-INSTRUMENTACIÓN [12 h] | 12 | 5827-L5 LiOH | gl | 1 | 1 | 6.2.4.21 | 1 |
| A8140 |  | Pruebas de Operación y Puesta en Marcha de Instrumento TAG: FV-6264 | 1d | 2026-03-19 | 2026-03-19 | A8130 SS | 8d | 0d | SQM-INSTRUMENTACIÓN [12 h] | 12 | 5827-L5 LiOH | gl | 1 | 1 | 6.2.4.22 | 1 |
| A8150 |  | Pruebas de Operación y Puesta en Marcha de Instrumento TAG: FV-6265 | 1d | 2026-03-19 | 2026-03-19 | A8140 SS | 8d | 0d | SQM-INSTRUMENTACIÓN [12 h] | 12 | 5827-L5 LiOH | gl | 1 | 1 | 6.2.4.20 | 1 |
| A8160 |  | Pruebas de Operación y Puesta en Marcha de Instrumento TAG: XV-6251 | 1d | 2026-03-19 | 2026-03-19 | A8150 SS | 8d | 0d | SQM-INSTRUMENTACIÓN [24 h] | 24 | 5827-L5 LiOH | gl | 2 | 2 | 6.2.4.7 | 1 |
| A8170 |  | Pruebas de Operación y Puesta en Marcha de Instrumento TAG: XV-6229 | 1d | 2026-03-19 | 2026-03-19 | A8160 SS | 8d | 0d | SQM-INSTRUMENTACIÓN [12 h] | 12 | 5827-L5 LiOH | gl | 1 | 1 | 6.2.4.19 | 1 |
| A8180 |  | Pruebas de Operación y Puesta en Marcha de Instrumento TAG: XV-6232 | 1d | 2026-03-19 | 2026-03-19 | A8170 SS | 8d | 0d | SQM-INSTRUMENTACIÓN [12 h] | 12 | 5827-L5 LiOH | gl | 1 | 1 | 6.2.4.16 | 1 |
| A8190 |  | Pruebas de Operación y Puesta en Marcha de Instrumento TAG: XV-6245 | 1d | 2026-03-20 | 2026-03-20 | A8180 | 8d | 0d | SQM-INSTRUMENTACIÓN [12 h] | 12 | 5827-L5 LiOH | gl | 1 | 1 | 6.2.4.13 | 1 |
| A8200 |  | Pruebas de Operación y Puesta en Marcha de Instrumento TAG: XV-6246 | 1d | 2026-03-20 | 2026-03-20 | A8190 SS | 8d | 0d | SQM-INSTRUMENTACIÓN [12 h] | 12 | 5827-L5 LiOH | gl | 1 | 1 | 6.2.4.11 | 1 |
| A8210 |  | Pruebas de Operación y Puesta en Marcha de Instrumento TAG: XV-6247 | 1d | 2026-03-20 | 2026-03-20 | A8200 SS | 8d | 0d | SQM-INSTRUMENTACIÓN [12 h] | 12 | 5827-L5 LiOH | gl | 1 | 1 | 6.2.4.10 | 1 |
| A8220 |  | Pruebas de Operación y Puesta en Marcha de Instrumento TAG: XV-6252 | 1d | 2026-03-20 | 2026-03-20 | A8210 SS | 8d | 0d | SQM-INSTRUMENTACIÓN [12 h] | 12 | 5827-L5 LiOH | gl | 1 | 1 | 6.2.4.5 | 1 |
| A8230 |  | Pruebas de Operación y Puesta en Marcha de Instrumento TAG: XV-6253 | 1d | 2026-03-20 | 2026-03-20 | A8220 SS | 8d | 0d | SQM-INSTRUMENTACIÓN [12 h] | 12 | 5827-L5 LiOH | gl | 1 | 1 | 6.2.4.4 | 1 |
| A8240 |  | Pruebas de Operación y Puesta en Marcha de Instrumento TAG: XV-6258 | 1d | 2026-03-20 | 2026-03-20 | A8230 SS | 8d | 0d | SQM-INSTRUMENTACIÓN [12 h] | 12 | 5827-L5 LiOH | gl | 1 | 1 | 6.2.4.3 | 1 |
| A8250 |  | Pruebas de Operación y Puesta en Marcha de Instrumento TAG: XV-6249 | 1d | 2026-03-20 | 2026-03-20 | A8240 SS | 8d | 0d | SQM-INSTRUMENTACIÓN [12 h] | 12 | 5827-L5 LiOH | gl | 1 | 1 | 6.2.4.9 | 1 |
| A8260 |  | New Activity | 1d | 2026-03-21 | 2026-03-21 | A8250 | 8d | 0d | SQM-INSTRUMENTACIÓN |  |  | gl | 0 | 1 |  |  |
| A8270 |  | Pruebas de Operación y Puesta en Marcha de Instrumento TAG: XV-6230 | 1d | 2026-03-21 | 2026-03-21 | A8260 SS | 8d | 0d | SQM-INSTRUMENTACIÓN [12 h] | 12 | 5827-L5 LiOH | gl | 1 | 1 | 6.2.4.17 | 1 |
| A8280 |  | Pruebas de Operación y Puesta en Marcha de Instrumento TAG: XV-6240 | 1d | 2026-03-21 | 2026-03-21 | A8270 SS | 8d | 0d | SQM-INSTRUMENTACIÓN [12 h] | 12 | 5827-L5 LiOH | gl | 1 | 1 | 6.2.4.15 | 1 |
| A8290 |  | Pruebas de Operación y Puesta en Marcha de Instrumento TAG: XV-6242 | 1d | 2026-03-21 | 2026-03-21 | A8280 SS | 8d | 0d | SQM-INSTRUMENTACIÓN [12 h] | 12 | 5827-L5 LiOH | gl | 1 | 1 | 6.2.4.14 | 1 |
| A8300 |  | Pruebas de Operación y Puesta en Marcha de Instrumento TAG: XV-6245 | 1d | 2026-03-21 | 2026-03-21 | A8290 SS | 8d | 0d | SQM-INSTRUMENTACIÓN [12 h] | 12 | 5827-L5 LiOH | gl | 1 | 1 | 6.2.4.12 | 1 |
| A8310 |  | Pruebas de Operación y Puesta en Marcha de Instrumento TAG: XV-6250 | 1d | 2026-03-21 | 2026-03-21 | A8300 SS | 8d | 0d | SQM-INSTRUMENTACIÓN [12 h] | 12 | 5827-L5 LiOH | gl | 1 | 1 | 6.2.4.8 | 1 |
| A8320 |  | Pruebas de Operación y Puesta en Marcha de Instrumento TAG: XV-6251 | 1d | 2026-03-21 | 2026-03-21 | A8310 SS | 8d | 0d | SQM-INSTRUMENTACIÓN [12 h] | 12 | 5827-L5 LiOH | gl | 1 | 1 | 6.2.4.6 | 1 |
| A8330 |  | Pruebas de Operación y Puesta en Marcha de Instrumento TAG: XV-6258 | 1d | 2026-03-21 | 2026-03-21 | A8320 SS | 8d |  | SQM-INSTRUMENTACIÓN [12 h] | 12 | 5827-L5 LiOH | gl | 1 | 1 | 6.2.4.2 | 1 |

| ID | WBS | Activity | Duration | Start | Finish | Predecessors | Complete | Planned start | Planned finish | Resources | Cost | Actual cost | Área | Unidad | Cantidad | Remanente | Ítem EDP | Forecast | Impacto | Corregir |
| --- | --- | --- | --- | --- | --- | --- | --- | --- | --- | --- | --- | --- | --- | --- | --- | --- | --- | --- | --- | --- |
|  | 5 | **ÁREA 5872 - SECTOR TK-3016** |  | 2025-11-01 | 2026-03-16 |  |  |  |  |  |  |  |  |  |  |  |  |  |  |  |
|  | 6 | **OBRAS CIVILES TK-3016** |  | 2025-11-01 | 2025-12-22 |  |  |  |  |  |  |  |  |  |  |  |  |  |  |  |
|  | 1 | **OOCC SECTOR ESTANQUE DE AGUA ULTRA PURA TAG:5872-EST-3016** |  | 2025-11-01 | 2025-12-22 |  |  |  |  |  |  |  |  |  |  |  |  |  |  |  |
| A8350 |  | Armadura de Refuerzo A630-420H para PD-1 | 4d | 2025-11-01 A | 2025-12-15 A | A6870 SS | 100% | 2026-01-28 | 2026-01-31 | SQM-OOCC [9.98 h] | 9.98 | 9.98 | 5872-TK3016 | kg | 72,5 | 0 | 8.2.2.1 | 75,52 |  |  |
| A8340 |  | Hormigón G30 Pedestal PD-1 (TAG: 5817-BBA-1681 y TAG: 5817-BBA-1684) | 2d | 2025-11-05 A | 2025-12-22 A | A8350, A6540 | 100% | 2026-02-01 | 2026-02-02 | SQM-OOCC [13.44 h] | 13.44 | 13.44 | 5872-TK3016 | m3 | 1,2 | 0 | 8.2.1.1 | 1,2 |  |  |
|  | 1 | **OBRAS MECÁNICAS TK-3016** |  | 2025-11-07 | 2025-12-23 |  |  |  |  |  |  |  |  |  |  |  |  |  |  |  |
|  | 1 | **MONTAJE Y PRUEBAS DE EQUIPOS MECÁNICOS ÁREA 5872 TK3016 HIDRÓXIDO** |  | 2025-11-07 | 2025-12-23 |  |  |  |  |  |  |  |  |  |  |  |  |  |  |  |
| A8360 |  | Bomba Centrífuga y Motor TAG: 5872-BBA-1681; 5872-MTR-1682 | 4d | 2025-11-07 A | 2025-12-23 A | A8340, A6030 | 100% | 2026-02-03 | 2026-02-06 | SQM-MECANICA [139.9 h] | 139.9 | 139.9 | 5872-TK3016 | un | 1 | 0 | 7.1.1.2 | 1 |  |  |
| A8370 |  | Bomba Centrífuga y Motor TAG: 5872-BBA-1684; 5872-MTR-1685 | 4d | 2025-11-11 A | 2025-12-23 A | A8360 SS | 100% | 2026-02-03 | 2026-02-06 | SQM-MECANICA [139.9 h] | 139.9 | 139.9 | 5872-TK3016 | un | 1 | 0 | 7.1.1.1 | 1 |  |  |
|  | 2 | **OBRAS PIPING TK-3016** |  | 2025-11-15 | 2026-01-21 |  |  |  |  |  |  |  |  |  |  |  |  |  |  |  |
|  | 1 | **FABRICACIÓN Y MONTAJE DE CAÑERÍAS ÁREA TK-3016** |  | 2025-11-15 | 2026-01-21 |  |  |  |  |  |  |  |  |  |  |  |  |  |  |  |
| A8380 |  | Ø 200 mm - Cañería HDPE, PE 100, PN20 (8") - Fabricación | 6d | 2025-11-15 A | 2025-12-09 A | A3600, A8370 SS | 100% | 2026-02-03 | 2026-02-08 | SQM-PIPING [217 h] | 217 | 217 | 5872-TK3016 | un | 62 | 0 | 7.2.1.2 | 45 | LDO N°6-20; SDI N°26 |  |
| A8500 |  | Ø 200 mm - Cañería HDPE, PE 100, PN20 (8") - Montaje | 3d | 2025-12-01 A | 2026-01-01 A | A8420 | 100% | 2026-02-19 | 2026-02-21 | SQM-PIPING [242.79 h] | 242.79 | 242.79 | 5872-TK3016 | m | 121,7 | 0 | 7.2.1.9 | 121,7 | LDO N°6-20; SDI N°26 |  |
| A8400 |  | Ø 6" - Cañería Acero Inoxidable - Fabricación | 30d | 2025-12-15 A | 2026-01-18 A | A6610 SS, A8380, A4540 | 100% | 2026-02-09 | 2026-03-10 | SQM-PIPING [1261 h] | 1,261 | 1,261 | 5872-TK3016 | un | 97 | 0 | 7.2.1.14 | 122 |  |  |
| A8460 |  | Ø 6" - Cañería Acero Inoxidable - Montaje | 28d | 2025-12-17 A | 2026-01-21 A | A8400 FF+1d, A8510 FF, A8520 FF | 100% | 2026-02-12 | 2026-03-11 | SQM-PIPING [75.63 h] | 75.63 | 75.63 | 5872-TK3016 | m | 28,7 | 0 | 7.2.1.19 | 40,9 |  | R FF |
| A8390 |  | Ø 8" - Cañería Acero Inoxidable - Fabricación | 4d | 2025-12-22 A | 2025-12-26 A | A8380 | 100% | 2026-02-09 | 2026-02-12 | SQM-PIPING [29.6 h] | 29.6 | 29.6 | 5872-TK3016 | un | 2 | 0 | 7.2.1.3 | 4 |  |  |
| A8410 |  | Ø 4" - Cañería Acero Inoxidable - Fabricación | 3d | 2025-12-26 A | 2025-12-29 A | A8390 | 100% | 2026-02-13 | 2026-02-15 | SQM-PIPING [30.4 h] | 30.4 | 30.4 | 5872-TK3016 | un | 4 | 0 | 7.2.1.20 | 4 |  |  |
| A8420 |  | Ø 3" - Cañería Acero Inoxidable - Fabricación | 3d | 2025-12-29 A | 2026-01-01 A | A8410 | 100% | 2026-02-16 | 2026-02-18 | SQM-PIPING [22.4 h] | 22.4 | 22.4 | 5872-TK3016 | un | 4 | 0 | 7.2.1.24 | 4 |  |  |
| A8430 |  | Ø 2" - Cañería Acero Inoxidable - Fabricación | 4d | 2026-01-01 A | 2026-01-05 A | A8420 | 100% | 2026-02-19 | 2026-02-22 | SQM-PIPING [82.11 h] | 82.11 | 82.11 | 5872-TK3016 | un | 20 | 0 | 7.2.1.29 | 12 |  |  |
| A8450 |  | Ø 8" - Cañería Acero Inoxidable - Montaje | 3d | 2026-01-01 A | 2026-01-04 A | A8500 | 100% | 2026-02-22 | 2026-02-24 | SQM-PIPING [7.26 h] | 7.26 | 7.26 | 5872-TK3016 | m | 0,65 | 0 | 7.2.1.10 | 0,65 |  |  |
| A8480 |  | Ø 3" - Cañería Acero Inoxidable - Montaje | 3d | 2026-01-04 A | 2026-01-07 A | A8450 | 100% | 2026-02-25 | 2026-02-27 | SQM-PIPING [0.53 h] | 0.53 | 0.53 | 5872-TK3016 | m | 0,265968066 | 0 | 7.2.1.27 | 0,265968066 |  |  |
| A8440 |  | Ø 1" - Cañería Acero Inoxidable - Fabricación | 3d | 2026-01-05 A | 2026-01-08 A | A8430 | 100% | 2026-02-23 | 2026-02-25 | SQM-PIPING [6 h] | 6 | 6 | 5872-TK3016 | un | 3 | 0 | 7.2.1.32 | 3 |  |  |
| A8490 |  | Ø 2" - Cañería Acero Inoxidable - Montaje | 3d | 2026-01-07 A | 2026-01-10 A | A8480 | 100% | 2026-02-28 | 2026-03-02 | SQM-PIPING [13.96 h] | 13.96 | 13.96 | 5872-TK3016 | m | 5 | 0 | 7.2.1.31 | 3,273658441 |  |  |
| A8470 |  | Ø 4" - Cañería Acero Inoxidable - Montaje | 3d | 2026-01-10 A | 2026-01-13 A | A8490 | 100% | 2026-03-03 | 2026-03-05 | SQM-PIPING [1.07 h] | 1.07 | 1.07 | 5872-TK3016 | m | 0,456945876 | 0 | 7.2.1.23 | 0,456945876 |  |  |

| ID | WBS | Activity | Duration | Start | Finish | Predecessors | Complete | Planned start | Planned finish | Resources | Cost | Actual cost | Área | Unidad | Cantidad | Remanente | Ítem EDP | Forecast | Corregir | Impacto |
| --- | --- | --- | --- | --- | --- | --- | --- | --- | --- | --- | --- | --- | --- | --- | --- | --- | --- | --- | --- | --- |
|  | 2 | **MONTAJE DE VÁLVULAS Y FITTING SECTOR TK-3016** |  | 2025-11-15 | 2026-01-21 |  |  |  |  |  |  |  |  |  |  |  |  |  |  |  |
| A8510 |  | Fitting Sector TK-3016 (Global) | 36d | 2025-11-15 A | 2026-01-21 A | A8380 SS | 100% | 2026-02-03 | 2026-03-10 | SQM-PIPING [1441.13 h] | 1,441.13 | 1,441.13 | 5872-TK3016 | un | 125 | 0 | 99.11 | 311 |  |  |
| A8520 |  | Válvulas Sector TK-3016(Global) | 36d | 2025-11-15 A | 2026-01-21 A | A8380 SS | 100% | 2026-02-03 | 2026-03-10 | SQM-PIPING [251.25 h] | 251.25 | 251.25 | 5872-TK3016 | un | 19 | 0 | 99.20 | 21 |  |  |
|  | 3 | **TIE IN LÍNEAS ASOCIADAS A TK-3016** |  | 2026-01-19 | 2026-01-21 |  |  |  |  |  |  |  |  |  |  |  |  |  |  |  |
| A8530 |  | TIE-IN N° 1421 - 5872-EST-3016 a Línea Proyectada 150-IW-5872-I1-1621 | 2d | 2026-01-19 A | 2026-01-21 A | A8460 | 100% | 2026-03-12 | 2026-03-13 | SQM-PIPING [50.67 h] | 50.67 | 50.67 | 5872-TK3016 | un | 1 | 0 | 7.2.3.2 | 1 |  |  |
| A8540 |  | TIE-IN N° 1422 - 5872-EST-3016 a Línea Proyectada 150-IW-5872-I1-1622 | 2d | 2026-01-19 A | 2026-01-21 A | A8530 FF | 100% | 2026-03-12 | 2026-03-13 | SQM-PIPING [50.67 h] | 50.67 | 50.67 | 5872-TK3016 | un | 1 | 0 | 7.2.3.1 | 1 |  |  |
| A8550 |  | PerforaciØn de Estanque Existente TK-3016 para TIE-IN N°1421 y 1422. | 2d | 2026-01-19 A | 2026-01-21 A | A8540 FF, A8580, A7070 FF | 100% | 2026-03-12 | 2026-03-13 | SQM-PIPING [101.33 h] | 101.33 | 101.33 | 5872-TK3016 | un | 2 | 0 | 7.2.1.35 | 2 | R FF |  |
|  | 4 | **FABRICACIÓN Y MONTAJE DE SOPORTES TK-3016** |  | 2026-01-08 | 2026-01-17 |  |  |  |  |  |  |  |  |  |  |  |  |  |  |  |
| A8560 |  | Soporte N°001 - Pedestal Tipo TEE, Acero Estructural para Tuberías Diámetros Pequeños | 3d | 2026-01-08 A | 2026-01-11 A | A8440 | 100% | 2026-02-26 | 2026-02-28 | SQM-PIPING [12.75 h] | 12.75 | 12.75 | 5872-TK3016 | un | 3 | 0 | 7.2.4.3 | 2 |  |  |
| A8570 |  | Soporte N°002A - Pedestal con Repisa de Acero Estructural para Tuberías Diámetros Pequeños | 3d | 2026-01-11 A | 2026-01-14 A | A8560 | 100% | 2026-03-01 | 2026-03-03 | SQM-PIPING [17 h] | 17 | 17 | 5872-TK3016 | un | 4 | 0 | 7.2.4.2 | 4 |  |  |
| A8580 |  | Soporte Primario Tipo "U" (Para Uso General) | 3d | 2026-01-14 A | 2026-01-17 A | A8570, A8470 | 100% | 2026-03-06 | 2026-03-08 | SQM-PIPING [7.7 h] | 7.7 | 7.7 | 5872-TK3016 | un | 40 | 0 | 7.2.4.1 | 6 |  |  |
|  | 3 | **OBRAS ELÉCTRICAS TK-3016** |  | 2025-12-01 | 2026-03-16 |  |  |  |  |  |  |  |  |  |  |  |  |  |  |  |
|  | 1 | **MONTAJE DE CANALIZACIÓN Y FERRETERÍA TK-3016** |  | 2025-12-01 | 2025-12-27 |  |  |  |  |  |  |  |  |  |  |  |  |  |  |  |
| A8630 |  | Canalización y Copla de Conduit de Acero Galvanizado 1 1/2"Ø, Conduit ANSI C80.1 | 4d | 2025-12-01 A | 2025-12-27 A | A8620 | 100% | 2026-03-16 | 2026-03-19 | SQM-ELÉCTRICO [7.56 h] | 7.56 | 7.56 | 5872-TK3016 | m | 6 | 0 | 7.3.1.6 | 40 |  |  |
| A8640 |  | Canalización y Copla de Conduit Flexible Metálico con Cubierta PVC 1 1/2" Ø Trabajo Pesado | 2d | 2025-12-01 A | 2025-12-25 A | A8630 SS | 100% | 2026-03-16 | 2026-03-17 | SQM-ELÉCTRICO [2.52 h] | 2.52 | 2.52 | 5872-TK3016 | m | 2 | 0 | 7.3.1.3 | 5 |  |  |
| A8610 |  | Canalización y Copla de Conduit de Acero Galvanizado 2 1/2"Ø, Conduit ANSI C80.1 | 4d | 2025-12-21 A | 2025-12-25 A | A8540 | 100% | 2026-03-14 | 2026-03-17 | SQM-ELÉCTRICO [17.01 h] | 17.01 | 17.01 | 5872-TK3016 | m | 9 | 0 | 7.3.1.5 | 40 |  |  |
| A8620 |  | Canalización y Copla de Conduit Flexible Metálico con Cubierta PVC 2 1/2" Ø Trabajo Pesado | 2d | 2025-12-25 A | 2025-12-27 A | A8610 SS | 100% | 2026-03-14 | 2026-03-15 | SQM-ELÉCTRICO [3.78 h] | 3.78 | 3.78 | 5872-TK3016 | m | 2 | 0 | 7.3.1.2 | 5 |  |  |
|  | 2 | **TENDIDO Y CONEXIONADO DE CABLES DE ALIMENTACIÓN TK-3016** |  | 2025-12-01 | 2025-12-31 |  |  |  |  |  |  |  |  |  |  |  |  |  |  |  |
| A8650 |  | Cable Monoconductor de Cobre con Aislación XLPE, 1C #250 MCM, Clase 1 kV | 7d | 2025-12-01 A | 2025-12-31 A | A8640 | 100% | 2026-03-18 | 2026-03-24 | SQM-ELÉCTRICO [252.8 h] | 252.8 | 252.8 | 5872-TK3016 | m | 400 | 0 | 7.3.2.3 | 500 |  |  |
| A8660 |  | Cable Multiconductor de Cobre con Aislación XLPE, 1X4C #2 AWG, Clase 1 kV | 4d | 2025-12-01 A | 2025-12-27 A | A8650 SS | 100% | 2026-03-18 | 2026-03-21 | SQM-ELÉCTRICO [28.44 h] | 28.44 | 28.44 | 5872-TK3016 | m | 45 | 0 | 7.3.2.1 | 45 |  |  |
| A8670 |  | Cable Multiconductor de Cobre con Aislación de XLPE, 1x5C #12 AWG, Clase 1 kV | 4d | 2025-12-01 A | 2025-12-27 A | A8660 SS | 100% | 2026-03-18 | 2026-03-21 | SQM-ELÉCTRICO [14.61 h] | 14.61 | 14.61 | 5872-TK3016 | m | 40 | 0 | 7.3.2.2 | 45 |  |  |
|  | 3 | **MONTAJE Y CONEXIONADO DE EQUIPOS ELÉCTRICOS TK-3016** |  | 2025-12-27 | 2025-12-30 |  |  |  |  |  |  |  |  |  |  |  |  |  |  |  |
| A8680 |  | Tablero Partidor de Motores TAG: 5817-TPM-1502. | 3d | 2025-12-27 A | 2025-12-30 A | A8670 | 100% | 2026-03-22 | 2026-03-24 | SQM-ELÉCTRICO [124.1 h] | 124.1 | 124.1 | 5872-TK3016 | gl | 1 | 0 | 7.3.3.1 | 1 |  | SDC N°55 |
| A8690 |  | Conexión de Motor TAG: 5872-MTR-1682 a TPM TAG: 5817-TPM-1502. | 2d | 2025-12-27 A | 2025-12-29 A | A8680 SS | 100% | 2026-03-22 | 2026-03-23 | SQM-ELÉCTRICO [4.13 h] | 4.13 | 4.13 | 5872-TK3016 | gl | 1 | 0 | 7.3.3.4 | 1 |  |  |
| A8700 |  | Conexión de Motor TAG: 5872-MTR-1685 a TPM TAG: 5817-TPM-1502. | 2d | 2025-12-27 A | 2025-12-29 A | A8690 SS | 100% | 2026-03-22 | 2026-03-23 | SQM-ELÉCTRICO [4.13 h] | 4.13 | 4.13 | 5872-TK3016 | gl | 1 | 0 | 7.3.3.3 | 1 |  |  |
| A8710 |  | Conexión de Tablero Partidor de Motores TAG: 5817-TPM-1502 a Sala Eléctrica TAG: SEL-4016. | 2d | 2025-12-27 A | 2025-12-29 A | A8700 SS | 100% | 2026-03-22 | 2026-03-23 | SQM-ELÉCTRICO [4.13 h] | 4.13 | 4.13 | 5872-TK3016 | gl | 1 | 0 | 7.3.3.2 | 1 |  |  |

| ID | WBS | Activity | Duration | Start | Finish | Predecessors | Complete | Remaining | Planned start | Planned finish | Total float | Free float | Resources | Cost | Actual cost | Área | Unidad | Cantidad | Remanente | Ítem EDP | Forecast | Impacto |
| --- | --- | --- | --- | --- | --- | --- | --- | --- | --- | --- | --- | --- | --- | --- | --- | --- | --- | --- | --- | --- | --- | --- |
|  | 4 | **PRUEBAS DE FUNCIONAMIENTO Y PEM TK-3016** |  | 2025-12-29 | 2026-03-16 |  |  |  |  |  |  |  |  |  |  |  |  |  |  |  |  |  |
| A8720 |  | Pruebas de Funcionamiento y Puesta en Marcha de Motor TAG: 5872-MTR-1682. | 2d | 2025-12-29 A | 2026-03-16 | A8710 | 78% | 0.45d | 2026-03-24 | 2026-03-25 | 27.55d |  | SQM-ELÉCTRICO [12 h] | 12 | 1.2 | 5872-TK3016 | gl | 1 | 0,9 | 7.3.4.2 | 1 |  |
| A8730 |  | Pruebas de Funcionamiento y Puesta en Marcha de Motor TAG: 5872-MTR-1685. | 2d | 2025-12-31 A | 2026-03-16 | A8720 SS | 78% | 0.45d | 2026-03-26 | 2026-03-27 | 27.55d |  | SQM-ELÉCTRICO [12 h] | 12 | 1.2 | 5872-TK3016 | gl | 1 | 0,9 | 7.3.4.1 | 1 |  |
|  | 4 | **OBRAS DE INSTRUMENTACIÓN TK-3016** |  | 2025-11-10 | 2026-03-16 |  |  |  |  |  |  |  |  |  |  |  |  |  |  |  |  |  |
|  | 1 | **MONTAJE DE CANALIZACIÓN Y FERRETERÍA INST. TK-3016** |  | 2025-12-27 | 2026-01-01 |  |  |  |  |  |  |  |  |  |  |  |  |  |  |  |  |  |
| A8740 |  | Canalización y Copla de Conduit de Acero Galvanizado 1"Ø, Conduit ANSI C80.1 | 3d | 2025-12-27 A | 2025-12-30 A | A8670 | 100% |  | 2026-03-22 | 2026-03-24 |  |  | SQM-INSTRUMENTACIÓN [22.68 h] | 22.68 | 22.68 | 5872-TK3016 | m | 18 | 0 | 7.4.1.1 | 80 |  |
| A8750 |  | Canalización y Copla de Conduit Flexible Metálico con Cubierta PVC 1" Ø Trabajo Pesado | 2d | 2025-12-30 A | 2026-01-01 A | A8740 | 100% |  | 2026-03-25 | 2026-03-26 |  |  | SQM-INSTRUMENTACIÓN [6.3 h] | 6.3 | 6.3 | 5872-TK3016 | m | 5 | 0 | 7.4.1.2 | 10 |  |
|  | 2 | **TENDIDO Y CONEXIONADO DE CABLES INSTRUMENTACIÓN TK-3016** |  | 2025-11-10 | 2025-12-30 |  |  |  |  |  |  |  |  |  |  |  |  |  |  |  |  |  |
| A8760 |  | Cable Multiconductor de Cobre con Aislación de XLPE, 1x3C #12 AWG, Clase 1 kV | 4d | 2025-11-10 A | 2025-11-14 A | A8750 | 100% |  | 2026-03-27 | 2026-03-30 |  |  | SQM-INSTRUMENTACIÓN [0.28 h] | 0.28 | 0.28 | 5872-TK3016 | m | 117 | 0 | 7.4.2.1 | 150 |  |
| A8770 |  | Cable de Instrumentación (Señales Análogas), 1x1 par #16 AWG Apantallado | 5d | 2025-12-01 A | 2025-12-30 A | A8760 SS | 100% |  | 2026-03-27 | 2026-03-31 |  |  | SQM-INSTRUMENTACIÓN [69.26 h] | 69.26 | 69.26 | 5872-TK3016 | m | 234 | 0 | 7.4.2.2 | 300 |  |
| A8780 |  | Conductor Fibra Óptica Multimodo 12 Hilos | 4d | 2025-12-24 A | 2025-12-28 A | A8770 SS | 100% |  | 2026-03-27 | 2026-03-30 |  |  | SQM-INSTRUMENTACIÓN [62.14 h] | 62.14 | 62.14 | 5872-TK3016 | m | 130 | 0 | 7.4.2.3 | 150 |  |
|  | 3 | **MONTAJE Y CONEXIONADO DE EQUIPOS E INSTRUMENTOSTK-3016** |  | 2025-12-01 | 2026-03-16 |  |  |  |  |  |  |  |  |  |  |  |  |  |  |  |  |  |
| A8830 |  | Instrumento TAG: FIT-1177 | 2d | 2025-12-01 A | 2026-03-16 | A8820 SS | 85% | 0.3d | 2026-03-27 | 2026-03-28 | 27.7d |  | SQM-INSTRUMENTACIÓN [12 h] | 12 | 4.8 | 5872-TK3016 | gl | 1 | 0 | 7.4.4.2 | 1 | LDO N°23 |
| A8840 |  | Instrumento TAG: PIT-1176 | 2d | 2025-12-01 A | 2026-03-16 | A8830 SS | 85% | 0.3d | 2026-03-29 | 2026-03-30 | 27d | 27.7d | SQM-INSTRUMENTACIÓN [12 h] | 12 | 4.8 | 5872-TK3016 | gl | 1 | 0 | 7.4.4.1 | 1 |  |
| A8820 |  | Fibra Óptica en TAG: SEL-4016. | 3d | 2026-01-01 A | 2026-03-16 | A8780 SS | 90% | 0.3d | 2026-03-27 | 2026-03-29 | 27.7d |  | SQM-INSTRUMENTACIÓN [12 h] | 12 | 4.8 | 5872-TK3016 | gl | 1 | 0 | 7.4.4.3 | 1 |  |
|  | 4 | **PRUEBAS DE FUNCIONAMIENTO Y PEM INST. TK-3016** |  | 2025-12-27 | 2026-03-16 |  |  |  |  |  |  |  |  |  |  |  |  |  |  |  |  |  |
| A8800 |  | Pruebas de Operación y Puesta en Marcha de Instrumento TAG: FIT-1177 | 2d | 2025-12-27 A | 2025-12-29 A | A8790 SS | 100% |  | 2026-03-29 | 2026-03-30 |  |  | SQM-INSTRUMENTACIÓN [21.75 h] | 21.75 | 21.75 | 5872-TK3016 | gl | 1 | 0,55 | 7.4.3.2 | 1 |  |
| A8810 |  | Pruebas de Operación y Puesta en Marcha de Instrumento TAG: PIT-1176 | 2d | 2026-01-01 A | 2026-01-03 A | A8800 SS, A8730 SS | 100% |  | 2026-03-29 | 2026-03-30 |  |  | SQM-INSTRUMENTACIÓN [12 h] | 12 | 12 | 5872-TK3016 | gl | 1 | 0,55 | 7.4.3.3 | 1 |  |
| A8790 |  | Pruebas de Funcionamiento de Conectividad de Fibra Óptica desde SEL-4016 a TPM-1502. | 1d | 2026-03-16 | 2026-03-16 | A8840 SS |  |  |  |  | 27d |  | SQM-INSTRUMENTACIÓN |  |  | 5872-TK3016 | gl | 0 | 1 | 7.4.3.1 | 1 |  |
