# Programa de Seguimiento MEM Patio de Estanques y OOCC Misceláneos 11-03-26 - Nueva LB

Schedule from Primavera P6, 2025-06-30 to 2026-04-14, data date 2025-06-30, costs in CLP.

## Calendars

- 14x14: Mon-Sun 07:00-19:00.

## Resources

| Resource | Group | Rate | Notes |
| --- | --- | --- | --- |
| SQM-MECANICA | labor | 507.58 |  |
| SQM-ESTRUCTURA | labor | 507.58 |  |
| SQM-PIPING | labor | 507.58 |  |
| SQM-ELÉCTRICO | labor | 507.58 | ï»¿ |
| SQM-INSTRUMENTACIÓN | labor |  |  |
| SQM-OBRAS CIVILES | labor | 507.58 |  |

## Schedule

| ID | WBS | Activity | Type | Duration | Start | Finish | Predecessors | Total float | Free float | Constraint | Resources | Cost | Cantidad | Unidad | Remanente | Forecast | Área | Impacto | Ítem EDP |
| --- | --- | --- | --- | --- | --- | --- | --- | --- | --- | --- | --- | --- | --- | --- | --- | --- | --- | --- | --- |
|  | 1 | **HITOS** |  |  | 2025-06-30 | 2026-04-14 |  |  |  |  |  |  |  |  |  |  |  |  |  |
| A1000 |  | Inicio de Proyecto | milestone | 0d | 2025-06-30 | 2025-06-30 |  | 0.67d | 0d |  |  |  | 0 | gl | 0 | 1 |  |  |  |
| A1010 |  | Movilización, Instalación de Faenas y Proceso de Acreditación MEM Patio de Estanques |  | 14d | 2025-06-30 | 2025-07-13 | A1000 SS | 0.67d | 0d |  |  |  | 0 | gl | 0 | 1 |  |  |  |
| A1020 |  | Adjudicación OOCC Misceláneos Addendum 01 | milestone | 0d | 2025-08-28 | 2025-08-28 |  | 0d |  | start on or after 2025-08-28 |  |  | 0 | gl | 0 | 1 |  |  |  |
| A1030 |  | Proceso de Acreditación OOCC Misceláneos |  | 14d | 2025-08-28 | 2025-09-10 | A1020 | 0d |  |  |  |  | 0 | gl | 0 | 1 |  |  |  |
| A1040 |  | Desmovilización |  | 14d | 2026-04-01 | 2026-04-14 | A1080, A1090 | 0d |  |  |  |  | 0 | gl | 0 | 1 |  |  |  |
| A1050 |  | Término de Proyecto | milestone | 0d | 2026-04-14 | 2026-04-14 | A1040 FF, A1090 FF | 0d |  |  |  |  | 0 | gl | 0 | 1 |  |  |  |
|  | 2 | **HITOS CONTRACTUALES** |  |  | 2025-07-14 | 2026-03-31 |  |  |  |  |  |  |  |  |  |  |  |  |  |
| A1060 |  | Inicio Constructuvo Contractual MEM Patio de Estanques | milestone | 0d | 2025-07-14 | 2025-07-14 | A1010 | 0.67d | 0d |  |  |  | 0 | gl | 0 | 1 |  |  |  |
| A1070 |  | Inicio Constructuvo Contractual OOCC Misceláneos (Addendum 01) | milestone | 0d | 2025-09-11 | 2025-09-11 | A1030 | 0d |  |  |  |  | 0 | gl | 0 | 1 |  |  |  |
| A1080 |  | Término Constructivo Contractual MEM Patio de Estanques | milestone | 0d | 2026-03-31 | 2026-03-31 | A2180 FF, A1940, A3250 FF, A3940, A1910, A2030 FF, A1380 FF, A1430 FF, A1740 FF, A1720 FF | 0.67d |  |  |  |  | 0 | gl | 0 | 1 |  |  |  |
| A1090 |  | Término Constructivo Contractual OOCC Misceláneos (Addendum 01) | milestone | 0d | 2026-03-31 | 2026-03-31 | A4690 FF, A5170 FF, A7440, A3910 FF, A3980 FF, A8330, A8810, A4060, A4480, A5950, A6490, A8550, A7670 FF, A6870 FF, A1920 FF, A4660 FF, A6200 FF, A6780 FF, A4380 FF | 0d |  |  |  |  | 0 | un | 0 | 1 |  |  |  |
|  | 3 | **CONSTRUCCIÓN** |  |  | 2025-07-14 | 2026-03-31 |  |  |  |  |  |  |  |  |  |  |  |  |  |
|  | 1 | **CONTRATO SC15682 - MEM PATIO DE ESTANQUES** |  |  | 2025-07-14 | 2026-03-31 |  |  |  |  |  |  |  |  |  |  |  |  |  |
|  | 1 | **SECTOR PATIO DE ESTANQUES** |  |  | 2025-07-14 | 2026-03-31 |  |  |  |  |  |  |  |  |  |  |  |  |  |
|  | 1 | **OBRAS MECÁNICAS PATIO DE ESTANQUES** |  |  | 2025-07-14 | 2026-01-18 |  |  |  |  |  |  |  |  |  |  |  |  |  |
|  | 1 | **MONTAJE DE ESTANQUES** |  |  | 2025-07-14 | 2025-10-19 |  |  |  |  |  |  |  |  |  |  |  |  |  |
|  | 1 | **MONTAJE DE ESTANQUES RED CONTRA INCENDIOS (RCI)** |  |  | 2025-07-14 | 2025-10-19 |  |  |  |  |  |  |  |  |  |  |  |  |  |
| A1100 |  | Estanques de Agua para RCI TAG: 5764-EST-001 |  | 98d | 2025-07-14 | 2025-10-19 | A1060 SS | 0.67d | 0d |  | SQM-MECANICA [4320 h] | 2,192,745.6 | 1 | un | 0 | 1 | 5764-RCI | LDO N°6-8-13-14-31; SDC N°4-5-13-22-23; SDI N°31-32 | 1.1.27 |
| A1110 |  | Estanques de Agua para RCI TAG: 5764-EST-015 |  | 83d | 2025-07-19 | 2025-10-09 | A1100 SS+5d | 0.67d | 0d |  | SQM-MECANICA [4320 h] | 2,192,745.6 | 1 | un | 0 | 1 |  | LDO N°7-24; SDC N°22-23-29; SDI N°32-43 | 1.1.27 |
|  | 2 | **MONTAJE DE ESTANQUES DE AGUA, ÁREA 1000** |  |  | 2025-07-24 | 2025-10-17 |  |  |  |  |  |  |  |  |  |  |  |  |  |
| A1130 |  | Estanque Agua Industrial y Plataforma Superior TAG: 5817-EST-1041 |  | 76d | 2025-07-24 | 2025-10-07 | A1110 SS+5d | 0.67d | 0d |  | SQM-MECANICA [3936 h] | 1,997,834.88 | 1 | un | 0 | 1 | 5817-1000 | LDO N°10-37; SDC N°14-22-80; SDI N°15-17-60-63-80 | 1.1.2 |
| A1140 |  | Estanque Agua Potable y Plataforma Superior TAG: 5817-EST-1071 |  | 79d | 2025-07-29 | 2025-10-15 | A1130 SS+5d | 0.67d | 0d |  | SQM-MECANICA [996 h] | 505,549.68 | 1 | un | 0 | 1 | 5817-1000 | LDO N°10-24-42; SDC N°22-56-73; SDI N°13 | 1.1.3 |
| A1120 |  | Estanque Agua Ultrapura y Plataforma Superior TAG: 5817-EST-1001 |  | 76d | 2025-08-03 | 2025-10-17 | A1140 SS+5d | 0.67d | 0d |  | SQM-MECANICA [4164 h] | 2,113,563.12 | 1 | un | 0 | 1 | 5817-1000 | LDO N°21; SDC N°22 | 1.1.1 |

Notes:
- A1110: Corregir: No se encuentra piping ( interconexiï¿½n) para poder realizar pruebas de estanqueidad / lï¿½nea 10621 / se envï¿½a SDC
- A1120: Corregir: Se desvï¿½an recursos para atender urgencias de la planta, justifica SDC 5 dï¿½as de detenciï¿½n de trabajos// Interferencia de boquilla por soldar que choca con estructura de plataformas de operaciones

| ID | WBS | Activity | Duration | Start | Finish | Predecessors | Total float | Free float | Resources | Cost | Cantidad | Unidad | Área | Remanente | Impacto | Ítem EDP | Forecast |
| --- | --- | --- | --- | --- | --- | --- | --- | --- | --- | --- | --- | --- | --- | --- | --- | --- | --- |
|  | 2 | **MONTAJE DE BOMBAS PATIO ESTANQUES** |  | 2025-07-24 | 2026-01-18 |  |  |  |  |  |  |  |  |  |  |  |  |
| A1170 |  | Bomba Centrífuga y Motor TAG: 5817-BBA-1052; 5817-MTR-1053 | 9d | 2025-07-24 | 2025-08-01 | A1110 SS+5d | 72d | 0d | SQM-MECANICA [98.25 h] | 49,869.74 | 1 | un | TK-1041 | 0,0199999999999998 | SDI N°55-57; SUM M-06 F.Entrega: 27-08-25 | 1.1.6 | 1 |
| A1150 |  | Bomba Centrífuga y Motor TAG: 5817-BBA-1042; 5817-MTR-1043 | 9d | 2025-08-02 | 2025-08-10 | A1170 | 72d | 0d | SQM-MECANICA [98.25 h] | 49,869.74 | 1 | un | TK-1041 | 0,0199999999999998 | SDI N°8 | 1.1.4 | 1 |
| A1190 |  | Bomba Centrífuga y Motor TAG: 5817-BBA-1074; 5817-MTR-1075 | 9d | 2025-08-11 | 2025-08-19 | A1150 | 72d | 0d | SQM-MECANICA [139.9 h] | 71,010.44 | 1 | un | TK-1071 | 0,0299999999999999 |  | 1.1.8 | 1 |
| A1210 |  | Bomba Centrífuga y Motor TAG: 5817-BBA-1080; 5817-MTR-1081 | 9d | 2025-08-20 | 2025-08-28 | A1190 | 72d | 0d | SQM-MECANICA [139.9 h] | 71,010.44 | 1 | un | TK-1071 | 0,0299999999999999 |  | 1.1.10 | 1 |
| A1220 |  | Bomba Centrífuga y Motor TAG: 5817-BBA-1083; 5817-MTR-1084 | 9d | 2025-08-29 | 2025-09-06 | A1210 | 72d | 0d | SQM-MECANICA [139.9 h] | 71,010.44 | 1 | un | TK-1071 | 0,0299999999999999 |  | 1.1.11 | 1 |
| A1160 |  | Bomba Centrífuga y Motor TAG: 5817-BBA-1072; 5817-MTR-1073 | 9d | 2025-09-07 | 2025-09-15 | A1220 | 72d | 0d | SQM-MECANICA [139.9 h] | 71,010.44 | 1 | un | TK-1071 | 0,0299999999999999 |  | 1.1.5 | 1 |
| A1180 |  | Bomba Centrífuga y Motor TAG: 5817-BBA-1055; 5817-MTR-1056 | 9d | 2025-09-16 | 2025-09-24 | A1160 | 72d | 0d | SQM-MECANICA [139.9 h] | 71,010.44 | 1 | un | TK-1041 | 0,0299999999999999 | LDO N°18; SDC N°62; SDI N°68 | 1.1.7 | 1 |
| A1200 |  | Bomba Centrífuga y Motor TAG: 5817-BBA-1077; 5817-MTR-1078 | 9d | 2025-09-25 | 2025-10-03 | A1180 | 72d | 0d | SQM-MECANICA [139.9 h] | 71,010.44 | 1 | un | TK-1071 | 0,0299999999999999 |  | 1.1.9 | 1 |
| A1250 |  | Bomba Centrífuga y Motor TAG: 5817-BBA-4009; 5817-MTR-4010 | 9d | 2025-10-04 | 2025-10-12 | A1200 | 72d | 0d | SQM-MECANICA [139.9 h] | 71,010.44 | 1 | un | TK-4001/2 | 0,0199999999999998 | SDC N°44; SDI N°61; SUM M-09 F.Entrega: 01-10-25 | 1.1.14 | 1 |
| A1260 |  | Bomba Centrífuga y Motor TAG: 5817-BBA-4012; 5817-MTR-4013 | 9d | 2025-10-13 | 2025-10-21 | A1250 | 72d | 0d | SQM-MECANICA [139.9 h] | 71,010.44 | 1 | un | TK-4001/2 | 0,0199999999999998 | SDC N°44; SDI N°61; SUM M-09 F.Entrega: 01-10-25 | 1.1.15 | 1 |
| A1270 |  | Bomba Centrífuga y Motor TAG: 5817-BBA-4015; 5817-MTR-4016 | 9d | 2025-10-22 | 2025-10-30 | A1260 | 72d | 0d | SQM-MECANICA [139.9 h] | 71,010.44 | 1 | un | TK-4001/2 | 0,0199999999999998 | SDC N°44; SDI N°61; SUM M-09 F.Entrega: 01-10-25 | 1.1.16 | 1 |
| A1280 |  | Bomba Centrífuga y Motor TAG: 5817-BBA-4018; 5817-MTR-4019 | 9d | 2025-10-31 | 2025-11-08 | A1270 | 72d | 0d | SQM-MECANICA [139.9 h] | 71,010.44 | 1 | un | TK-4001/2 | 0,0199999999999998 | SDC N°44; SDI N°61; SUM M-09 F.Entrega: 01-10-25 | 1.1.17 | 1 |
| A1290 |  | Bomba Centrífuga y Motor TAG: 5817-BBA-4021; 5817-MTR-4022 | 9d | 2025-11-09 | 2025-11-17 | A1280 | 72d | 0d | SQM-MECANICA [139.9 h] | 71,010.44 | 1 | un | TK-4001/2 | 0,0199999999999998 | SDC N°44; SDI N°61; SUM M-09 F.Entrega: 01-10-25 | 1.1.18 | 1 |
| A1300 |  | Bomba Centrífuga y Motor TAG: 5817-BBA-4024; 5817-MTR-4025 | 9d | 2025-11-18 | 2025-11-26 | A1290 | 72d | 0d | SQM-MECANICA [139.9 h] | 71,010.44 | 1 | un | TK-4001/2 | 0,0199999999999998 | SDC N°44; SDI N°61; SUM M-09 F.Entrega: 01-10-25 | 1.1.19 | 1 |
| A1330 |  | Bomba Centrífuga y Motor TAG: 5817-BBA-5008; 5817-MTR-5009 | 9d | 2025-11-27 | 2025-12-05 | A1300 | 72d | 0d | SQM-MECANICA [139.9 h] | 71,010.44 | 1 | un | TK-5001 | 0,0799999999999999 | SUM M-08 F.Entrega: 01-10-25 | 1.1.22 | 1 |
| A1340 |  | Bomba Centrífuga y Motor TAG: 5817-BBA-5011; 5817-MTR-5012 | 9d | 2025-12-06 | 2025-12-14 | A1330 | 72d | 0d | SQM-MECANICA [139.9 h] | 71,010.44 | 1 | un | TK-5001 | 0,0799999999999999 | SUM M-08 F.Entrega: 01-10-25 | 1.1.23 | 1 |
| A1350 |  | Bomba Sumidero y Motor TAG: 5817-BBS-1050; 5817-MTR-1051 | 9d | 2025-12-15 | 2025-12-23 | A1340 | 72d | 0d | SQM-MECANICA [139.9 h] | 71,010.44 | 1 | un | TK-1041 | 0 |  | 1.1.24 | 1 |
| A1360 |  | Bomba Sumidero y Motor TTAG: 5817-BBS-4026; 5817-MTR-4027 | 9d | 2025-12-24 | 2026-01-01 | A1350 | 72d | 0d | SQM-MECANICA [139.9 h] | 71,010.44 | 1 | un | TK-4001/2 | 0 |  | 1.1.25 | 1 |
| A1370 |  | Bomba Sumidero y Motor TAG: 5817-BBS-5014; 5817-MTR-5015 | 9d | 2026-01-02 | 2026-01-10 | A1360 | 72d | 0d | SQM-MECANICA [139.9 h] | 71,010.44 | 1 | un | TK-5001 | 0 | LDO N°23 | 1.1.26 | 1 |
| A1380 |  | Alineamiento digital de Bombas de Proyecto | 8d | 2026-01-11 | 2026-01-18 | A1370 | 72d | 71.33d | SQM-MECANICA |  | 0 | un |  | 0 |  |  | 1 |
|  | 3 | **OBRAS ESTRUCTURALES PATIO DE ESTANQUES** |  | 2025-10-08 | 2026-02-06 |  |  |  |  |  |  |  |  |  |  |  |  |
|  | 1 | **MONTAJE DE ESTRUCTURA DE ACCESO E INTERCONEXIÓN DE ESTANQUES** |  | 2025-10-08 | 2025-10-17 |  |  |  |  |  |  |  |  |  |  |  |  |
| A1430 |  | Montaje de Acceso e Interconexión de Estanques TAG: 5817-EST-1001; 5817-EST-1041; 5817-EST-1071 | 10d | 2025-10-08 | 2025-10-17 | A1120 FF | 165d | 164.33d | SQM-ESTRUCTURA [1439.97 h] | 730,900.11 | 10137,78 | kg | PTK | 0 |  | 1.2.1 | 10137,78 |

| ID | WBS | Activity | Duration | Start | Finish | Predecessors | Total float | Free float | Resources | Cost | Cantidad | Unidad | Área | Remanente | Impacto | Ítem EDP | Forecast |
| --- | --- | --- | --- | --- | --- | --- | --- | --- | --- | --- | --- | --- | --- | --- | --- | --- | --- |
|  | 2 | **MONTAJE DE PARRÓN PATIO DE ESTANQUES ÁREA 7000** |  | 2025-10-18 | 2025-11-21 |  |  |  |  |  |  |  |  |  |  |  |  |
| A1440 |  | Parron Patio de Estanques Estructura liviana | 30d | 2025-10-18 | 2025-11-16 | A1100 SS, A1120 | 29d | 0d | SQM-ESTRUCTURA [3438.94 h] | 1,745,535.92 | 24858,09 | Kg | 7000 | 0 | SUM MS-03 F.Entrega:26-10-25 | 1.2.2 | 23564,01 |
| A1450 |  | Parron Patio de Estanques Estructura Mediana | 25d | 2025-10-23 | 2025-11-16 | A1440 SS+5d | 29d | 0d | SQM-ESTRUCTURA [2223.03 h] | 1,128,363.03 | 17784,2 | Kg | 7000 | 0 | SUM MS-03 F.Entrega:26-10-25 | 1.2.3 | 13155 |
| A1460 |  | Parron Patio de Estanques Estructura Pesada | 25d | 2025-10-28 | 2025-11-21 | A1450 SS+5d | 41d | 0d | SQM-ESTRUCTURA [4540.04 h] | 2,304,431.08 | 46326,89 | Kg | 7000 | 0 | LDO N°21; SDC N°49; SDI N°62; SUM MS-03 F.Entrega:26-10-25 | 1.2.4 | 46326,89 |
|  | 3 | **MONTAJE PLATAFORMA DE OPERACIÓN ÁREA 4000** |  | 2025-11-22 | 2025-12-11 |  |  |  |  |  |  |  |  |  |  |  |  |
| A1480 |  | Plataforma de Operación Área 4000 Estructura Liviana | 4d | 2025-11-22 | 2025-11-25 | A1460 | 41d | 0d | SQM-ESTRUCTURA [345.99 h] | 175,618.82 | 2435,88 | Kg | BREF 1 Y 2 | 0 |  | 1.2.6 | 2364,96 |
| A1490 |  | Plataforma de Operación Área 4000 Estructura Mediana | 10d | 2025-11-26 | 2025-12-05 | A1480 | 52d | 11d | SQM-ESTRUCTURA [1010.22 h] | 512,766.2 | 8081,74 | Kg | BREF 1 Y 2 | 0 | SDC N°60; SDI N°72-75-77 | 1.2.7 | 7464,24 |
| A1500 |  | Plataforma de Operación Área 4000 Planchas | 2d | 2025-11-26 | 2025-11-27 | A1480 | 46d | 0d | SQM-ESTRUCTURA [12.86 h] | 6,529.07 | 90,56 | Kg | BREF 1 Y 2 | 0 | SDI N°79 | 1.2.9 | 86 |
| A1510 |  | Plataforma de Operación Área 4000 Grating | 9d | 2025-11-28 | 2025-12-06 | A1500 | 46d | 0d | SQM-ESTRUCTURA [194.51 h] | 98,730.56 | 126,9 | M2 | BREF 1 Y 2 | 0 |  | 1.2.10 | 337 |
| A1520 |  | Plataforma de Operación Área 4000 Barandas FRP | 5d | 2025-12-07 | 2025-12-11 | A1510 | 46d | 5d | SQM-ESTRUCTURA [94.83 h] | 48,132.39 | 38,8 | ML | BREF 1 Y 2 | 0 |  | 1.2.11 | 45 |
|  | 4 | **MONTAJE PLATAFORMA DE OPERACIÓN ÁREA 5000** |  | 2025-11-26 | 2025-12-19 |  |  |  |  |  |  |  |  |  |  |  |  |
| A1540 |  | Plataforma de Operación Área 5000 Estructura Mediana | 8d | 2025-11-26 | 2025-12-03 | A1480 SS, A1480 | 41d | 0d | SQM-ESTRUCTURA [473.25 h] | 240,212.23 | 3786 | Kg | ALTO BORO | 0 | SDC N°60; SDI N°72-75-77 | 1.2.13 | 3612,18 |
| A1530 |  | Plataforma de Operación Área 5000 Estructura Liviana | 4d | 2025-12-04 | 2025-12-07 | A1540 | 41d | 0d | SQM-ESTRUCTURA [189.01 h] | 95,939.03 | 1330,7 | kg | ALTO BORO | 0 |  | 1.2.12 | 1283,42 |
| A1550 |  | Plataforma de Operación Área 5000. Planchas | 3d | 2025-12-08 | 2025-12-10 | A1530 | 41d | 0d | SQM-ESTRUCTURA [8.38 h] | 4,254.42 | 59,01 | Kg | ALTO BORO | 0 | SDI N°79 | 1.2.15 | 38 |
| A1560 |  | Plataforma de Operación Área 5000. Grating T3232 | 6d | 2025-12-11 | 2025-12-16 | A1550 | 41d | 0d | SQM-ESTRUCTURA [99.17 h] | 50,337.81 | 64,7 | m2 | ALTO BORO | 0 |  | 1.2.16 | 151 |
| A1570 |  | Plataforma de Operación Área 5000. Barandas FRP Grado 3 | 3d | 2025-12-17 | 2025-12-19 | A1560, A1520, A1490 | 41d | 12d | SQM-ESTRUCTURA [44.73 h] | 22,701.62 | 18,3 | ML | ALTO BORO | 0 |  | 1.2.17 | 25 |
|  | 5 | **MONTAJE PARRÓN DESDE PATIO DE ESTANQUES A L5 LiOH** |  | 2025-11-17 | 2026-02-06 |  |  |  |  |  |  |  |  |  |  |  |  |
| A1600 |  | Estructura A36 Pesada: > 61 Kg /m Parrón desde Patio de Estanques hasta L5 LiOH. | 77d | 2025-11-17 | 2026-02-01 | A1450 | 29d | 0d | SQM-ESTRUCTURA [6541.74 h] | 3,320,457.93 | 66752,48 | kg | PTK A L5 | 0 | LDO N°14; SDI N°62-64-73; SUM S-07 F.Entrega:13-11-25 | 1.2.21 | 66752,48 |
| A1590 |  | Estructura A36 Mediana 31@60 Kg /m Parrón desde Patio de Estanques hasta L5 LiOH. | 77d | 2025-11-22 | 2026-02-06 | A1600 SS+5d | 29d | 0d | SQM-ESTRUCTURA [9325.65 h] | 4,733,512.16 | 74605,18 | kg | PTK A L5 | 0 | SDC N°77; SDI N67; SUM S-07 F.Entrega:13-11-25 | 1.2.20 | 74605,18 |
| A1580 |  | Estructura A36 Liviana 0@30 Kg /m Parrón desde Patio de Estanques hasta L5 LiOH. | 35d | 2025-11-27 | 2025-12-31 | A1590 SS+5d, A1570 FF | 29d | 14d | SQM-ESTRUCTURA [6372.6 h] | 3,234,602.95 | 44864,808 | kg | PTK A L5 | 0 | LDO N°39; SDI N°67; SUM S-07 F.Entrega:13-11-25 | 1.2.19 | 44864,808 |
|  | 6 | **MONTAJE PARRÓN DESDE L5 LiOH A L3 LiOH** |  |  |  |  |  |  |  |  |  |  |  |  |  |  |  |
|  | 4 | **OBRAS PIPING PATIO DE ESTANQUES** |  | 2025-08-08 | 2026-03-16 |  |  |  |  |  |  |  |  |  |  |  |  |
|  | 1 | **MONTAJE DE CAÑERÍAS ACERO INOXIDABLE PATIO DE ESTANQUES** |  | 2026-01-15 | 2026-03-07 |  |  |  |  |  |  |  |  |  |  |  |  |
| A1650 |  | Ø 6" - Cañería Acero Inoxidable | 10d | 2026-01-15 | 2026-01-24 | A1720, A1580 | 15d | 0d | SQM-PIPING [647.42 h] | 328,619.47 | 57,6 | m | PTK | 9,79999999999998 |  | 1.9.1.1 | 52,7833609926 |
| A1640 |  | Ø 8" - Cañería Acero Inoxidable | 7d | 2026-01-25 | 2026-01-31 | A1650 | 24d | 0d | SQM-PIPING [182.65 h] | 92,709.49 | 10 | m | PTK | 1,95 |  | 1.9.1.2 | 8,40234369975 |
| A1660 |  | Ø 4" - Cañería Acero Inoxidable | 7d | 2026-02-01 | 2026-02-07 | A1640 | 24d | 0d | SQM-PIPING [19.81 h] | 10,054.53 | 2,3 | m | PTK | 6,4 |  | 1.9.1.4 | 2,11712576985 |
| A1680 |  | Ø 2" - Cañería Acero Inoxidable | 14d | 2026-02-08 | 2026-02-21 | A1660, A1640 | 24d | 0d | SQM-PIPING [836.16 h] | 424,418.09 | 160,8 | m | PTK | 170,32 |  | 1.9.1.6 | 107,03946834105 |
| A1670 |  | Ø 3" - Cañería Acero Inoxidable | 7d | 2026-02-22 | 2026-02-28 | A1680 | 24d | 0d | SQM-PIPING [3.31 h] | 1,681.36 | 0,5 | m | PTK | 4,37 |  | 1.9.1.3 | 0,15566066355 |
| A1690 |  | Ø 1" - Cañería Acero Inoxidable | 7d | 2026-03-01 | 2026-03-07 | A1670, A1830 FF | 24d | 0d | SQM-PIPING [1.99 h] | 1,008.82 | 1 | m | PTK | 21,5 |  | 1.9.1.5 | 5 |

Notes:
- A1460: Corregir: Falta 1 viga V2021 // por packing son 5 pero por plano son 6 // eje K1 no tiene fundaciones
- A1600: Corregir: Faltan fundaciones y suministros
- A1590: Corregir: R FF
- A1580: Corregir: R FF

| ID | WBS | Activity | Duration | Start | Finish | Predecessors | Total float | Free float | Resources | Cost | Cantidad | Unidad | Área | Remanente | Impacto | Ítem EDP | Forecast | Corregir |
| --- | --- | --- | --- | --- | --- | --- | --- | --- | --- | --- | --- | --- | --- | --- | --- | --- | --- | --- |
|  | 2 | **MONTAJE DE CAÑERÍAS HDPE PN16 (P1) PATIO DE ESTANQUES** |  | 2025-08-08 | 2026-03-14 |  |  |  |  |  |  |  |  |  |  |  |  |  |
| A1720 |  | Ø 160 mm - Cañería HDPE, PE 100, PN10 | 160d | 2025-08-08 | 2026-01-14 | A1060 SS, A1120 SS+5d | 0.67d | 0d | SQM-PIPING [7927.22 h] | 4,023,699.6 | 6074,5 | m | PTK | 538,2 | LDO N°12-31; SDI N°21-44-66 | 1.9.2.8 | 7234,8980831274 |  |
| A1750 |  | Ø 63 mm - Cañería HDPE, PE 100, PN10 | 14d | 2025-08-08 | 2025-08-21 | A1720 SS | 0.67d | 0d | SQM-PIPING [266.04 h] | 135,034.72 | 189,8 | m | PTK | 536,3 |  | 1.9.2.5 | 189,8 |  |
| A1760 |  | Ø 50 mm - Cañería HDPE, PE 100, PN10 | 3d | 2025-08-22 | 2025-08-24 | A1750 | 0.67d | 0d | SQM-PIPING [0.52 h] | 264.76 | 0,3854218011 | m | PTK | 241,83854218011 |  | 1.9.2.1 | 0,3854218011 |  |
| A1770 |  | Ø 40 mm - Cañería HDPE, PE 100, PN10 | 4d | 2025-08-25 | 2025-08-28 | A1760 | 0.67d | 0d | SQM-PIPING [1.81 h] | 916.35 | 1,33399300125 | m | PTK | 6,200593701125 |  | 1.9.2.2 | 1,33399300125 | R FF |
| A1780 |  | Ø 32 mm - Cañería HDPE, PE 100, PN10 | 3d | 2025-08-29 | 2025-08-31 | A1770 | 0.67d | 0d | SQM-PIPING [1.03 h] | 520.62 | 0,75790213065 | m | PTK | 64,45474127839 |  | 1.9.2.3 | 0,75790213065 | R FF |
| A1700 |  | Ø 250 mm - Cañería HDPE, PE 100, PN10 | 14d | 2026-01-25 | 2026-02-07 | A1650 | 15d | 0d | SQM-PIPING [29.25 h] | 14,846.72 | 10 | m | PTK | 11,5 |  | 1.9.2.4 | 10 |  |
| A1710 |  | Ø 200 mm - Cañería HDPE, PE 100, PN10 | 7d | 2026-02-08 | 2026-02-14 | A1700 | 15d | 0d | SQM-PIPING [56.84 h] | 28,848.31 | 25,26 | m | PTK | 19,826 | SDI N°39 | 1.9.2.9 | 25,26 | R FF |
| A1730 |  | Ø 110 mm - Cañería HDPE, PE 100, PN10 | 14d | 2026-02-15 | 2026-02-28 | A1710 | 15d | 0d | SQM-PIPING [1730.21 h] | 878,218.94 | 1349,09 | m | PTK | 91,45 | SDI N°16-20-21-44-66 | 1.9.2.7 | 1355,09 |  |
| A1740 |  | Ø 90 mm - Cañería HDPE, PE 100, PN10 | 14d | 2026-03-01 | 2026-03-14 | A1730, A1860 FF, A1840 FF | 15d | 0d | SQM-PIPING [266.25 h] | 135,141.65 | 207,6 | m | PTK | 52,3 | LDO N°12; SDI N°4 | 1.9.2.6 | 1,10271699825 |  |
|  | 3 | **MONTAJE DE CAÑERÍAS HDPE PN16 (P7) PATIO DE ESTANQUES** |  | 2025-09-01 | 2025-09-14 |  |  |  |  |  |  |  |  |  |  |  |  |  |
| A1790 |  | Ø 90 mm - Cañería HDPE, PE 100, PN16 | 6d | 2025-09-01 | 2025-09-06 | A1110 SS, A1780 | 0.67d | 0d | SQM-PIPING [0.77 h] | 390.58 | 0,6 | m | PTK | 49,06 |  | 1.9.3.4 | 0,6 |  |
| A1800 |  | DN 75 mm - Cañería HDPE, PE 100, PN16 | 8d | 2025-09-07 | 2025-09-14 | A1790 | 197d | 182d | SQM-PIPING [1027.42 h] | 521,498.69 | 733 | m | PTK | 91,6 | SDI N°21-44-66 | 1.9.3.2 | 730 |  |
| A1810 |  | Ø 63 mm - Cañería HDPE, PE 100, PN16 | 3d | 2025-09-07 | 2025-09-09 | A1790 | 0.67d | 0d | SQM-PIPING [14.02 h] | 7,114.58 | 10 | m | PTK | 79,56875025902 |  | 1.9.3.3 | 14,1875002878 |  |
| A1820 |  | Ø 40 mm - Cañería HDPE, PE 100, PN16 | 3d | 2025-09-10 | 2025-09-12 | A1810, A1850 FF | 0.67d | 0d | SQM-PIPING [0.17 h] | 88.69 | 0,1291143 | m | PTK | 28,11620287 |  | 1.9.3.1 | 0,1291143 | R FF |
|  | 4 | **MONTAJE DE FITTING Y VÁLVULAS PATIO DE ESTANQUES** |  | 2025-08-08 | 2026-01-24 |  |  |  |  |  |  |  |  |  |  |  |  |  |
| A1850 |  | Montaje de Fitting HDPE (P7) GL | 8d | 2025-08-08 | 2025-08-15 | A1750 SS | 28.67d | 28d | SQM-PIPING [636.87 h] | 323,264.7 | 154 | gl |  |  |  |  |  |  |
| A1840 |  | Montaje de Fitting HDPE (P1) GL | 160d | 2025-08-12 | 2026-01-18 | A1720 SS+4d | 70d | 55d | SQM-PIPING [5314.89 h] | 2,697,732.37 | 1426 | gl |  |  |  |  |  |  |
| A1860 |  | Válvulas Patio de Estanques.(Global) | 160d | 2025-08-18 | 2026-01-24 | A1720 SS+10d | 64d | 49d | SQM-PIPING [1423.5 h] | 722,540.13 | 173 | gl |  |  |  |  |  |  |
| A1830 |  | Montaje de Fitting Acero Inoxidable GL | 10d | 2026-01-15 | 2026-01-24 | A1650 SS | 66d | 42d | SQM-PIPING [1442.73 h] | 732,298.72 | 270 | gl |  |  |  |  |  |  |
|  | 5 | **MONTAJE DE SOPORTACIÓN PIPING PATIO DE ESTANQUES** |  | 2025-09-10 | 2026-03-07 |  |  |  |  |  |  |  |  |  |  |  |  |  |
| A1880 |  | P1.3 x 37 un. - Pedestales para Tuberías Elevadas | 12d | 2025-09-10 | 2025-09-21 | A1720 SS, A1750, A1820 SS | 0.67d | 0d | SQM-PIPING [1178.1 h] | 597,980 | 4675 | kg | PTK | 0 | LDO N°44; SDI N°40 | 1.5.1 | 1201,5 |  |
| A1890 |  | P1.6 x 51 un. - Pedestal para Tuberías Elevadas. | 40d | 2025-09-10 | 2025-10-19 | A1880 SS | 5.67d | 0d | SQM-PIPING [487.44 h] | 247,416.62 | 1934,3 | kg |  | 1934,3 |  |  |  |  |
| A1910 |  | P4 x 40 un. - Pedestales para Tuberías Elevadas | 7d | 2025-09-10 | 2025-09-16 | A1890 SS | 5.67d | 5d | SQM-PIPING [109.82 h] | 55,743.25 | 435,8 | kg | PTK | 83,7999999999999 |  | 1.5.4 | 435,8 |  |
| A1920 |  | U3 x 5454 un. - Abrazadera para Tuberías Elevadas | 36d | 2026-01-31 | 2026-03-07 | A1910, A1690 FF | 24d |  | SQM-PIPING [253.07 h] | 128,451.91 | 1032,92785684306 | kg | PTK | 1299,93083015862 |  | 1.5.5 | 1644,93083015862 |  |

| ID | WBS | Activity | Duration | Start | Finish | Predecessors | Total float | Free float | Resources | Cost | Cantidad | Unidad | Área | Remanente | Impacto | Ítem EDP | Forecast |
| --- | --- | --- | --- | --- | --- | --- | --- | --- | --- | --- | --- | --- | --- | --- | --- | --- | --- |
|  | 6 | **TIE-IN DE LÍNEAS ASOCIADAS A PATIO DE ESTANQUES** |  | 2026-01-14 | 2026-03-16 |  |  |  |  |  |  |  |  |  |  |  |  |
| A1950 |  | Tie-In N° 4401 - Línea proyectada TAG: 160-BREF-5817-P1-4504 con existente TAG: 160-BB-5759-P5-3153 | 1d | 2026-01-14 | 2026-01-14 | A1720 FF | 74d | 0d | SQM-PIPING [15.75 h] | 7,994.39 | 1 | un | PTK | 0 | LDO N°29 | 1.10.3 | 1 |
| A1960 |  | Tie-In N° 4402 - Línea proyectada TAG: 160-BREF-5817-P1-4520 con equipo existente TAG: 5735-EST-5250 | 1d | 2026-01-14 | 2026-01-14 | A1950 SS | 74d | 0d | SQM-PIPING [15.75 h] | 7,994.39 | 1 | un | PTK | 0,1 | LDO N°15 | 1.10.4 | 1 |
| A1970 |  | Tie-In N° 4403 - Línea proyectada TAG: 160-BREF-5817-P1-4524 con equipo existente TAG: 5759-EST-001 | 1d | 2026-01-15 | 2026-01-15 | A1960 SS+1d | 74d | 0d | SQM-PIPING |  | 0 | un | PTK | 1 | LDO N°15 | 1.10.5 | 1 |
| A2020 |  | Tie-In N° 5401 - Línea existente TAG:160-LMB-5759-P5-3352 a proyectada TAG:160-SAB-5817-P1-5504 | 1d | 2026-01-16 | 2026-01-16 | A1970 | 74d | 0d | SQM-PIPING [15.75 h] | 7,994.39 | 1 | un | PTK | 0 | LDO N°29; SDI N°9 | 1.10.10 | 1 |
| A2030 |  | Tie-In N° 5402 - Línea proyectada TAG: 160-SAB-5817- P1-5503 con equipo existente TAG: 5735-EST-1800 | 1d | 2026-01-16 | 2026-01-16 | A2020 SS | 74d | 73.33d | SQM-PIPING |  | 0 | un | PTK | 1 |  | 1.10.11 | 1 |
| A1930 |  | Tie-In N° 1442 - Línea proyectada TAG: 110-W-5817-P1-1715 con existente TAG: 50-WW-5752-IA-7575 | 1d | 2026-03-15 | 2026-03-15 | A1720, A1740 | 15d | 0d | SQM-PIPING [10.5 h] | 5,329.59 | 1 | un | PTK | 0 | SDI N°9 | 1.10.1 | 1 |
| A1940 |  | Tie-In N° 1471 - Línea proyectada TAG: 75-PW-5817-P7-1910 con existente TAG: 63-PW-5759-P5-3900 | 1d | 2026-03-16 | 2026-03-16 | A1800, A1930 | 15d | 14.33d | SQM-PIPING [7 h] | 3,553.06 | 1 | un | PTK | 0 | LDO N°29; SDI N°9 | 1.10.2 | 1 |
|  | 5 | **OBRAS ELÉCTRICAS PATIO DE ESTANQUES** |  | 2025-09-22 | 2026-01-21 |  |  |  |  |  |  |  |  |  |  |  |  |
|  | 1 | **TENDIDO Y CONEXIONADO DE CABLES BAJA TENSIÓN PATIO DE ESTANQUES** |  | 2025-11-01 | 2025-12-05 |  |  |  |  |  |  |  |  |  |  |  |  |
| A2140 |  | Cable de Fuerza Multiconductor de Cobre Blando, 1x4C #6 AWG | 4d | 2025-11-01 | 2025-11-05 | A2300, A2360 | 0.67d | 0d | SQM-ELÉCTRICO [319.8 h] | 162,324.08 | 650 | m | PTK | 107,512218045113 |  | 2.1.7 | 475 |
| A2150 |  | Cable de Fuerza Multiconductor de Cobre Blando, 1x4C #4 AWG | 6d | 2025-11-01 | 2025-11-07 | A2140 SS | 116.67d | 0d | SQM-ELÉCTRICO [621.26 h] | 315,337.12 | 983 | m | PTK | 134,562666389351 |  | 2.1.8 | 592 |
| A2160 |  | Cable de Fuerza Multiconductor de Cobre Blando, 1x4C #2 AWG | 3d | 2025-11-07 | 2025-11-10 | A2150 | 116.67d | 0d | SQM-ELÉCTRICO [384.26 h] | 195,040.66 | 608 | m | PTK | 81 |  | 2.1.9 | 371 |
| A2170 |  | Cable de Fuerza Multiconductor de Cobre Blando, 1x3C #6 AWG | 14d | 2025-11-07 | 2025-11-21 | A2160 SS | 116.67d | 0d | SQM-ELÉCTRICO [227.3 h] | 115,374.96 | 462 | m | PTK | 36,5999999999999 | SDI N°53 | 2.1.10 | 795 |
| A2180 |  | Cable de Fuerza Multiconductor de Cobre Blando, 1x5C #14 AWG | 28d | 2025-11-07 | 2025-12-05 | A2170 SS | 116.67d | 116d | SQM-ELÉCTRICO [940.7 h] | 477,482.54 | 1912 | m | PTK | 91,6477111426545 |  | 2.1.11 | 1393 |
|  | 2 | **MONTAJE DE CANALIZACIÓN Y FERRETERÍA PATIO DE ESTANQUES** |  | 2025-10-19 | 2025-11-12 |  |  |  |  |  |  |  |  |  |  |  |  |
| A2230 |  | Conduit de Acero Galvanizado 3"Ø, tipo Conduit ANSI C80.1 | 5d | 2025-10-19 | 2025-10-23 | A2360, A2400 | 0.67d | 0d | SQM-ELÉCTRICO [121.8 h] | 61,823.24 | 116 | m | PTK | 0 |  | 2.1.17 | 66 |
| A2240 |  | Conduit Flexible Metálico con Cubierta PVC 3" Ø Trabajo Pesado | 2d | 2025-10-19 | 2025-10-20 | A2230 SS | 0.67d | 0d | SQM-ELÉCTRICO [19.95 h] | 10,126.22 | 19 | m | PTK | 0,15 |  | 2.1.18 | 8 |
| A2250 |  | Instalación de Copla para Cañería de Acero Galvanizado 3"Ø. Incluye Copla. | 3.33d | 2025-10-21 | 2025-10-24 | A2240 | 0.67d | 0d | SQM-ELÉCTRICO [8.4 h] | 4,263.67 | 40 |  |  |  |  |  |  |
| A2260 |  | Instalación de Conexión Terminal para Cañería de Acero Galvanizado 3"Ø. | 3.33d | 2025-10-24 | 2025-10-27 | A2250 | 0.67d | 0d | SQM-ELÉCTRICO [1.68 h] | 852.73 | 8 |  |  |  |  |  |  |
| A2300 |  | Conduit de Acero Galvanizado, 2"Ø, tipo Conduit ANSI C80.1.Incluye Copla | 8d | 2025-10-24 | 2025-11-01 | A2260 SS | 0.67d | 0d | SQM-ELÉCTRICO [611.1 h] | 310,182.14 | 582 | m | PTK | 0 |  | 2.1.24 | 572 |
| A2310 |  | Conduit Flexible Metálico con Cubierta PVC 2" Ø Trabajo Pesado | 8d | 2025-11-01 | 2025-11-09 | A2300 | 50.67d | 0d | SQM-ELÉCTRICO [85.05 h] | 43,169.68 | 81 | m | PTK | 0,469523809523814 |  | 2.1.25 | 188 |
| A2330 |  | Conduit de Acero Galvanizado, 1 1/2"Ø, tipo Conduit ANSI C80.1. Incluye Copla | 8d | 2025-11-01 | 2025-11-09 | A2300 | 1.33d | 0d | SQM-ELÉCTRICO [283.5 h] | 143,898.93 | 450 | m | PTK | 68,4 |  | 2.1.27 | 148 |
| A2340 |  | Conduit Flexible Metálico con Cubierta PVC 1 1/2" Ø Trabajo Pesado. | 3.33d | 2025-11-01 | 2025-11-04 | A2330 SS | 1.33d | 0.67d | SQM-ELÉCTRICO |  | 0 | m |  | 0,1 |  |  |  |
| A2320 |  | Conexión Terminal para Cañería de Acero Galvanizado 2"Ø | 3d | 2025-11-09 | 2025-11-12 | A2310 | 50.67d | 0d | SQM-ELÉCTRICO [7.35 h] | 3,730.71 | 35 | c/u | PTK | 0 |  | 2.1.26 | 75 |

| ID | WBS | Activity | Duration | Start | Finish | Predecessors | Total float | Free float | Resources | Cost | Cantidad | Unidad | Área | Remanente | Impacto | Ítem EDP | Forecast | Corregir |
| --- | --- | --- | --- | --- | --- | --- | --- | --- | --- | --- | --- | --- | --- | --- | --- | --- | --- | --- |
|  | 3 | **MONTAJE DE ESCALERILLAS Y PIEZAS ESPECIALES PATIO DE ESTANQUES** |  | 2025-09-22 | 2025-10-18 |  |  |  |  |  |  |  |  |  |  |  |  |  |
| A2360 |  | EPC Porta Conductores 600x100mm e:2 mm, tiras 3m. Incluir tapa dos aguas, eclisas y pernos de Unión. | 13d | 2025-09-22 | 2025-10-04 | A1880, A1910 | 0.67d | 0d | SQM-ELÉCTRICO [1848 h] | 938,007.84 | 330 | m | PTK | 36 | LDO N°28; SDI N°26-45 | 2.2.1 | 220 |  |
| A2370 |  | EPC Curva Horizontal de 90°, 600x100mm e:2mm. Incluir tapa dos aguas, eclisas y pernos de Unión. | 9d | 2025-09-28 | 2025-10-06 | A2360 FF+2d | 0.67d | 0d | SQM-ELÉCTRICO [11.2 h] | 5,684.9 | 2 | c/u | PTK | 1,85 |  | 2.2.2 | 6 | R FF |
| A2380 |  | EPC Curva Vertical Interior de 90°, 600x100mm e:2mm. Incluir tapa dos aguas, eclisas y pernos de Unión. | 4d | 2025-10-07 | 2025-10-10 | A2370 SS, A2370 | 0.67d | 0d | SQM-ELÉCTRICO [5.6 h] | 2,842.45 | 1 | c/u | PTK | 1,7 |  | 2.2.3 | 3 |  |
| A2390 |  | EPC Curva Vertical Exterior de 90°, 600x100mm e:2mm. Incluir tapa dos aguas, eclisas y pernos de Unión. | 4d | 2025-10-11 | 2025-10-14 | A2380 | 0.67d | 0d | SQM-ELÉCTRICO |  | 0 | c/u | PTK | 7,2 |  | 2.2.4 | 10 |  |
| A2400 |  | EPC DerivaciØn tipo TEE, 600x100mm e:2mm. Incluir tapa dos aguas, eclisas y pernos de Unión. | 8d | 2025-10-11 | 2025-10-18 | A2390 SS | 0.67d | 0d | SQM-ELÉCTRICO [67.2 h] | 34,109.38 | 12 | c/u | PTK | 4,3 |  | 2.2.5 | 7 |  |
|  | 4 | **MONTAJE DE EQUIPOS ELÉCTRICOS PATIO DE ESTANQUES** |  | 2025-11-12 | 2025-11-22 |  |  |  |  |  |  |  |  |  |  |  |  |  |
| A2440 |  | Estación Local Marca Allen Bradley o Equivalente, para Trabajo Pesado, NEMA 4X | 10d | 2025-11-12 | 2025-11-22 | A2320, A2230 | 50.67d | 50d | SQM-ELÉCTRICO [616 h] | 312,669.28 | 22 | c/u | PTK | 0,333333333333332 | LDO N°45; SDC N°67 | 2.5.1 | 19 |  |
|  | 5 | **MONTAJE DE SISTEMA DE ILUMINACIÓN PATIO DE ESTANQUES** |  | 2025-11-05 | 2025-12-22 |  |  |  |  |  |  |  |  |  |  |  |  |  |
| A2500 |  | Poste Recto Acero Galvanizado 3" Ø 4m | 7d | 2025-11-05 | 2025-11-12 | A2510 SS | 0.67d | 0d | SQM-ELÉCTRICO [126 h] | 63,955.08 | 12 | c/u | PTK | 7,2 |  | 2.6.4 | 18 |  |
| A2510 |  | Poste Recto Acero Galvanizado 3" Ø 2,5m | 2d | 2025-11-05 | 2025-11-07 | A2140, A2340 | 0.67d | 0d | SQM-ELÉCTRICO |  | 0 | c/u | PTK | 0 |  | 2.6.5 | 6 |  |
| A2490 |  | Postes Abatible Swivelpole Acero Galvanizado 1 1/2" Ø x 4m | 10d | 2025-11-12 | 2025-11-22 | A2500 | 0.67d | 0d | SQM-ELÉCTRICO [319.2 h] | 162,019.54 | 38 | c/u | PTK | 0 | LDO N°43; SDC N°43; SDI N°52 | 2.6.3 | 34 |  |
| A2480 |  | Proyector de Área LED 200W - 220VAC - 50Hz, IP65, 2.200ØK, 12.800 Lm | 10d | 2025-11-22 | 2025-12-02 | A2490 | 0.67d | 0d | SQM-ELÉCTRICO [882 h] | 447,685.56 | 60 | c/u | PTK | 9 |  | 2.6.2 | 34 |  |
| A2470 |  | Luminaria LED Tipo Campana Industrial Según DS N°1 35W - 220VAC - 50Hz, IP65 o Nema4X, 2.200ØK, 432,0 Lm | 11d | 2025-12-02 | 2025-12-13 | A2480 | 0.67d | 0d | SQM-ELÉCTRICO [645.8 h] | 327,795.16 | 34 | m | PTK | 0 |  | 2.6.1 | 34 |  |
| A2520 |  | Caja de Conexión Hermética 100x100x60 mm. Nema 4X con 6 Bornes de 6mm. | 5d | 2025-12-13 | 2025-12-18 | A2470 | 0.67d | 0d | SQM-ELÉCTRICO [308.57 h] | 156,624.69 | 60 | m | PTK | 0 |  | 2.6.6 | 28 |  |
| A2530 |  | Instalación y Conexión de !quipos de Iluminación. | 4d | 2025-12-18 | 2025-12-22 | A2520 | 0.67d | 0d | SQM-ELÉCTRICO [168 h] | 85,273.44 | 1 | gl | PTK | 0,02 |  | 2.6.7 | 1 |  |
|  | 6 | **MONTAJE SISTEMA PUESTA A TIERRA PATIO DE ESTANQUES** |  | 2025-12-22 | 2026-01-21 |  |  |  |  |  |  |  |  |  |  |  |  |  |
| A2550 |  | Cable de Cobre Desnudo Temple Blando, N° 2/0 AWG, 19 Hebras. | 20d | 2025-12-22 | 2026-01-11 | A2400, A2530 | 0.67d | 0d | SQM-ELÉCTRICO [710.24 h] | 360,503.62 | 920 | m | PTK | 55 | LDO N°47; SDI N°36 | 2.8.2 | 1400 |  |
| A2650 |  | Caja de Barra Puesta a Tierra 500x400x200mm, de Poliéster con Tapa. | 10d | 2026-01-11 | 2026-01-21 | A2440, A2550 | 0.67d | 0d | SQM-ELÉCTRICO [210 h] | 106,591.8 | 5 | c/u | PTK | 3,1 |  | 2.8.12 | 10 |  |
|  | 6 | **OBRAS DE INSTRUMENTACIÓN PATIO DE ESTANQUES** |  | 2026-01-21 | 2026-03-31 |  |  |  |  |  |  |  |  |  |  |  |  |  |
|  | 1 | **TENDIDO Y CONEXIONADO DE CABLES DE COMUNICACIÓN PATIO DE ESTANQUES** |  | 2026-02-23 | 2026-03-03 |  |  |  |  |  |  |  |  |  |  |  |  |  |
| A2660 |  | Cable Fibra Óptica Multimodo Exterior 12 fibras OM3 LSZH | 8d | 2026-02-23 | 2026-03-03 | A2800 | 0.67d | 0d | SQM-INSTRUMENTACIÓN [478 h] |  | 1000 | m | PTK | 146 |  | 3.1.1 | 730 |  |
|  | 2 | **TENDIDO Y CONEXIONADO DE CABLES DE INSTRUMENTACIÓN PATIO DE ESTANQUES** |  | 2026-03-03 | 2026-03-17 |  |  |  |  |  |  |  |  |  |  |  |  |  |
| A2680 |  | Cable de Instrumentación (Señales Análogas), 1x1 par #16 AWG Apantallado | 10d | 2026-03-03 | 2026-03-13 | A2660 | 0.67d | 0d | SQM-INSTRUMENTACIÓN [478.04 h] |  | 1615 | m | PTK | 283 |  | 3.2.1 | 1108 |  |
| A2690 |  | Cable de Control Multiconductor de Cobre Blando, 1x3c #14 AWG, Clase 1,0 kV | 4d | 2026-03-09 | 2026-03-13 | A2680 FF | 0.67d | 0d | SQM-INSTRUMENTACIÓN [106.26 h] |  | 359 | m | PTK | 73 |  | 3.2.2 | 275 | R FF |
| A2700 |  | Cable de Control Multiconductor de Cobre Blando, 1x3c #14 AWG, Clase 0,3 kV | 4d | 2026-03-13 | 2026-03-17 | A2690 | 0.67d | 0d | SQM-INSTRUMENTACIÓN [177.9 h] |  | 601 | m | PTK | 219 |  | 3.2.3 | 389 |  |

| ID | WBS | Activity | Duration | Start | Finish | Predecessors | Total float | Free float | Resources | Cantidad | Unidad | Área | Remanente | Corregir | Ítem EDP | Forecast |
| --- | --- | --- | --- | --- | --- | --- | --- | --- | --- | --- | --- | --- | --- | --- | --- | --- |
|  | 3 | **TENDIDO Y CONEXIONADO DE CABLES DE ALIMENTACIÓN 120V PATIO DE ESTANQUES** |  | 2026-03-08 | 2026-03-17 |  |  |  |  |  |  |  |  |  |  |  |
| A2710 |  | Cable de Control Multiconductor de Cobre Blando, 1x3c #12 AWG, Clase 1,0 kV | 9d | 2026-03-08 | 2026-03-17 | A2700 FF, A2650 FF | 0.67d | 0d | SQM-INSTRUMENTACIÓN [263.44 h] | 890 | m | PTK | 103,9 | R FF | 3.3.1 | 607 |
|  | 4 | **MONTAJE DE CANALIZACIÒN Y FERRETERÍA PATIO DE ESTANQUES** |  | 2026-01-21 | 2026-02-23 |  |  |  |  |  |  |  |  |  |  |  |
| A2730 |  | EPC porta conductores de acero galvanizado 600x100x2,5mm. Incluye eclipsas, pernos y tapa dos aguas. | 15d | 2026-01-21 | 2026-02-05 | A2360, A2400, A2650 | 0.67d | 0d | SQM-INSTRUMENTACIÓN | 0 | m | PTK | 78 |  | 3.4.1 | 200 |
| A2740 |  | EPC Curva Tipo "T", 600x100x2,5mm. Incluir tapa dos aguas, eclisas y pernos de Unión. | 3d | 2026-02-05 | 2026-02-08 | A2730 | 0.67d | 0d | SQM-INSTRUMENTACIÓN | 0 | un | PTK | 4 |  | 3.4.2 | 8 |
| A2810 |  | Riel unistrut 42x42x2,5 mm, acero galvanizado, tiras de 3 metros | 4d | 2026-02-05 | 2026-02-09 | A2730 | 49.67d | 49d | SQM-INSTRUMENTACIÓN [120 h] | 100 | un | PTK | 8 |  | 3.12.2 | 100 |
| A2760 |  | Conduit de acero galvanizado 1"Ø, tipo conduit ANSI C80.1 | 2d | 2026-02-08 | 2026-02-10 | A2740 | 0.67d | 0d | SQM-INSTRUMENTACIÓN | 0 | un | PTK | 31,5 |  | 3.4.4 | 35 |
| A2770 |  | Conduit de acero galvanizado 1"Ø, tipo conduit ANSI C80.1 | 5d | 2026-02-10 | 2026-02-15 | A2760 | 0.67d | 0d | SQM-INSTRUMENTACIÓN [343.35 h] | 545 | m | PTK | 180,4 |  | 3.4.5 | 513 |
| A2790 |  | Conduit flexible Metálico con cubierta PVC 1/2" Ø | 4d | 2026-02-15 | 2026-02-19 | A2770 | 0.67d | 0d | SQM-INSTRUMENTACIÓN [52.92 h] | 84 | m | PTK | 25,6 |  | 3.4.7 | 72 |
| A2800 |  | Caja metØlica de Distribución 100x100x65mm | 4d | 2026-02-19 | 2026-02-23 | A2790 | 0.67d | 0d | SQM-INSTRUMENTACIÓN [288 h] | 30 | un | PTK | 3 |  | 3.12.1 | 30 |
|  | 5 | **ARMADO Y MONTAJE DE EQUIPOS E INSTRUMENTOS PATIO DE ESTANQUES** |  | 2026-03-17 | 2026-03-19 |  |  |  |  |  |  |  |  |  |  |  |
| A2840 |  | Fuente Ininterrumpida de Poder Tag N°5817-UPS-1202. Conexión de UPS a TPM de planta. | 2d | 2026-03-17 | 2026-03-19 | A2660, A2530, A2710 | 0.67d | 0d | SQM-INSTRUMENTACIÓN | 0 | un | PTK | 1 |  | 3.5.3 | 0 |
|  | 6 | **MONTAJE, CONEXIONADO Y PRUEBAS DE INSTRUMENTOS - SENSORES Y TRANSMISORES DE FLUJO PATIO ESTANQUES** |  | 2026-03-19 | 2026-03-22 |  |  |  |  |  |  |  |  |  |  |  |
| A2850 |  | Tubo sensor de Flujo Magnético y Transmisor Remoto Tag FE/FIT-1301 | 1d | 2026-03-19 | 2026-03-20 | A2840 | 0.67d | 0d | SQM-INSTRUMENTACIÓN [31.5 h] | 1 | un | PTK | 0,1 |  | 3.6.1 | 1 |
| A2860 |  | Tubo sensor de Flujo Magnético y Transmisor Remoto Tag FE/FIT-1306 | 1d | 2026-03-19 | 2026-03-20 | A2850 SS | 0.67d | 0d | SQM-INSTRUMENTACIÓN [31.5 h] | 1 | un | PTK | 0,1 |  | 3.6.2 | 1 |
| A2870 |  | Tubo sensor de Flujo Magnético y Transmisor Remoto Tag FE/FIT-1307 | 1d | 2026-03-19 | 2026-03-20 | A2860 SS | 0.67d | 0d | SQM-INSTRUMENTACIÓN [31.5 h] | 1 | un | PTK | 0,0500000000000001 |  | 3.6.3 | 1 |
| A2890 |  | Tubo sensor de Flujo Magnético y Transmisor Remoto Tag FE/FIT-1207 | 1d | 2026-03-20 | 2026-03-21 | A2870 | 0.67d | 0d | SQM-INSTRUMENTACIÓN [31.5 h] | 1 | un | PTK | 0,0500000000000001 |  | 3.6.5 | 1 |
| A2900 |  | Tubo sensor de Flujo Magnético y Transmisor Remoto Tag FE/FIT-4102 | 1d | 2026-03-21 | 2026-03-22 | A2890, A2870 | 0.67d | 0d | SQM-INSTRUMENTACIÓN [31.5 h] | 1 | un | PTK | 0,45 |  | 3.6.6 | 1 |
| A2910 |  | Tubo sensor de Flujo Magnético y Transmisor Remoto Tag FE/FIT-4103 | 1d | 2026-03-21 | 2026-03-22 | A2900 SS | 0.67d | 0d | SQM-INSTRUMENTACIÓN [31.5 h] | 1 | un | PTK | 0,45 |  | 3.6.7 | 1 |
| A2920 |  | Tubo sensor de Flujo Magnético y Transmisor Remoto Tag FE/FIT-4104 | 1d | 2026-03-21 | 2026-03-22 | A2910 SS | 0.67d | 0d | SQM-INSTRUMENTACIÓN [31.5 h] | 1 | un | PTK | 0,1 |  | 3.6.8 | 1 |
| A2930 |  | Tubo sensor de Flujo Magnético y Transmisor Remoto Tag FE/FIT-5102 | 1d | 2026-03-21 | 2026-03-22 | A2920 SS | 0.67d | 0d | SQM-INSTRUMENTACIÓN [31.5 h] | 1 | un | PTK | 0,8 |  | 3.6.9 | 1 |
|  | 7 | **MONTAJE, PRUEBAS Y CONEXIONADO DE INSTRUMENTOS - TRANSMISORES DE NIVEL PATIO ESTANQUES** |  | 2026-03-22 | 2026-03-24 |  |  |  |  |  |  |  |  |  |  |  |
| A2940 |  | Transmisor de Nivel Tag LT-1301 | 1d | 2026-03-22 | 2026-03-23 | A2930 | 0.67d | 0d | SQM-INSTRUMENTACIÓN [19.35 h] | 1 | un | PTK | 0,1 |  | 3.7.1 | 1 |
| A2950 |  | Transmisor de Nivel Tag LT-1201 | 1d | 2026-03-22 | 2026-03-23 | A2940 SS | 0.67d | 0d | SQM-INSTRUMENTACIÓN [19.35 h] | 1 | un | PTK | 0,1 |  | 3.7.2 | 1 |
| A2960 |  | Transmisor de Nivel Tag LT-4101 | 1d | 2026-03-22 | 2026-03-23 | A2950 SS | 0.67d | 0d | SQM-INSTRUMENTACIÓN [19.35 h] | 1 | un | PTK | 0,1 |  | 3.7.3 | 1 |
| A2970 |  | Transmisor de Nivel Tag LT-4102 | 1d | 2026-03-22 | 2026-03-23 | A2960 SS | 0.67d | 0d | SQM-INSTRUMENTACIÓN [19.35 h] | 1 | un | PTK | 0,1 |  | 3.7.4 | 1 |
| A2980 |  | Transmisor de Nivel Tag LT-5101 | 1d | 2026-03-23 | 2026-03-24 | A2970 | 0.67d | 0d | SQM-INSTRUMENTACIÓN [19.35 h] | 1 | un | PTK | 0,1 |  | 3.7.5 | 1 |

| ID | WBS | Activity | Duration | Start | Finish | Predecessors | Total float | Free float | Resources | Cantidad | Unidad | Área | Remanente | Ítem EDP | Forecast |
| --- | --- | --- | --- | --- | --- | --- | --- | --- | --- | --- | --- | --- | --- | --- | --- |
|  | 8 | **MONTAJE, PRUEBAS Y CONEXIONADO DE INSTRUMENTOS - INTERRUPTOR DE PRESIÓN PATIO ESTANQUES** |  | 2026-03-23 | 2026-03-24 |  |  |  |  |  |  |  |  |  |  |
| A2990 |  | Interruptor de Nivel Tag PSL-1301 | 1d | 2026-03-23 | 2026-03-24 | A2980 SS | 0.67d | 0d | SQM-INSTRUMENTACIÓN [19.35 h] | 1 | un | PTK | 0,8 | 3.8.1 | 1 |
| A3000 |  | Interruptor de Nivel Tag PSL-1302 | 1d | 2026-03-23 | 2026-03-24 | A2990 SS | 0.67d | 0d | SQM-INSTRUMENTACIÓN [19.35 h] | 1 | un | PTK | 0,8 | 3.8.2 | 1 |
|  | 9 | **MONTAJE, PRUEBAS Y CONEXIONADO DE INSTRUMENTOS - INTERRUPTOR DE NIVEL PATIO ESTANQUES** |  | 2026-03-23 | 2026-03-25 |  |  |  |  |  |  |  |  |  |  |
| A3010 |  | Interruptor de Nivel Tag LCHL-1201 | 1d | 2026-03-23 | 2026-03-24 | A3000 SS | 0.67d | 0d | SQM-INSTRUMENTACIÓN [19.35 h] | 1 | un | PTK | 0,8 | 3.9.1 | 1 |
| A3020 |  | Interruptor de Nivel Tag LCHL-4101 | 1d | 2026-03-24 | 2026-03-25 | A3010 | 0.67d | 0d | SQM-INSTRUMENTACIÓN [19.35 h] | 1 | un | PTK | 0,45 | 3.9.2 | 1 |
| A3030 |  | Interruptor de Nivel Tag LCHL-5101 | 1d | 2026-03-24 | 2026-03-25 | A3020 SS | 0.67d | 0d | SQM-INSTRUMENTACIÓN [19.35 h] | 1 | un | PTK | 0,45 | 3.9.3 | 1 |
|  | 10 | **MONTAJE, PRUEBAS Y CONEXIONADO DE INSTRUMENTOS - INTERRUPTOR DE FLUJO PATIO ESTANQUES** |  | 2026-03-24 | 2026-03-26 |  |  |  |  |  |  |  |  |  |  |
| A3040 |  | Interruptor de Nivel Tag FS-4101 | 1d | 2026-03-24 | 2026-03-25 | A3030 SS | 0.67d | 0d | SQM-INSTRUMENTACIÓN [19.35 h] | 1 | un | PTK | 0,8 | 3.10.1 | 1 |
| A3050 |  | Interruptor de Nivel Tag FS-4102 | 1d | 2026-03-24 | 2026-03-25 | A3040 SS | 0.67d | 0d | SQM-INSTRUMENTACIÓN [19.35 h] | 1 | un | PTK | 0,8 | 3.10.2 | 1 |
| A3060 |  | Interruptor de Nivel Tag FS-5101 | 1d | 2026-03-25 | 2026-03-26 | A3050 | 0.67d | 0d | SQM-INSTRUMENTACIÓN [19.35 h] | 1 | un | PTK | 0,8 | 3.10.3 | 1 |
| A3070 |  | Interruptor de Nivel Tag FS-8101 | 1d | 2026-03-25 | 2026-03-26 | A3060 SS | 0.67d | 0d | SQM-INSTRUMENTACIÓN [19.35 h] | 1 | un | PTK | 0,9 | 3.10.4 | 1 |
|  | 11 | **MONTAJE DE INSTRUMENTOS - INDICADORES DE PRESIÓN (MANÓMETROS) PATIO ESTANQUES** |  | 2026-03-25 | 2026-03-31 |  |  |  |  |  |  |  |  |  |  |
| A3080 |  | Indicador de Presión (Manómetro) Tag PI-1201 | 1d | 2026-03-25 | 2026-03-26 | A3070 SS | 0.67d | 0d | SQM-INSTRUMENTACIÓN [2.5 h] | 1 | un | PTK | 0,8 | 3.11.1 | 1 |
| A3090 |  | Indicador de Presión (Manómetro) Tag PI-1202 | 1d | 2026-03-25 | 2026-03-26 | A3080 SS | 0.67d | 0d | SQM-INSTRUMENTACIÓN [2.5 h] | 1 | un | PTK | 0,8 | 3.11.2 | 1 |
| A3100 |  | Indicador de Presión (Manómetro) Tag PI-1203 | 1d | 2026-03-26 | 2026-03-27 | A3090 | 0.67d | 0d | SQM-INSTRUMENTACIÓN [2.5 h] | 1 | un | PTK | 0,8 | 3.11.3 | 1 |
| A3130 |  | Indicador de Presión (Manómetro) Tag PI-1301 | 1d | 2026-03-27 | 2026-03-28 | A3100 | 0.67d | 0d | SQM-INSTRUMENTACIÓN [2.5 h] | 1 | un | PTK | 0,8 | 3.11.6 | 1 |
| A3140 |  | Indicador de Presión (Manómetro) Tag PI-1302 | 1d | 2026-03-28 | 2026-03-29 | A3130, A3100 | 0.67d | 0d | SQM-INSTRUMENTACIÓN [2.5 h] | 1 | un | PTK | 0,8 | 3.11.7 | 1 |
| A3150 |  | Indicador de Presión (Manómetro) Tag PI-1303 | 1d | 2026-03-28 | 2026-03-29 | A3140 SS | 0.67d | 0d | SQM-INSTRUMENTACIÓN [2.5 h] | 1 | un | PTK | 0,8 | 3.11.8 | 1 |
| A3160 |  | Indicador de Presión (Manómetro) Tag PI-1304 | 1d | 2026-03-28 | 2026-03-29 | A3150 SS | 0.67d | 0d | SQM-INSTRUMENTACIÓN [2.5 h] | 1 | un | PTK | 0,8 | 3.11.9 | 1 |
| A3170 |  | Indicador de Presión (Manómetro) Tag PI-1305 | 1d | 2026-03-28 | 2026-03-29 | A3160 SS | 0.67d | 0d | SQM-INSTRUMENTACIÓN [2.5 h] | 1 | un | PTK | 0,8 | 3.11.10 | 1 |
| A3180 |  | Indicador de Presión (Manómetro) Tag PI-4103 | 1d | 2026-03-29 | 2026-03-30 | A3170 | 0.67d | 0d | SQM-INSTRUMENTACIÓN [2.5 h] | 1 | un | PTK | 0,8 | 3.11.11 | 1 |
| A3190 |  | Indicador de Presión (Manómetro) Tag PI-4104 | 1d | 2026-03-29 | 2026-03-30 | A3180 SS | 0.67d | 0d | SQM-INSTRUMENTACIÓN [2.5 h] | 1 | un | PTK | 0,8 | 3.11.12 | 1 |
| A3200 |  | Indicador de Presión (Manómetro) Tag PI-4105 | 1d | 2026-03-29 | 2026-03-30 | A3190 SS | 0.67d | 0d | SQM-INSTRUMENTACIÓN [2.5 h] | 1 | un | PTK | 0,8 | 3.11.13 | 1 |
| A3210 |  | Indicador de Presión (Manómetro) Tag PI-4106 | 1d | 2026-03-29 | 2026-03-30 | A3200 SS | 0.67d | 0d | SQM-INSTRUMENTACIÓN [2.5 h] | 1 | un | PTK | 0,8 | 3.11.14 | 1 |
| A3220 |  | Indicador de Presión (Manómetro) Tag PI-4107 | 1d | 2026-03-30 | 2026-03-31 | A3210 | 0.67d | 0d | SQM-INSTRUMENTACIÓN [2.5 h] | 1 | un | PTK | 0,8 | 3.11.15 | 1 |
| A3230 |  | Indicador de Presión (Manómetro) Tag PI-4108 | 1d | 2026-03-30 | 2026-03-31 | A3220 SS | 0.67d | 0d | SQM-INSTRUMENTACIÓN [2.5 h] | 1 | un | PTK | 0,8 | 3.11.16 | 1 |
| A3240 |  | Indicador de Presión (Manómetro) Tag PI-5103 | 1d | 2026-03-30 | 2026-03-31 | A3230 SS | 0.67d | 0d | SQM-INSTRUMENTACIÓN [2.5 h] | 1 | un | PTK | 0,8 | 3.11.17 | 1 |
| A3250 |  | Indicador de Presión (Manómetro) Tag PI-5104 | 1d | 2026-03-30 | 2026-03-31 | A3240 SS, A2810 | 0.67d | 0d | SQM-INSTRUMENTACIÓN [2.5 h] | 1 | un | PTK | 0,8 | 3.11.18 | 1 |

| ID | WBS | Activity | Duration | Start | Finish | Predecessors | Total float | Free float | Resources | Cost | Cantidad | Unidad | Área | Remanente | Impacto | Ítem EDP | Forecast | Corregir |
| --- | --- | --- | --- | --- | --- | --- | --- | --- | --- | --- | --- | --- | --- | --- | --- | --- | --- | --- |
|  | 2 | **CONTRATO ADDENDUM 01 - OOCC Y MEM MISCELÁNEOS** |  | 2025-09-11 | 2026-03-31 |  |  |  |  |  |  |  |  |  |  |  |  |  |
|  | 1 | **HABILITACIÓN DATA CENTER ZONA NORTE - ÁREA 5801** |  | 2025-09-11 | 2025-12-07 |  |  |  |  |  |  |  |  |  |  |  |  |  |
|  | 1 | **ÁREA 5801 - SECTOR DATA CENTER 5801** |  | 2025-09-11 | 2025-12-07 |  |  |  |  |  |  |  |  |  |  |  |  |  |
|  | 1 | **OBRAS CIVILES DATA CENTER 5801** |  | 2025-10-06 | 2025-11-02 |  |  |  |  |  |  |  |  |  |  |  |  |  |
|  | 1 | **SUMINISTRO Y MONTAJE ASOCIADO A CERCO PERIMETRAL DATA CENTER 5801** |  | 2025-10-06 | 2025-11-02 |  |  |  |  |  |  |  |  |  |  |  |  |  |
| A3340 |  | Excavación para Fundaciones Cerco Perimetral Data Center | 2d | 2025-10-06 | 2025-10-07 | A3460 | 42d | 0d | SQM-OBRAS CIVILES [42.21 h] | 21,424.95 | 16,08 | m3 | 5801-DC | 0 | SDC N°71; SDI N°7-8 | 1.1.1.1 | 16,871 |  |
| A3350 |  | Emplantillado (G-05) para Fundaciones Cerco Perimetral Data Center | 1d | 2025-10-08 | 2025-10-08 | A3340 | 42d | 0d | SQM-OBRAS CIVILES [7.73 h] | 3,922.58 | 0,69 | m3 | 5801-DC | 0 |  | 1.1.1.2 | 0,9704396 |  |
| A3370 |  | Armadura de Refuerzo para Fundaciones Cerco Perimetral Data Center | 4d | 2025-10-09 | 2025-10-12 | A3350 | 42d | 0d | SQM-OBRAS CIVILES [211.59 h] | 107,399.54 | 1382,95 | kg | 5801-DC | 0 |  | 1.1.1.4 | 1383 |  |
| A3360 |  | Hormigonado (G-25) para Fundaciones Cerco Perimetral Data Center | 2d | 2025-10-13 | 2025-10-14 | A3370 | 42d | 0d | SQM-OBRAS CIVILES [186.48 h] | 94,653.52 | 15,54 | m3 | 5801-DC | 0 |  | 1.1.1.3 | 8 |  |
| A3390 |  | Pilar prefabricado PP7530 Cerco Perimetral Data Center | 7d | 2025-10-15 | 2025-10-21 | A3360 | 42d | 0d | SQM-OBRAS CIVILES [723.25 h] | 367,107.23 | 44 | un | 5801-DC | 0 |  | 1.1.1.6 | 44 |  |
| A3380 |  | Cierro Fijo ACMAFOR Data Center | 3d | 2025-10-22 | 2025-10-24 | A3390 | 42d | 0d | SQM-OBRAS CIVILES [305.11 h] | 154,869.51 | 209,52 | m2 | 5801-DC | 0 |  | 1.1.1.5 | 209 |  |
| A3400 |  | Accesos a Cierro Perimetral Data Center | 9d | 2025-10-25 | 2025-11-02 | A3380 | 42d | 0d | SQM-OBRAS CIVILES [360 h] | 182,728.8 | 4 | un | 5801-DC | 0 | SDC N °71 | 1.1.1.7 | 4 |  |
|  | 2 | **OBRAS ESTRUCTURALES DATA CENTER 5801** |  | 2025-11-03 | 2025-11-18 |  |  |  |  |  |  |  |  |  |  |  |  |  |
|  | 1 | **ACERO ESTRUCTURAL, PLATAFORMA DATA CENTER 5801** |  | 2025-11-03 | 2025-11-18 |  |  |  |  |  |  |  |  |  |  |  |  |  |
| A3410 |  | Estructuras Livianas, Plataforma Data Center | 5d | 2025-11-03 | 2025-11-07 | A3400 | 42d | 0d | SQM-ESTRUCTURA [276.69 h] | 140,440.85 | 1820,31 | kg | 5801-DC | 0 |  | 1.2.1.1 | 1820,34 | MODIFIDCACIï¿½N DE ESTRUCTURA POR DIFERENCIA DE COTAS |
| A3430 |  | Barandas, Plataforma Data Center | 3d | 2025-11-08 | 2025-11-10 | A3410 | 42d | 0d | SQM-ESTRUCTURA [147.74 h] | 74,988.81 | 971,96 | kg | 5801-DC | 0 |  | 1.2.1.3 | 990 |  |
| A3420 |  | Parrillas de Piso, Plataforma Data Center | 2d | 2025-11-11 | 2025-11-12 | A3430 | 42d | 0d | SQM-ESTRUCTURA [293.75 h] | 149,102.72 | 1932,58 | kg | 5801-DC | 0 |  | 1.2.1.2 | 1906,3 |  |
| A3440 |  | Escaleras, Plataforma Data Center | 3d | 2025-11-13 | 2025-11-15 | A3420 | 42d | 0d | SQM-ESTRUCTURA [15.07 h] | 7,647.32 | 99,12 | kg | 5801-DC | 0 |  | 1.2.1.4 | 100 |  |
| A3450 |  | Grout Fundaciones Estructura Data Center | 3d | 2025-11-16 | 2025-11-18 | A3440 | 42d | 0d | SQM-ESTRUCTURA [0.76 h] | 383.73 | 0,012 | m3 | 5801-DC | 0 |  | 1.2.1.5 | 0,012 |  |
|  | 3 | **OBRAS MECÁNICAS DATA CENTER 5801** |  | 2025-09-11 | 2025-10-05 |  |  |  |  |  |  |  |  |  |  |  |  |  |
|  | 1 | **MONTAJE Y PRUEBAS DE DATA CENTER 5801** |  | 2025-09-11 | 2025-10-05 |  |  |  |  |  |  |  |  |  |  |  |  |  |
| A3460 |  | Data center TAG 5808-SDAT-1701 | 25d | 2025-09-11 | 2025-10-05 | A1070 SS | 42d | 0d | SQM-MECANICA [1392 h] | 706,551.36 | 1 | un | 5801-DC | 0 |  | 1.3.1.1 | 1 |  |
|  | 2 | **MONTAJE Y PRUEBAS DE BOMBAS DOSIFICADORAS DATA CENTER 5801** |  | 2025-09-15 | 2025-09-18 |  |  |  |  |  |  |  |  |  |  |  |  |  |
| A3470 |  | Bomba dosificadora TAG 5801-BBA-3100 | 4d | 2025-09-15 | 2025-09-18 | A3520 | 114d | 0d | SQM-MECANICA [98.25 h] | 49,869.74 | 1 | un | 5801-DC | 0 |  | 1.3.2.1 | 1 | BOMBAS SE LIBERAN AYER 07.11 |
| A3480 |  | Bomba dosificadora TAG 5801-BBA-3103 | 4d | 2025-09-15 | 2025-09-18 | A3470 SS | 114d | 0d | SQM-MECANICA [98.25 h] | 49,869.74 | 1 | un | 5801-DC | 0 |  | 1.3.2.2 | 1 |  |

| ID | WBS | Activity | Duration | Start | Finish | Predecessors | Total float | Free float | Resources | Cost | Cantidad | Unidad | Área | Remanente | Ítem EDP | Forecast | Corregir |
| --- | --- | --- | --- | --- | --- | --- | --- | --- | --- | --- | --- | --- | --- | --- | --- | --- | --- |
|  | 3 | **MONTAJE Y PRUEBAS DE ESTANQUES DATA CENTER 5801** |  | 2025-09-11 | 2025-09-14 |  |  |  |  |  |  |  |  |  |  |  |  |
| A3490 |  | Estanque IBC para almcenamiento de agua. TAG 5801-EST-3106 | 1d | 2025-09-11 | 2025-09-11 | A3460 SS | 114d | 0d | SQM-MECANICA [12.3 h] | 6,243.23 | 1 | un | 5801-DC | 0 | 1.3.3.1 | 1 |  |
| A3500 |  | Estanque IBC para almcenamiento de agua. TAG 5801-EST-3107 | 1d | 2025-09-12 | 2025-09-12 | A3490 | 114d | 0d | SQM-MECANICA [12.3 h] | 6,243.23 | 1 | un | 5801-DC | 0 | 1.3.3.2 | 1 |  |
| A3510 |  | Estanque IBC para almcenamiento de agua. | 1d | 2025-09-13 | 2025-09-13 | A3500 | 114d | 0d | SQM-MECANICA [12.3 h] | 6,243.23 | 1 | un | 5801-DC | 0 | 1.3.3.3 | 1 |  |
| A3520 |  | Estanque IBC para almcenamiento de agua. | 1d | 2025-09-14 | 2025-09-14 | A3510 | 114d | 0d | SQM-MECANICA [12.3 h] | 6,243.23 | 1 | un | 5801-DC | 0 | 1.3.3.4 | 1 |  |
|  | 4 | **OBRAS PIPING DATA CENTER 5801** |  | 2025-09-15 | 2025-10-10 |  |  |  |  |  |  |  |  |  |  |  |  |
|  | 1 | **MONTAJE DE CAÑERÍAS DATA CENTER 5801** |  | 2025-09-15 | 2025-10-10 |  |  |  |  |  |  |  |  |  |  |  |  |
| A3540 |  | Ø 1" - Cañería Acero Inoxidable - Fabricación | 5d | 2025-09-15 | 2025-09-19 | A3480 SS | 114d | 0d | SQM-PIPING [162 h] | 82,227.96 | 81 | uniØn | 5801-DC | 0 | 1.4.1.2 | 55 | ASOCIAR CON BOMBAS |
| A3530 |  | Ø 1 " - Cañería Acero Inoxidable - Montaje | 3d | 2025-09-20 | 2025-09-22 | A3540 | 114d | 0d | SQM-PIPING [27.26 h] | 13,834.96 | 24,409 | m | 5801-DC | 0 | 1.4.1.1 | 25 |  |
| A3560 |  | Ø 3/4" - Cañería Acero Inoxidable - Fabricación | 2d | 2025-09-23 | 2025-09-24 | A3530 | 123d | 0d | SQM-PIPING [3.5 h] | 1,776.53 | 2 | uniØn | 5801-DC | 0 | 1.4.1.4 | 2 |  |
| A3550 |  | Ø 3/4 " - Cañería Acero Inoxidable - Montaje | 2d | 2025-09-25 | 2025-09-26 | A3560 | 123d | 0d | SQM-PIPING [0.32 h] | 159.89 | 0,3 | m | 5801-DC | 0 | 1.4.1.3 | 6 | R FF |
| A3580 |  | Ø 1-1/4" - Cañería Acero Inoxidable - Fabricación | 2d | 2025-09-27 | 2025-09-28 | A3550 | 123d | 0d | SQM-PIPING [54 h] | 27,409.32 | 18 | uniØn | 5801-DC | 0 | 1.4.1.6 | 2 |  |
| A3570 |  | Ø 1-1/4 " - Cañería Acero Inoxidable - Montaje | 2d | 2025-09-29 | 2025-09-30 | A3580 | 123d | 0d | SQM-PIPING [1.96 h] | 994.73 | 1,17 | m | 5801-DC | 0 | 1.4.1.5 | 2 | R FF |
| A3600 |  | Ø 2" - Cañería Acero Inoxidable - Fabricación | 3d | 2025-10-01 | 2025-10-03 | A3570 | 123d | 4d | SQM-PIPING [122.73 h] | 62,293.85 | 24,3 | uniØn | 5801-DC | 0 | 1.4.1.8 | 15 |  |
| A3590 |  | Ø 2 " - Cañería Acero Inoxidable - Montaje | 3d | 2025-10-08 | 2025-10-10 | A3610 FF, A3620, A3600, A3480 | 169d | 55d | SQM-PIPING [36.66 h] | 18,607.83 | 13,1319 | m | 5801-DC | 0 | 1.4.1.7 | 12 | R FF |
|  | 2 | **MONTAJE DE VÁLVULAS Y FITTING PIPING DATA CENTER 5801** |  | 2025-09-23 | 2025-10-07 |  |  |  |  |  |  |  |  |  |  |  |  |
| A3610 |  | Montaje de Fitting Acero Inoxidable GL Data Center | 15d | 2025-09-23 | 2025-10-07 | A3530 | 114d | 0d | SQM-PIPING [388.56 h] | 197,222.75 | 92 | un | 5801-DC | 0 | 99.4 | 92 |  |
| A3620 |  | Válvulas Data Center (Global) | 15d | 2025-09-23 | 2025-10-07 | A3530, A3610 SS | 114d | 0d | SQM-PIPING [58.41 h] | 29,648.81 | 15 | un | 5801-DC | 0 | 99.13 | 15 |  |
|  | 5 | **OBRAS ELÉCTRICAS DATA CENTER 5801** |  | 2025-09-23 | 2025-11-28 |  |  |  |  |  |  |  |  |  |  |  |  |
|  | 1 | **MONTAJE Y CONEXIONADO CONDUCTORES FUERZA Y CONTROL DATA CENTER 5801** |  | 2025-09-23 | 2025-10-13 |  |  |  |  |  |  |  |  |  |  |  |  |
|  | 1 | **TENDIDO Y CONEXIONADO CABLES FUERZA MONOCONDUCTOR DATA CENTER 5801** |  | 2025-09-23 | 2025-10-03 |  |  |  |  |  |  |  |  |  |  |  |  |
| A3630 |  | Cable Fuerza 3x1c # 350 MCM | 5d | 2025-09-23 | 2025-09-27 | A3480, A3620 SS | 114d | 0d | SQM-ELÉCTRICO [149.48 h] | 75,872.38 | 284 | m | 5801-DC | 0 | 1.5.1.1.1 | 284 |  |
| A3640 |  | Cable Fuerza 3x1c # 500 MCM | 4d | 2025-09-28 | 2025-10-01 | A3630 | 114d | 0d | SQM-ELÉCTRICO [60.99 h] | 30,956.29 | 79 | m | 5801-DC | 0 | 1.5.1.1.2 | 79 |  |
| A3650 |  | Cable tierra 1x1c # 2/0 AWG (VERDE) | 2d | 2025-10-02 | 2025-10-03 | A3640 | 114d | 0d | SQM-ELÉCTRICO [20.8 h] | 10,557.12 | 59,2 | m | 5801-DC | 0 | 1.5.1.1.3 | 75 |  |

| ID | WBS | Activity | Duration | Start | Finish | Predecessors | Total float | Free float | Resources | Cost | Cantidad | Unidad | Área | Remanente | Ítem EDP | Forecast | Corregir | Impacto |
| --- | --- | --- | --- | --- | --- | --- | --- | --- | --- | --- | --- | --- | --- | --- | --- | --- | --- | --- |
|  | 2 | **TENDIDO Y CONEXIONADO CABLES FUERZA MULTICONDUCTOR DATA CENTER 5801** |  | 2025-10-04 | 2025-10-13 |  |  |  |  |  |  |  |  |  |  |  |  |  |
| A3660 |  | Cable Fuerza 1x4c # 12 AWG | 2d | 2025-10-04 | 2025-10-05 | A3650 | 114d | 0d | SQM-ELÉCTRICO [25.57 h] | 12,980.51 | 70 | m | 5801-DC | 0 | 1.5.1.2.1 | 70 |  |  |
| A3670 |  | Cable Fuerza 1x4c # 8 AWG | 2d | 2025-10-06 | 2025-10-07 | A3660 | 114d | 0d | SQM-ELÉCTRICO [16.23 h] | 8,238.02 | 30 | m | 5801-DC | 0 | 1.5.1.2.2 | 30 |  |  |
| A3680 |  | Cable Fuerza 1x5c # 8 AWG | 2d | 2025-10-08 | 2025-10-09 | A3670 | 114d | 0d | SQM-ELÉCTRICO |  | 0 | m | 5801-DC | 0 | 1.5.1.2.3 | 12 |  |  |
| A3690 |  | Cables Control 1x5c # 14 AWG | 2d | 2025-10-10 | 2025-10-11 | A3680 | 114d | 0d | SQM-ELÉCTRICO [24.59 h] | 12,483.08 | 70 | m | 5801-DC | 0 | 1.5.1.2.4 | 70 |  |  |
| A3700 |  | Cables Control 1x3c # 12 AWG | 2d | 2025-10-12 | 2025-10-13 | A3690 | 114d | 0d | SQM-ELÉCTRICO [5.48 h] | 2,781.54 | 15 | m | 5801-DC | 0 | 1.5.1.2.5 | 26 |  |  |
|  | 2 | **MONTAJE DE CANALIZACIÓN Y FERRETERÍA DATA CENTER 5801** |  | 2025-10-14 | 2025-10-17 |  |  |  |  |  |  |  |  |  |  |  |  |  |
| A3710 |  | C.A.G. 1", con Hilo y Copla de Unión, Según Norma ANSI C80-1. | 2d | 2025-10-14 | 2025-10-15 | A3460, A3700 | 114d | 0d | SQM-ELÉCTRICO [17.01 h] | 8,633.94 | 13,5 | m | 5801-DC | 0 | 1.5.2.1 | 20 |  |  |
| A3720 |  | Conduit Flexible de Acero de 1" de Diámetro, con Chaqueta de PVC. | 2d | 2025-10-16 | 2025-10-17 | A3710 | 114d | 0d | SQM-ELÉCTRICO [25.2 h] | 12,791.02 | 20 | m | 5801-DC | 0 | 1.5.2.2 | 20 | R FF |  |
|  | 3 | **MONTAJE Y CONEXIONADO EQUIPOS DE ALUMBRADO DATA CENTER 5801** |  | 2025-10-18 | 2025-11-02 |  |  |  |  |  |  |  |  |  |  |  |  |  |
| A3730 |  | Cable Fuerza 1x3c #12 AWG | 2d | 2025-10-18 | 2025-10-19 | A3710, A3720 | 114d | 0d | SQM-ELÉCTRICO [54.8 h] | 27,815.38 | 150 | m | 5801-DC | 0 | 1.5.3.1 | 130 |  |  |
| A3740 |  | Montaje y Soportación C.A.G. 1", con Hilo y Copla de Unión, Según Norma ANSI C80-1 | 2d | 2025-10-20 | 2025-10-21 | A3730 | 114d | 0d | SQM-ELÉCTRICO [151.2 h] | 76,746.1 | 120 | m | 5801-DC | 0 | 1.5.3.2 | 120 |  |  |
| A3760 |  | Poste Recto/Curvo de Acero Galvanizado, 6 m útiles. | 6d | 2025-10-22 | 2025-10-27 | A3740 | 114d | 0d | SQM-ELÉCTRICO [276 h] | 140,092.08 | 11 | c/u | 5801-DC | 0 | 1.5.3.4 | 11 |  |  |
| A3750 |  | Equipo de Alumbrado Público LED de 120 W, para Poste Tubular 6m.(LUZ CALIDA) | 6d | 2025-10-28 | 2025-11-02 | A3740 SS, A3760, A3720 | 114d | 0d | SQM-ELÉCTRICO [276 h] | 140,092.08 | 11 | c/u | 5801-DC | 0 | 1.5.3.3 | 11 |  | LDO N°14-15 |
|  | 4 | **MONTAJE, CONEXIÓN Y PRUEBAS EQUIPOS DE CONTROL BOMBAS DATA CENTER 5801** |  | 2025-11-03 | 2025-11-07 |  |  |  |  |  |  |  |  |  |  |  |  |  |
| A3770 |  | Estación Local y Elementos Asociados. | 2d | 2025-11-03 | 2025-11-04 | A3750 | 114d | 0d | SQM-ELÉCTRICO [84 h] | 42,636.72 | 2 | c/u | 5801-DC | 0 | 1.5.4.1 | 2 |  |  |
| A3780 |  | Cable de Cobre electrolítico Desnudo, 2/0 AWG | 3d | 2025-11-05 | 2025-11-07 | A3770 | 114d | 0d | SQM-ELÉCTRICO [95.04 h] | 48,240.4 | 33 | c/u | 5801-DC | 0 | 1.5.4.2 | 50 | R FF |  |
|  | 5 | **MONTAJE/HABILITACIÓN DE EQUIPOS ELÉCTRICOS PRINCIPALES DATA CENTER 5801** |  | 2025-11-08 | 2025-11-28 |  |  |  |  |  |  |  |  |  |  |  |  |  |
| A3790 |  | SubEstación Unitaria TAG: 5870-SEU-3100 | 9d | 2025-11-08 | 2025-11-16 | A3460 FF, A3750, A3780, A3700 | 114d | 0d | SQM-ELÉCTRICO [360 h] | 182,728.8 | 1 | c/u | 5801-DC | 0 | 1.5.5.1 | 1 | R FF |  |
| A3800 |  | Tablero de Distribución de Fuerza y Alumbrado TAG: 5870-PNL-3101 | 3d | 2025-11-17 | 2025-11-19 | A3790 | 114d | 0d | SQM-ELÉCTRICO [124.1 h] | 62,990.68 | 1 | c/u | 5801-DC | 0 | 1.5.5.2 | 1 |  |  |
| A3810 |  | Tablero de Alumbrado TAG: 5870-TDA-3103 | 3d | 2025-11-20 | 2025-11-22 | A3800 | 114d | 0d | SQM-ELÉCTRICO [124.1 h] | 62,990.68 | 1 | c/u | 5801-DC | 0 | 1.5.5.3 | 1 |  |  |
| A3820 |  | Tablero Eléctrico Orion TAG: 5870-PNL-3105 | 3d | 2025-11-23 | 2025-11-25 | A3810 | 114d | 0d | SQM-ELÉCTRICO [124.1 h] | 62,990.68 | 1 | c/u | 5801-DC | 0 | 1.5.5.4 | 1 |  |  |
| A3830 |  | Sistema de Almacenamiento de Energía BESS TAG: 5870-BCB-3102 | 3d | 2025-11-26 | 2025-11-28 | A3820 | 114d | 0d | SQM-ELÉCTRICO [124.1 h] | 62,990.68 | 1 | c/u | 5801-DC | 0 | 1.5.5.5 | 1 |  | LDO N°4 |
|  | 6 | **OBRAS DE INSTRUMENTACIÓN SECTOR DATA CENTER 5801** |  | 2025-11-29 | 2025-12-07 |  |  |  |  |  |  |  |  |  |  |  |  |  |
|  | 1 | **MONTAJE DE EQUIPOS DE COMUNICACIÓN Y CABECERAS DE F.O. EN RACK DE 19" DATA CENTER 5801** |  | 2025-11-29 | 2025-12-04 |  |  |  |  |  |  |  |  |  |  |  |  |  |
| A3840 |  | Switch cisco catalyst, 9500, 24x1 y colocaciØn de TAGs | 1d | 2025-11-29 | 2025-11-29 | A3830 | 114d | 0d | SQM-INSTRUMENTACIÓN [72 h] |  | 2 | c/u | 5801-DC | 0 | 1.6.1.1 | 2 |  |  |
| A3850 |  | Switch networking interr. Connectrix DS-6610B-L | 1d | 2025-11-30 | 2025-11-30 | A3840 | 114d | 0d | SQM-INSTRUMENTACIÓN [72 h] |  | 2 | c/u | 5801-DC | 0 | 1.6.1.2 | 2 |  |  |
| A3860 |  | Servidores, poweredge, R660, DELL | 1d | 2025-12-01 | 2025-12-01 | A3850 | 114d | 0d | SQM-INSTRUMENTACIÓN [240 h] |  | 5 | c/u | 5801-DC | 0 | 1.6.1.3 | 5 |  |  |
| A3870 |  | Servidores, poweredge, 500T, DELL | 1d | 2025-12-02 | 2025-12-02 | A3860 | 114d | 0d | SQM-INSTRUMENTACIÓN [48 h] |  | 1 | c/u | 5801-DC | 0 | 1.6.1.4 | 1 |  |  |
| A3880 |  | TRANSCEIVER,QSFP,100GBASE,LR4 | 1d | 2025-12-03 | 2025-12-03 | A3870 | 114d | 0d | SQM-INSTRUMENTACIÓN [6 h] |  | 1 | c/u | 5801-DC | 0 | 1.6.1.5 | 1 |  |  |
| A3890 |  | Conversor,SFP,TRANSCEIVER,10GBASE-T | 1d | 2025-12-04 | 2025-12-04 | A3880 | 114d | 0d | SQM-INSTRUMENTACIÓN [120 h] |  | 20 | c/u | 5801-DC | 0 | 1.6.1.6 | 20 |  |  |

| ID | WBS | Activity | Duration | Start | Finish | Predecessors | Total float | Free float | Resources | Cost | Cantidad | Unidad | Área | Remanente | Ítem EDP | Forecast | Impacto |
| --- | --- | --- | --- | --- | --- | --- | --- | --- | --- | --- | --- | --- | --- | --- | --- | --- | --- |
|  | 2 | **TENDIDO Y CONEXIONADO DE CABLES DE ALIMENTACIÓN DATA CENTER 5801** |  | 2025-12-05 | 2025-12-07 |  |  |  |  |  |  |  |  |  |  |  |  |
| A3900 |  | Cable Alimentación Eléctrica de Switches. Considera Suministro y Preparación | 3d | 2025-12-05 | 2025-12-07 | A3890 | 114d | 0d | SQM-INSTRUMENTACIÓN [126 h] |  | 6 | c/u | 5801-DC | 0 | 1.6.2.1 | 8 |  |
|  | 3 | **SUMINSITRO Y MONTAJE DE PROTECCIONES ELÉCTRICAS DATA CENTER 5801** |  | 2025-12-05 | 2025-12-07 |  |  |  |  |  |  |  |  |  |  |  |  |
| A3910 |  | Protecciones Eléctricas (CB-01;CB-02;CB-03;CB-04;CB-01R;CB-02R;CB-03R;CB-04R), y Borneras | 3d | 2025-12-05 | 2025-12-07 | A3900 FF, A3590 | 114d |  | SQM-ELÉCTRICO [168 h] | 85,273.44 | 8 | un | 5801-DC | 0 | 1.6.3.1 | 8 | LDO N°17 |
|  | 2 | **RED GN-GL L5 LiOH, ALIMENTACIÓN CALDERA UTILITIES - ÁREA 5801 GNL 5801** |  | 2025-09-11 | 2025-10-29 |  |  |  |  |  |  |  |  |  |  |  |  |
|  | 1 | **ÁREA 5801 - SECTOR GNL 5801** |  | 2025-09-11 | 2025-10-29 |  |  |  |  |  |  |  |  |  |  |  |  |
|  | 1 | **OBRAS CIVILES SECTOR LÍNEA DE GAS 5801** |  | 2025-09-11 | 2025-10-10 |  |  |  |  |  |  |  |  |  |  |  |  |
|  | 1 | **MOVIMIENTO DE TIERRAS, EXCAVACIÓN PARA CRUCE DE CAMINO GNL 5801** |  | 2025-09-15 | 2025-10-04 |  |  |  |  |  |  |  |  |  |  |  |  |
| A3920 |  | Excavación para Curce de Camino Norte Líneas de Gas | 3d | 2025-09-15 | 2025-09-17 | A3960 FF | 0d |  | SQM-OBRAS CIVILES [149.49 h] | 75,880.04 | 56,95 | m3 | 5801-GNL | 0 | 2.2.1.1 | 83,538 | SDC N°61 |
| A3940 |  | Transporte de Material a Botadero | 2d | 2025-09-18 | 2025-09-19 | A3920, A3960 | 0d |  | SQM-OBRAS CIVILES |  | 0 | m3 | 5801-GNL | 0 | 2.2.1.3 | 144 |  |
| A3930 |  | Relleno para Curce de Camino Norte Líneas de Gas | 6d | 2025-09-29 | 2025-10-04 | A4000 FF | 7d | 0d | SQM-OBRAS CIVILES [32.17 h] | 16,329.86 | 26,81 | m3 | 5801-GNL | 0 | 2.2.1.2 | 83,538 |  |
| A3950 |  | Arena para Relleno de Curce de Camino Norte Líneas de Gas | 2d | 2025-09-29 | 2025-09-30 | A3990 | 0d |  | SQM-OBRAS CIVILES [24.77 h] | 12,572.04 | 26,59 | m3 | 5801-GNL | 0 | 2.2.1.4 | 42 |  |
|  | 2 | **EXCAVACIÓN PARA CAÉRÍAS ENTERRADA GNL 5801** |  | 2025-09-11 | 2025-10-10 |  |  |  |  |  |  |  |  |  |  |  |  |
| A3960 |  | Excavación para Curce de Camino Sur Líneas de Gas | 7d | 2025-09-11 | 2025-09-17 | A1070 SS | 0d |  | SQM-OBRAS CIVILES [372.75 h] | 189,200.45 | 142 | m3 | 5801-GNL | 0 | 2.2.2.1 | 142 |  |
| A3980 |  | Transporte de Material a Botadero | 3d | 2025-09-20 | 2025-09-22 | A3940 | 0d |  | SQM-OBRAS CIVILES |  | 0 | m3 | 5801-GNL | -0,00249999999999773 | 2.2.2.3 | 798 |  |
| A3990 |  | Arena para Relleno de Curce de Camino Sur Líneas de Gas | 6d | 2025-09-23 | 2025-09-28 | A3980 | 0d |  | SQM-OBRAS CIVILES [58.83 h] | 29,862.73 | 63,16 | m3 | 5801-GNL | 0 | 2.2.2.4 | 60,8 |  |
| A3970 |  | Relleno para Curce de Camino Sur Líneas de Gas | 6d | 2025-10-05 | 2025-10-10 | A3930 | 7d |  | SQM-OBRAS CIVILES [81.02 h] | 41,126.16 | 67,52 | m3 | 5801-GNL | 0 | 2.2.2.2 | 129,675 |  |
|  | 3 | **SERVICIOS, CRUCE DE CAMINO GNL 5801** |  | 2025-10-01 | 2025-10-04 |  |  |  |  |  |  |  |  |  |  |  |  |
| A4000 |  | Camisa de 8" para Cruce de Camino Norte y Sur, Línea de Gas | 4d | 2025-10-01 | 2025-10-04 | A3950 | 0d |  | SQM-OBRAS CIVILES [1359.75 h] | 690,181.91 | 222 | m | 5801-GNL | 0 | 2.3.1.1 | 270 |  |
|  | 2 | **OBRAS PIPING SECTOR LÍNEA DE GAS 5801** |  | 2025-10-01 | 2025-10-29 |  |  |  |  |  |  |  |  |  |  |  |  |
|  | 1 | **MONTAJE DE CAÑERÍA, LÍNEAS DE GAS 5801** |  | 2025-10-01 | 2025-10-24 |  |  |  |  |  |  |  |  |  |  |  |  |
| A4010 |  | Ø 110 mm - Cañería HDPE, PE 100, PN10 (4") | 5d | 2025-10-01 | 2025-10-05 | A4000 SS | 0d |  | SQM-PIPING [281.12 h] | 142,692.92 | 219,2 | m | 5801-GNL | 0 | 2.1.1.1 | 236 | LDO N°6-13; SDC N°68 |
| A4020 |  | Ø 4" - Cañería Acero Carbono ASTM A106 Gr. B (100mm) | 20d | 2025-10-05 | 2025-10-24 | A4000 | 99d | 0d | SQM-PIPING [2644.41 h] | 1,342,249.42 | 740,04 | m | 5801-GNL | 0 | 2.1.1.2 | 866 | LDO N°9-10-11-12-14-52; SDC N°52-57 |
|  | 2 | **MONTAJE DE VÁLVULAS MANUALES Y FITTING, LÍNEA DE GAS 5801** |  | 2025-10-06 | 2025-10-29 |  |  |  |  |  |  |  |  |  |  |  |  |
| A4030 |  | Montaje de Fitting para Líneas GNL | 24d | 2025-10-06 | 2025-10-29 | A4010 | 153d | 0d | SQM-PIPING [1052.25 h] | 534,103.53 | 120 | un | 5801-GNL | 0 | 99.5 | 184 |  |
| A4040 |  | Válvulas Línea de Gas (Global) | 12d | 2025-10-18 | 2025-10-29 | A4030 FF | 153d | 0d | SQM-PIPING [192 h] | 97,455.36 | 16 | un | 5801-GNL | 0 | 99.14 | 16 |  |

Notes:
- A4000: Corregir: SE SOLICITA POR ITO TODO LO QUE VAYA SOTERRADO LLEVARï¿½A ENCAMISADO
- A4020: Corregir: MODIFICAR FECHA DE INICIO

| ID | WBS | Activity | Duration | Start | Finish | Predecessors | Total float | Free float | Resources | Cost | Cantidad | Unidad | Área | Remanente | Corregir | Ítem EDP | Forecast |
| --- | --- | --- | --- | --- | --- | --- | --- | --- | --- | --- | --- | --- | --- | --- | --- | --- | --- |
|  | 3 | **TIE-IN LÍNEAS ASOCIADAS A GNL 5801** |  | 2025-10-29 | 2025-10-29 |  |  |  |  |  |  |  |  |  |  |  |  |
| A4050 |  | TIE-IN 5801-001 Acero Carbono Ø4" | 1d | 2025-10-29 | 2025-10-29 | A4020, A4040 FF, A4030 FF, A3970 | 153d | 0d | SQM-PIPING [76 h] | 38,576.08 | 1 | gl | 5801-GNL | 0,32 | R FF | 2.1.5.1 | 1 |
| A4060 |  | TIE-IN 5801-002 Acero Carbono Ø4" | 1d | 2025-10-29 | 2025-10-29 | A4050 FF | 153d |  | SQM-PIPING [120 h] | 60,909.6 | 1 | gl | 5801-GNL | 0,32 |  | 2.1.5.2 | 1 |
|  | 4 | **FABRICACIÓN Y MONTAJE DE SOPORTES GNL 5801** |  | 2025-10-06 | 2025-10-24 |  |  |  |  |  |  |  |  |  |  |  |  |
| A4070 |  | Soportes tipo SOP 01-A | 6d | 2025-10-06 | 2025-10-11 | A4010 | 0d |  | SQM-PIPING [3.75 h] | 1,903.42 | 10 | un | 5801-GNL | 0 |  | 2.1.6.1 | 10 |
| A4080 |  | Soportes tipo SOP 01-B | 6d | 2025-10-12 | 2025-10-17 | A4070 | 0d |  | SQM-PIPING [55.5 h] | 28,170.69 | 6 | un | 5801-GNL | 0 |  | 2.1.6.2 | 6 |
| A4090 |  | Soportes tipo SOP 02 | 6d | 2025-10-19 | 2025-10-24 | A4080, A4020 FF | 99d | 0d | SQM-PIPING [105.38 h] | 53,486.24 | 281 | un | 5801-GNL | 0 |  | 2.1.6.3 | 281 |
|  | 3 | **ESTANQUE PIVOTE** |  | 2025-09-18 | 2026-03-31 |  |  |  |  |  |  |  |  |  |  |  |  |
|  | 1 | **ÁREA 5817 - SECTOR TK-6060** |  | 2025-10-18 | 2026-03-31 |  |  |  |  |  |  |  |  |  |  |  |  |
|  | 1 | **OBRAS CIVILES TK-6060 5817** |  | 2025-10-18 | 2025-11-22 |  |  |  |  |  |  |  |  |  |  |  |  |
|  | 1 | **LOSA Y FUNDACIONES TK-6060 5817** |  | 2025-11-19 | 2025-11-22 |  |  |  |  |  |  |  |  |  |  |  |  |
|  | 3 | **FABRICACIÓN DE LOSA Y FUNDACIONES 5817** |  | 2025-11-19 | 2025-11-22 |  |  |  |  |  |  |  |  |  |  |  |  |
| A4170 |  | Grating FRP T3232 Bomba Sumidero | 2d | 2025-11-19 | 2025-11-20 | A3450 | 42d | 0d | SQM-OBRAS CIVILES [4.55 h] | 2,309.49 | 1 | m2 | 5817-TK6060 | 0 |  | 8.1.1.1 | 1 |
| A4180 |  | Estructura Liviana de Bomba Sumidero | 2d | 2025-11-21 | 2025-11-22 | A4170 | 42d | 24d | SQM-OBRAS CIVILES [5.47 h] | 2,777.48 | 36 | kg | 5817-TK6060 | 0 |  | 8.1.2.1 | 36 |
|  | 2 | **CRUCE DE CAMINO 5817** |  | 2025-10-18 | 2025-11-12 |  |  |  |  |  |  |  |  |  |  |  |  |
|  | 1 | **MOVIMIENTO MASIVO DE TIERRA PARA CRUCE DE CAMINOS 5817** |  | 2025-10-18 | 2025-11-12 |  |  |  |  |  |  |  |  |  |  |  |  |
| A4190 |  | Excavación Cruce de Camino 1 | 7d | 2025-10-18 | 2025-10-24 | A3970, A4070, A4080 | 0d |  | SQM-OBRAS CIVILES [144.79 h] | 73,495.05 | 55,16 | m3 | C.CAMINO | 0 |  | 8.6.1.6 | 195,8 |
| A4210 |  | Relleno Estructural Cruce de Camino 1 | 3d | 2025-10-25 | 2025-10-27 | A4190 | 47d | 0d | SQM-OBRAS CIVILES [41.77 h] | 21,202.63 | 34,81 | m3 | C.CAMINO | 0 |  | 8.6.1.2 | 108,62 |
| A4230 |  | Excavación Cruce de Camino 2 | 5d | 2025-10-25 | 2025-10-29 | A4190 | 143d | 0d | SQM-OBRAS CIVILES [133.88 h] | 67,952.27 | 51 | m3 | C.CAMINO | 0 |  | 8.6.1.5 | 139,86 |
| A4220 |  | Cama de Arena Cruce de Camino 1 | 1d | 2025-10-28 | 2025-10-28 | A4210 | 47d | 5d | SQM-OBRAS CIVILES [2.61 h] | 1,323.87 | 2,8 | m3 | C.CAMINO | 0 |  | 8.6.1.8 | 9,06 |
| A4250 |  | Relleno Estructural Cruce de Camino 2 | 4d | 2025-10-30 | 2025-11-02 | A4230 | 143d | 0d | SQM-OBRAS CIVILES [32.4 h] | 16,445.59 | 27 | m3 | C.CAMINO | 0 |  | 8.6.1.1 | 77,59 |
| A4200 |  | Relleno compactado Cruce de Camino 1 | 6d | 2025-11-03 | 2025-11-08 | A4280 | 138d | 2d | SQM-OBRAS CIVILES [13.67 h] | 6,937.6 | 11,39 | m3 | C.CAMINO | 0 |  | 8.6.1.4 | 78,11 |
| A4260 |  | Cama de Arena Cruce de Camino 2 | 1d | 2025-11-03 | 2025-11-03 | A4250 | 143d | 7d | SQM-OBRAS CIVILES [2.24 h] | 1,134.75 | 2,4 | m3 | C.CAMINO | 0 |  | 8.6.1.7 | 6,47 |
| A4240 |  | Relleno compactado Cruce de Camino 2 | 2d | 2025-11-11 | 2025-11-12 | A4300, A4200, A4260 | 136d | 56d | SQM-OBRAS CIVILES [17.94 h] | 9,105.99 | 14,95 | m3 | C.CAMINO | 0 |  | 8.6.1.3 | 55,794 |

| ID | WBS | Activity | Duration | Start | Finish | Predecessors | Total float | Free float | Resources | Cost | Cantidad | Unidad | Área | Remanente | Ítem EDP | Forecast | Impacto | Corregir |
| --- | --- | --- | --- | --- | --- | --- | --- | --- | --- | --- | --- | --- | --- | --- | --- | --- | --- | --- |
|  | 2 | **ENCAMISADO PARA CRUCE DE CAMINOS 5817** |  | 2025-10-25 | 2025-11-10 |  |  |  |  |  |  |  |  |  |  |  |  |  |
| A4280 |  | Cañería 12" Cruce de Camino 1 | 9d | 2025-10-25 | 2025-11-02 | A4190 | 42d | 0d | SQM-OBRAS CIVILES [510.09 h] | 258,911.48 | 6246 | kg | C.CAMINO | 0 | 8.6.2.4 | 6840,42 |  |  |
| A4300 |  | Cañería 12" Cruce de Camino 2 | 8d | 2025-11-03 | 2025-11-10 | A4280, A4220 | 42d | 0d | SQM-OBRAS CIVILES [396.74 h] | 201,375.6 | 4858 | kg | C.CAMINO | 0 | 8.6.2.3 | 5898,62 |  |  |
|  | 3 | **OBRAS MECÁNICAS TK-6060 5817** |  | 2025-10-18 | 2025-12-20 |  |  |  |  |  |  |  |  |  |  |  |  |  |
|  | 1 | **MONTAJE Y PRUEBAS DE EQUIPOS MECÁNICOS TK-6060 5817** |  | 2025-10-18 | 2025-12-20 |  |  |  |  |  |  |  |  |  |  |  |  |  |
| A4320 |  | Estanque Pivote y Plataforma Sumerior TAG: 5817-EST-6060 | 50d | 2025-10-18 | 2025-12-06 | A4190 SS | 0d |  | SQM-MECANICA [2628 h] | 1,333,920.24 | 1 | un | 5817-TK6060 | 0 | 5.1.1.1 | 1 | LDO N°2-3-5-10; sdc n°4-12-66 |  |
| A4340 |  | Bomba Centrífuga y Motor TAG: 5817-BBA-6069; 5817-MTR-6070 | 4d | 2025-11-11 | 2025-11-14 | A4300 | 42d | 0d | SQM-MECANICA [139.9 h] | 71,010.44 | 1 | un | 5817-TK6060 | 0 | 5.1.1.5 | 1 |  |  |
| A4350 |  | Bomba Centrífuga y Motor TAG: 5817-BBA-6072; 5817-MTR-6073 | 4d | 2025-11-15 | 2025-11-18 | A4340 | 42d | 0d | SQM-MECANICA [139.9 h] | 71,010.44 | 1 | un | 5817-TK6060 | 0 | 5.1.1.6 | 1 | LDO N°18 |  |
| A4360 |  | Bomba Centrífuga y Motor TAG: 5817-BBA-6077; 5817-MTR-6078 | 4d | 2025-11-19 | 2025-11-22 | A4350 | 42d | 12d | SQM-MECANICA [139.9 h] | 71,010.44 | 1 | un | 5817-TK6060 | 0 | 5.1.1.3 | 1 | LDO N°15 |  |
| A4330 |  | Agitador Vertical Estanque Pivote TAG: 5817-AGT-6061 / 5817-MTR-6062 | 10d | 2025-12-07 | 2025-12-16 | A4320 | 18d | 0d | SQM-MECANICA [478.75 h] | 243,003.92 | 1 | un | 5817-TK6060 | 0 | 5.1.1.4 | 1 |  |  |
| A4370 |  | Bomba Sumidero y Motor TAG: 5817-BBS-6075; 5817-MTR-6076 | 4d | 2025-12-17 | 2025-12-20 | A4360, A4180, A4330 | 18d | 0d | SQM-MECANICA [139.9 h] | 71,010.44 | 1 | un | 5817-TK6060 | 0 | 5.1.1.2 | 1 | SUM M-01 F.Entrega: 14-11-25 |  |
|  | 4 | **OBRAS PIPING TK-6060 5817** |  | 2025-10-18 | 2026-02-28 |  |  |  |  |  |  |  |  |  |  |  |  |  |
|  | 1 | **MONTAJE Y FABRICACIÓN DE CAÑERÍAS TK-6060 5817** |  | 2025-10-18 | 2026-02-05 |  |  |  |  |  |  |  |  |  |  |  |  |  |
|  | 1 | **FABRICACIÓN CAÑERÍAS TK-6060 5817** |  | 2025-10-18 | 2026-01-05 |  |  |  |  |  |  |  |  |  |  |  |  |  |
| A4380 |  | Ø 6" - Cañería Acero Inoxidable - Fabricación | 62d | 2025-10-18 | 2025-12-18 | A4320 SS | 0d |  | SQM-PIPING [5915 h] | 3,002,335.7 | 455 | un | 5817-TK6060 | 44,1 | 5.2.1.9 | 632 | SDC N°26 |  |
| A4420 |  | Ø 1-1/2" - Cañería Acero Inoxidable - Fabricación | 2d | 2025-10-25 | 2025-10-26 | A4090 | 99d | 0d | SQM-PIPING [18 h] | 9,136.44 | 6 | un | 5817-TK6060 | 0 | 5.2.1.54 | 2 |  |  |
| A4410 |  | Ø 1" - Cañería Acero Inoxidable - Fabricación | 3d | 2025-10-27 | 2025-10-29 | A4420 | 99d |  | SQM-PIPING [30 h] | 15,227.4 | 15 | un | 5817-TK6060 | 4,2 | 5.2.1.50 | 15 |  |  |
| A4390 |  | Ø 4" - Cañería Acero Inoxidable - Fabricación | 14d | 2025-12-05 | 2025-12-18 | A4380 FF | 20d |  | SQM-PIPING [532 h] | 270,032.56 | 70 | un | 5817-TK6060 | 0 | 5.2.1.18 | 107 | SDC N°26 | R FF |
| A4430 |  | Ø 8" - Cañería CPVC, SCH 80 - Fabricación | 3d | 2025-12-19 | 2025-12-21 | A4380 | 17d | 0d | SQM-PIPING [19.25 h] | 9,770.92 | 7 | un | 5817-TK6060 | 0 | 5.2.1.1 | 11 |  |  |
| A4400 |  | Ø 2" - Cañería Acero Inoxidable - Fabricación | 12d | 2025-12-21 | 2026-01-01 | A4330, A4370 | 18d |  | SQM-PIPING [903.21 h] | 458,451.33 | 220 | un | 5817-TK6060 | 14 | 5.2.1.33 | 345 |  |  |
| A4440 |  | Ø 4" - Cañería CPVC, SCH 80 - Fabricación | 12d | 2025-12-22 | 2026-01-02 | A4430 | 17d | 0d | SQM-PIPING [123.75 h] | 62,813.03 | 90 | un | 5817-TK6060 | 0 | 5.2.1.19 | 90 |  |  |
| A4450 |  | Ø 2" - Cañería CPVC, SCH 80 - Fabricación | 3d | 2026-01-03 | 2026-01-05 | A4440 | 17d |  | SQM-PIPING [11.55 h] | 5,862.55 | 14 | un | 5817-TK6060 | 0 | 5.2.1.34 | 14 |  |  |
|  | 2 | **MONTAJE CAÑERÍAS TK-6060 5817** |  | 2025-12-19 | 2026-02-05 |  |  |  |  |  |  |  |  |  |  |  |  |  |
| A4490 |  | Ø 6" - Cañería Acero Inoxidable - Montaje | 20d | 2025-12-19 | 2026-01-07 | A4380 | 0d |  | SQM-PIPING [3785.39 h] | 1,921,389.68 | 1436,4 | m | 5817-TK6060 | 262,27 | 5.2.1.15 | 1709 | SDC N°26 | R FF |
| A4460 |  | Ø 8" - Cañería CPVC, SCH 80 - Montaje | 3d | 2025-12-22 | 2025-12-24 | A4320 SS, A4430 | 80d | 0d | SQM-PIPING [39.9 h] | 20,252.44 | 7,6 | m | 5817-TK6060 | 0 | 5.2.1.5 | 6,691406866 |  |  |
| A4470 |  | Ø 4" - Cañería CPVC, SCH 80 - Montaje | 14d | 2025-12-25 | 2026-01-07 | A4460, A4430 | 80d | 0d | SQM-PIPING [302.4 h] | 153,492.19 | 96 | m | 5817-TK6060 | 0 | 5.2.1.29 | 121,9 |  |  |
| A4480 |  | Ø 2" - Cañería CPVC, SCH 80 - Montaje | 3d | 2026-01-08 | 2026-01-10 | A4240, A4470 | 80d |  | SQM-PIPING [17.32 h] | 8,793.82 | 11 | m | 5817-TK6060 | 0 | 5.2.1.47 | 16,9 |  |  |
| A4500 |  | Ø 4" - Cañería Acero Inoxidable - Montaje | 12d | 2026-01-08 | 2026-01-19 | A4490, A4390 | 0d |  | SQM-PIPING [229.81 h] | 116,646.96 | 98 | m | 5817-TK6060 | 0 | 5.2.1.30 | 55,701239341 | SDC N°26 |  |
| A4510 |  | Ø 2" - Cañería Acero Inoxidable - Montaje | 10d | 2026-01-20 | 2026-01-29 | A4500, A4450 SS, A4400 | 0d |  | SQM-PIPING [568.1 h] | 288,358.31 | 203,5 | m | 5817-TK6060 | 20 | 5.2.1.48 | 124,8153931 |  |  |
| A4520 |  | Ø 1-1/2" - Cañería Acero Inoxidable - Montaje | 2d | 2026-01-30 | 2026-01-31 | A4510 | 0d |  | SQM-PIPING [0.5 h] | 255.06 | 0,3 | m | 5817-TK6060 | 0,03 | 5.2.1.56 | 0,3 |  |  |
| A4530 |  | Ø 1" - Cañería Acero Inoxidable - Montaje | 5d | 2026-02-01 | 2026-02-05 | A4520 | 0d |  | SQM-PIPING [0.39 h] | 196.54 | 0,346754672 | m | 5817-TK6060 | 0,0346754672 | 5.2.1.52 | 0,346754672 |  | R FF |

| ID | WBS | Activity | Duration | Start | Finish | Predecessors | Total float | Free float | Resources | Cost | Cantidad | Unidad | Área | Remanente | Ítem EDP | Forecast | Corregir |
| --- | --- | --- | --- | --- | --- | --- | --- | --- | --- | --- | --- | --- | --- | --- | --- | --- | --- |
|  | 2 | **MONTAJE DE FITTING Y VÁLVULAS TK-6060 5817** |  | 2025-10-18 | 2026-01-18 |  |  |  |  |  |  |  |  |  |  |  |  |
| A4540 |  | Montaje de Fitting para Líneas TK-6060 | 93d | 2025-10-18 | 2026-01-18 | A4380 SS | 22d | 0d | SQM-PIPING [6575.76 h] | 3,337,722.48 | 518 | un | 5817-TK6060 | 25 | 99.6 | 619 |  |
| A4550 |  | Válvulas Sector TK-6060 (Global) | 93d | 2025-10-18 | 2026-01-18 | A4540 SS | 57d | 13d | SQM-PIPING [762.1 h] | 386,826.94 | 74 | un | 5817-TK6060 | 3,3 | 99.15 | 74 |  |
|  | 3 | **FABRICACIÓN Y MONTAJE DE SOPORTES TK-6060 5817** |  | 2026-01-08 | 2026-02-13 |  |  |  |  |  |  |  |  |  |  |  |  |
| A4560 |  | Soporte N°001A - Pedestal con Repisa de Acero Estructural para Tuberías Diámetros Pequeños | 1d | 2026-01-08 | 2026-01-08 | A4380, A4490 | 1d | 0d | SQM-PIPING [4.25 h] | 2,157.22 | 1 | un | 5817-TK6060 | 0 | 5.2.4.9 | 1 |  |
| A4570 |  | Soporte N°001B - Pedestal con Repisa de Acero Estructural para Tuberías Diámetros Pequeños | 5d | 2026-01-09 | 2026-01-13 | A4560 | 1d | 0d | SQM-PIPING [21.25 h] | 10,786.08 | 5 | un | 5817-TK6060 | 0 | 5.2.4.8 | 5 |  |
| A4580 |  | Soporte N°002 - Pedestal, Acero Estructural para Tuberías Diámetros Pequeños | 3d | 2026-01-14 | 2026-01-16 | A4570 | 1d | 0d | SQM-PIPING [12.75 h] | 6,471.65 | 3 | un | 5817-TK6060 | 0 | 5.2.4.7 | 2 |  |
| A4590 |  | Soporte N°003A - Pedestal Tipo TEE, Acero Estructural para Tuberías Diámetros Pequeños | 3d | 2026-01-17 | 2026-01-19 | A4580 | 1d | 0d | SQM-PIPING [8.5 h] | 4,314.43 | 2 | un | 5817-TK6060 | 0 | 5.2.4.6 | 2 |  |
| A4600 |  | Soporte N°003B - Pedestal Tipo TEE, Acero Estructural para Tuberías Diámetros Pequeños | 6d | 2026-01-20 | 2026-01-25 | A4590 | 1d | 0d | SQM-PIPING [12.75 h] | 6,471.65 | 3 | un | 5817-TK6060 | 0 | 5.2.4.5 | 3 |  |
| A4610 |  | Soporte N°004 - Arco Tipo Vertical, Acero Estructural | 2d | 2026-01-26 | 2026-01-27 | A4600 | 1d | 0d | SQM-PIPING [4.25 h] | 2,157.22 | 1 | un | 5817-TK6060 | 0 | 5.2.4.4 | 1 |  |
| A4620 |  | Soporte N°005 - Pedestal y Voladizo Tipo Simple, Acero Estructural para Tuberías Diámetros Pequeños | 4d | 2026-01-28 | 2026-01-31 | A4610 | 1d | 0d | SQM-PIPING [8.5 h] | 4,314.43 | 2 | un | 5817-TK6060 | 0 | 5.2.4.3 | 2 |  |
| A4630 |  | Soporte N°006 - Pedestal y Voladizo Tipo Simple, Acero Estructural para Tuberías Diámetros Pequeños | 4d | 2026-01-28 | 2026-01-31 | A4620 SS | 1d | 0d | SQM-PIPING [8.5 h] | 4,314.43 | 2 | un | 5817-TK6060 | 0 | 5.2.4.2 | 2 |  |
| A4640 |  | Soporte Primario Tipo "U" (Para Uso General) | 13d | 2026-02-01 | 2026-02-13 | A4630, A4550 | 44d | 0d | SQM-PIPING [86.62 h] | 43,969.12 | 450 | un | 5817-TK6060 | 196,5 | 5.2.4.1 | 26 |  |
|  | 4 | **TIE-IN DE LÍNEAS ASOCIADAS A TK-6060 5817** |  | 2026-02-04 | 2026-02-15 |  |  |  |  |  |  |  |  |  |  |  |  |
| A4650 |  | TIE-IN N° 1433 - 5836-EST-3015 a Línea Proyectada 100-DR-5817-P2-6630 | 2d | 2026-02-04 | 2026-02-05 | A4530 FF | 54d | 10d | SQM-PIPING [50.67 h] | 25,717.39 | 1 | un | 5817-TK6060 | 0 | 5.2.3.2 | 1 |  |
| A4660 |  | TIE-IN N° 1434 - 5836-EST-3015 a Línea Proyectada 100-DR-5817-P2-6610 | 2d | 2026-02-14 | 2026-02-15 | A4650 FF, A4640 | 44d |  | SQM-PIPING [50.67 h] | 25,717.39 | 1 | un | 5817-TK6060 | 0 | 5.2.3.1 | 1 |  |
|  | 5 | **AISLACIÓN LÍNEAS TK-6060 5817** |  | 2026-01-08 | 2026-02-12 |  |  |  |  |  |  |  |  |  |  |  |  |
| A4670 |  | Ø 6" - Aislación de Lana Mineral de 1,5" de espesor | 15d | 2026-01-08 | 2026-01-22 | A4490 | 47d | 0d | SQM-PIPING [6005.38 h] | 3,048,208.75 | 1443,6 | un | 5817-TK6060 | 446,89 | 5.2.1.16 | 1709 |  |
| A4680 |  | Ø 4" - Aislación de Lana Mineral de 1,5" de espesor | 7d | 2026-01-23 | 2026-01-29 | A4500, A4670 | 47d | 0d | SQM-PIPING [412.8 h] | 209,529.02 | 86 | un | 5817-TK6060 | 8,59999999999999 | 5.2.1.31 | 53,899789128 |  |
| A4690 |  | Ø 2" - Aislación de Lana Mineral de 1,5" de espesor | 14d | 2026-01-30 | 2026-02-12 | A4510 FF, A4680 | 47d |  | SQM-PIPING [32 h] | 16,242.56 | 10 | un | 5817-TK6060 | 10 | 5.2.1.49 | 16,342386578 |  |
|  | 6 | **RED DE AIRE 5817** |  | 2026-02-06 | 2026-02-28 |  |  |  |  |  |  |  |  |  |  |  |  |
|  | 1 | **FABRICACIÓN Y MONTAJE DE CAÑERÍAS RED DE AIRE 5817** |  | 2026-02-06 | 2026-02-23 |  |  |  |  |  |  |  |  |  |  |  |  |
| A4700 |  | Ø 1" - Cañería Acero Inoxidable - Fabricación | 7d | 2026-02-06 | 2026-02-12 | A4410, A4530 | 0d |  | SQM-PIPING [396 h] | 201,001.68 | 198 | un | AIRE | 171 | 9.1.1.10 | 198 |  |
| A4720 |  | Ø 1" - Cañería Acero Inoxidable - Montaje | 5d | 2026-02-09 | 2026-02-13 | A4700 SS+3d, A4410 | 30d | 0d | SQM-PIPING [174.09 h] | 88,363.76 | 155,9 | m | AIRE | 116,15 | 9.1.1.14 | 155,8135 |  |
| A4710 |  | Ø 3/4" - Cañería Acero Inoxidable - Fabricación | 7d | 2026-02-14 | 2026-02-20 | A4720 | 30d | 0d | SQM-PIPING [224 h] | 113,697.92 | 128 | un | AIRE | 94,7 | 9.1.1.1 | 128 |  |
| A4730 |  | Ø 3/4" - Cañería Acero Inoxidable - Montaje | 3d | 2026-02-21 | 2026-02-23 | A4740 FF, A4750 FF, A4710 | 30d | 0d | SQM-PIPING [12.35 h] | 6,268.78 | 15,8 | m | AIRE | 8,88 | 9.1.1.7 | 11,059 | R FF |

| ID | WBS | Activity | Duration | Start | Finish | Predecessors | Total float | Free float | Resources | Cost | Cantidad | Unidad | Área | Remanente | Ítem EDP | Forecast | Corregir | Impacto |
| --- | --- | --- | --- | --- | --- | --- | --- | --- | --- | --- | --- | --- | --- | --- | --- | --- | --- | --- |
|  | 2 | **MONTAJE DE FITTING Y VÁLVULAS RED DE AIRE 5817** |  | 2026-02-06 | 2026-02-23 |  |  |  |  |  |  |  |  |  |  |  |  |  |
| A4740 |  | Fitting Líneas de Aire (Global) | 18d | 2026-02-06 | 2026-02-23 | A4700 SS | 30d | 0d | SQM-PIPING [674.11 h] | 342,166.52 | 229,972347629797 | un | AIRE | 217,97 | 99.7 | 555,972347629797 |  |  |
| A4750 |  | Válvulas Líneas de Aire (Global) | 18d | 2026-02-06 | 2026-02-23 | A4700 SS | 0d |  | SQM-PIPING [325.88 h] | 165,407.63 | 114 | un | AIRE | 98,7 | 99.16 | 114 |  |  |
|  | 3 | **TIE-IN DE LÍNEAS ASOCIADAS A RED DE AIRE 5817** |  | 2026-02-20 | 2026-02-28 |  |  |  |  |  |  |  |  |  |  |  |  |  |
| A4760 |  | TIE-IN N° 1425 - 150-IA-5771-I1-2486 a Línea Proyectada 25-IA-5771-I1-1630 | 4d | 2026-02-20 | 2026-02-23 | A4730 FF | 30d | 0d | SQM-PIPING [46.67 h] | 23,687.07 | 1 | un | AIRE | 1 | 9.1.3.6 | 1 |  |  |
| A4770 |  | TIE-IN N° 1426 - 25-IA-5871-I1-1644 a Línea Proyectada 25-IA-5871-I1-1634 | 1d | 2026-02-24 | 2026-02-24 | A4760 | 30d | 0d | SQM-PIPING [29 h] | 14,719.82 | 1 | un | AIRE | 1 | 9.1.3.5 | 1 |  |  |
| A4780 |  | TIE-IN N° 1427 - 25-IA-5871-I1-1644 a Línea Proyectada 25-IA-5871-I1-1638 | 1d | 2026-02-25 | 2026-02-25 | A4770 | 30d | 0d | SQM-PIPING [29 h] | 14,719.82 | 1 | un | AIRE | 1 | 9.1.3.4 | 1 |  |  |
| A4790 |  | TIE-IN N° 1428 - LØne Existente (TAG por Confirmar) a Línea Proyectada 25-IA-5871-I1-1642 | 1d | 2026-02-26 | 2026-02-26 | A4780 | 30d | 0d | SQM-PIPING [29 h] | 14,719.82 | 1 | un | AIRE | 1 | 9.1.3.3 | 1 |  |  |
| A4800 |  | TIE-IN N° 1429 - Línea Existente (TAG por Confirmar) a Línea Proyectada 25-IA-5871-I1-1646 | 1d | 2026-02-27 | 2026-02-27 | A4790 | 30d | 0d | SQM-PIPING [29 h] | 14,719.82 | 1 | un | AIRE | 1 | 9.1.3.2 | 1 |  |  |
| A4810 |  | TIE-IN N° 1430 - Línea Existente (TAG por Confirmar) a Línea Proyectada 25-IA-5871-I1-1649 | 1d | 2026-02-28 | 2026-02-28 | A4800 | 30d |  | SQM-PIPING [29 h] | 14,719.82 | 1 | un | AIRE | 1 | 9.1.3.1 | 1 |  |  |
|  | 5 | **OBRAS ELÉCTRICAS TK-6060 5817** |  | 2025-12-05 | 2026-03-31 |  |  |  |  |  |  |  |  |  |  |  |  |  |
|  | 1 | **MONTAJE DE CANALIZACIÓN Y FERRETERÍA TK-6060 5817** |  | 2025-12-05 | 2026-03-07 |  |  |  |  |  |  |  |  |  |  |  |  |  |
| A4820 |  | EPC y Copla Porta Conductores 600x100mm e:2,5 mm, tiras 3m. Incluir tapa dos aguas, eclisas y pernos de Unión. | 12d | 2025-12-05 | 2025-12-16 | A4360, A4330 FF | 86d | 0d | SQM-ELÉCTRICO [616 h] | 312,669.28 | 110 | m | 5817-TK6060 | 0 | 5.3.2.1 | 200 | MODIFICAR FECHA PARA QUE TERMINE DESPUES DEL PIPING |  |
| A4830 |  | EPC Curva de 90°, 600x100mm e:2,5mm. Incluir tapa dos aguas, eclisas y pernos de Unión. | 3d | 2025-12-14 | 2025-12-16 | A4820 FF | 86d | 0d | SQM-ELÉCTRICO [72.8 h] | 36,951.82 | 13 | un | 5817-TK6060 | 0 | 5.3.2.2 | 10 | R FF |  |
| A4840 |  | Canalización y Copla de Conduit de Acero Galvanizado 6"Ø, Conduit ANSI C80.1 | 7d | 2025-12-17 | 2025-12-23 | A4830 | 86d | 0d | SQM-ELÉCTRICO [136.37 h] | 69,220.71 | 34 | m | 5817-TK6060 | 0 | 5.3.2.7 | 110 |  |  |
| A4850 |  | Canalización y Copla de Conduit Flexible Metálico con Cubierta PVC 6" Ø Trabajo Pesado | 3d | 2025-12-24 | 2025-12-26 | A4840 | 86d | 0d | SQM-ELÉCTRICO [10.08 h] | 5,116.41 | 3 | m | 5817-TK6060 | 0 | 5.3.2.3 | 15 |  |  |
| A4860 |  | Canalización y Copla de Conduit de Acero Galvanizado 2 1/2"Ø, Conduit ANSI C80.1 | 3d | 2025-12-27 | 2025-12-29 | A4850 | 86d | 77d | SQM-ELÉCTRICO [11.34 h] | 5,755.96 | 6 | m | 5817-TK6060 | 0 | 5.3.2.9 | 45 |  |  |
| A4900 |  | Canalización y Copla de Conduit de Acero Galvanizado 1 1/2"Ø, Conduit ANSI C80.1 | 7d | 2026-02-24 | 2026-03-02 | A4750 | 0d |  | SQM-ELÉCTRICO [205.38 h] | 104,246.78 | 163 | m | 5817-TK6060 | 0 | 5.3.2.10 | 350 |  |  |
| A4870 |  | Canalización y Copla de Conduit Flexible Metálico con Cubierta PVC 2 1/2" Ø Trabajo Pesado | 1d | 2026-03-03 | 2026-03-03 | A4900 | 0d |  | SQM-ELÉCTRICO [3.78 h] | 1,918.65 | 2 | m | 5817-TK6060 | 0 | 5.3.2.5 | 5 |  |  |
| A4920 |  | Perno de Ensamble de Malla a Tierra en E.P.C. | 2d | 2026-03-03 | 2026-03-04 | A4900 | 12d | 0d | SQM-ELÉCTRICO [12.6 h] | 6,395.51 | 200 | un | 5817-TK6060 | 0 | 5.3.1.1 | 200 |  |  |
| A4910 |  | Canalización y Copla de Conduit Flexible Metálico con Cubierta PVC 1 1/2" Ø Trabajo Pesado | 4d | 2026-03-04 | 2026-03-07 | A4900, A4870 | 0d |  | SQM-ELÉCTRICO [30.74 h] | 15,605.04 | 24,4 | m | 5817-TK6060 | 0 | 5.3.2.6 | 60 |  |  |
|  | 2 | **TENDIDO Y CONEXIONADO DE CABLES DE ALIMENTACIÓN TK-6060 5817** |  | 2026-03-08 | 2026-03-26 |  |  |  |  |  |  |  |  |  |  |  |  |  |
| A4930 |  | Cable Monoconductor de Cobre con Aislación XLPE, 1C #500 MCM, Clase 1 kV | 15d | 2026-03-08 | 2026-03-22 | A4910 | 0d |  | SQM-ELÉCTRICO [1945.44 h] | 987,466.44 | 2520 | m | 5817-TK6060 | 0 | 5.3.3.7 | 2250 |  |  |
| A4990 |  | Cable Multiconductor de Cobre con Aislación XLPE, 1X4C #2 AWG, Clase 1 kV | 2d | 2026-03-09 | 2026-03-10 | A5000 SS | 12d | 0d | SQM-ELÉCTRICO [23.38 h] | 11,869.25 | 37 | m | 5817-TK6060 | 0 | 5.3.3.2 | 50 |  |  |
| A5000 |  | Cable Multiconductor de Cobre con Aislación de XLPE, 1x5C #12 AWG, Clase 1 kV | 2d | 2026-03-09 | 2026-03-10 | A5010, A4910 | 12d | 0d | SQM-ELÉCTRICO [38.36 h] | 19,470.77 | 105 | m | 5817-TK6060 | 0 | 5.3.3.6 | 130 |  |  |
| A4970 |  | Cable Multiconductor de Cobre con Aislación XLPE, 1X3C #4 AWG, Clase 1 kV | 3d | 2026-03-11 | 2026-03-13 | A4980 SS | 12d | 0d | SQM-ELÉCTRICO [121.95 h] | 61,901.41 | 217 | m | 5817-TK6060 | 0 | 5.3.3.5 | 280 |  | SUM M-13 F.Entrega: 17-12-25 |
| A4980 |  | Cable Multiconductor de Cobre con Aislación XLPE, 1X4C #10 AWG, Clase 1 kV | 2d | 2026-03-11 | 2026-03-12 | A4990 | 12d | 0d | SQM-ELÉCTRICO [9.2 h] | 4,668.21 | 17 | m | 5817-TK6060 | 0 | 5.3.3.3 | 20 |  |  |
| A4960 |  | Cable Multiconductor de Cobre con Aislación XLPE, 1X3C #8 AWG, Clase 1 kV | 8d | 2026-03-14 | 2026-03-21 | A4970 | 12d |  | SQM-ELÉCTRICO [305.67 h] | 155,149.44 | 565 | m | 5817-TK6060 | 0 | 5.3.3.4 | 710 |  |  |
| A4940 |  | Cable Monoconductor de Cobre con Aislación XLPE, 1C #250 MCM, Clase 1 kV | 3d | 2026-03-23 | 2026-03-25 | A4930 | 0d |  | SQM-ELÉCTRICO [85.95 h] | 43,627.52 | 136 | m | 5817-TK6060 | 0 | 5.3.3.8 | 170 |  | SUM M-13 F.Entrega: 17-12-25 |
| A4950 |  | Cable Multiconductor de Cobre con Aislación XLPE, 1X4C #8 AWG, Clase 1 kV | 1d | 2026-03-26 | 2026-03-26 | A4960 SS, A4940 | 0d |  | SQM-ELÉCTRICO [9.2 h] | 4,668.21 | 17 | m | 5817-TK6060 | 0 | 5.3.3.1 | 20 |  |  |

| ID | WBS | Activity | Duration | Start | Finish | Predecessors | Total float | Free float | Resources | Cost | Cantidad | Unidad | Área | Remanente | Impacto | Ítem EDP | Forecast |
| --- | --- | --- | --- | --- | --- | --- | --- | --- | --- | --- | --- | --- | --- | --- | --- | --- | --- |
|  | 3 | **MONTAJE DE POSTACIÓN TK-6060 5817** |  | 2026-03-05 | 2026-03-08 |  |  |  |  |  |  |  |  |  |  |  |  |
| A5010 |  | Poste de Acero Galvanizado para Iluminación. | 4d | 2026-03-05 | 2026-03-08 | A4920 | 12d | 0d | SQM-ELÉCTRICO [130 h] | 65,985.4 | 16 | un | 5817-TK6060 | 0 | LDO N°25 | 5.3.6.1 | 16 |
|  | 4 | **MONTAJE Y CONEXIONADO DE EQUIPOS ELÉCTRICOS TK-6060** |  | 2026-02-24 | 2026-03-30 |  |  |  |  |  |  |  |  |  |  |  |  |
| A5020 |  | Tablero Partidor de Motores TAG: 5817-TPM-1501 | 3d | 2026-02-24 | 2026-02-26 | A4900 SS | 25d | 0d | SQM-ELÉCTRICO [124.1 h] | 62,990.68 | 1 | gl | 5817-TK6060 | 0 | LDO N°19-22; SDC N°55 | 5.3.4.9 | 1 |
| A5030 |  | Conexión de Motor TAG: 5817-MTR-6078 a TPM TAG: 5817-TPM-1501. | 1d | 2026-03-27 | 2026-03-27 | A4950, A5020 | 0d |  | SQM-ELÉCTRICO [4.12 h] | 2,093.77 | 1 | gl | 5817-TK6060 | 0 |  | 5.3.4.2 | 1 |
| A5040 |  | Conexión de Motor TAG: 5817-MTR-6070 a TPM TAG: 5817-TPM-1501. | 1d | 2026-03-27 | 2026-03-27 | A5030 SS | 0d |  | SQM-ELÉCTRICO [4.12 h] | 2,093.77 | 1 | gl | 5817-TK6060 | 0 |  | 5.3.4.5 | 1 |
| A5050 |  | Conexión de Motor TAG: 5817-MTR-6073 a TPM TAG: 5817-TPM-1501. | 1d | 2026-03-28 | 2026-03-28 | A5040 | 0d |  | SQM-ELÉCTRICO [4.12 h] | 2,093.77 | 1 | gl | 5817-TK6060 | 0 |  | 5.3.4.4 | 1 |
| A5060 |  | Conexión de Motor TAG: 5817-MTR-6062 a TPM TAG: 5817-TPM-1501. | 1d | 2026-03-28 | 2026-03-28 | A5050 SS | 0d |  | SQM-ELÉCTRICO [4.12 h] | 2,093.77 | 1 | gl | 5817-TK6060 | 0 |  | 5.3.4.6 | 1 |
| A5070 |  | Conexión de Motor TAG: 5817-MTR-6076 a TPM TAG: 5817-TPM-1501. | 1d | 2026-03-29 | 2026-03-29 | A5060 | 0d |  | SQM-ELÉCTRICO [4.12 h] | 2,093.77 | 1 | gl | 5817-TK6060 | 0 |  | 5.3.4.3 | 1 |
| A5080 |  | Conexión de Tablero Partidor de Motores TAG: 5817-TPM-1501 a Sala Eléctrica TAG: SEL-4016. | 1d | 2026-03-29 | 2026-03-29 | A5070 SS | 0d |  | SQM-ELÉCTRICO [4.12 h] | 2,093.77 | 1 | gl | 5817-TK6060 | 0 |  | 5.3.4.1 | 1 |
| A5090 |  | Conexión de Luminarias Tipo Pedestal. | 2d | 2026-03-29 | 2026-03-30 | A5080 SS | 0d |  | SQM-ELÉCTRICO [28.88 h] | 14,656.37 | 7 | un | 5817-TK6060 | 0 |  | 5.3.4.8 | 7 |
| A5100 |  | Conexión de Luminarias Tipo Proyector. | 2d | 2026-03-29 | 2026-03-30 | A5090 SS, A5000 | 0d |  | SQM-ELÉCTRICO [37.12 h] | 18,843.91 | 9 | un | 5817-TK6060 | 0 |  | 5.3.4.7 | 9 |
|  | 5 | **PRUEBAS DE FUNCIONAMIENTO Y PEM TK-6060** |  | 2026-03-31 | 2026-03-31 |  |  |  |  |  |  |  |  |  |  |  |  |
| A5110 |  | Pruebas de Funcionamiento y Puesta en Marcha de Motor TAG: 5817-MTR-6078. | 1d | 2026-03-31 | 2026-03-31 | A5100 | 0d |  | SQM-ELÉCTRICO [12 h] | 6,090.96 | 1 | gl | 5817-TK6060 | 0,9 |  | 5.3.5.1 | 1 |
| A5120 |  | Pruebas de Funcionamiento y Puesta en Marcha de Motor TAG: 5817-MTR-6070. | 1d | 2026-03-31 | 2026-03-31 | A5110 SS | 0d |  | SQM-ELÉCTRICO [12 h] | 6,090.96 | 1 | gl | 5817-TK6060 | 0,9 |  | 5.3.5.4 | 1 |
| A5130 |  | Pruebas de Funcionamiento y Puesta en Marcha de Motor TAG: 5817-MTR-6073. | 1d | 2026-03-31 | 2026-03-31 | A5120 SS | 0d |  | SQM-ELÉCTRICO [12 h] | 6,090.96 | 1 | gl | 5817-TK6060 | 0,9 |  | 5.3.5.3 | 1 |
| A5140 |  | Pruebas de Funcionamiento y Puesta en Marcha de Motor TAG: 5817-MTR-6062. | 1d | 2026-03-31 | 2026-03-31 | A5130 SS | 0d |  | SQM-ELÉCTRICO [12 h] | 6,090.96 | 1 | gl | 5817-TK6060 | 0,9 |  | 5.3.5.5 | 1 |
| A5150 |  | Pruebas de Funcionamiento y Puesta en Marcha de Motor TAG: 5817-MTR-6076. | 1d | 2026-03-31 | 2026-03-31 | A5140 SS | 0d |  | SQM-ELÉCTRICO [12 h] | 6,090.96 | 1 | gl | 5817-TK6060 | 0,9 |  | 5.3.5.2 | 1 |
| A5160 |  | Pruebas de Funcionamiento y Puesta de Luminarias Tipo Pedestal. | 1d | 2026-03-31 | 2026-03-31 | A5150 SS | 0d |  | SQM-ELÉCTRICO [12 h] | 6,090.96 | 1 | gl | 5817-TK6060 | 0,9 |  | 5.3.5.7 | 1 |
| A5170 |  | Pruebas de Funcionamiento y Puesta de Luminarias Tipo Proyector. | 1d | 2026-03-31 | 2026-03-31 | A5160 SS | 0d |  | SQM-ELÉCTRICO [12 h] | 6,090.96 | 1 | gl | 5817-TK6060 | 0,9 |  | 5.3.5.6 | 1 |
|  | 6 | **OBRAS DE INSTRUMENTACIÓN TK-6060** |  | 2026-02-24 | 2026-03-31 |  |  |  |  |  |  |  |  |  |  |  |  |
|  | 1 | **MONTAJE DE CANALIZACIÓN Y FERRETERÍA INST. TK-6060** |  | 2026-02-24 | 2026-03-21 |  |  |  |  |  |  |  |  |  |  |  |  |
| A5200 |  | Canalización y Copla de Conduit de Acero Galvanizado 1"Ø, Conduit ANSI C80.1 | 21d | 2026-02-24 | 2026-03-16 | A4900 SS | 0d |  | SQM-INSTRUMENTACIÓN [1179.36 h] |  | 936 | m | 5817-TK6060 | 0 |  | 5.4.1.3 | 1500 |
| A5210 |  | Canalización y Copla de Conduit Flexible Metálico con Cubierta PVC 1" Ø Trabajo Pesado | 5d | 2026-03-17 | 2026-03-21 | A5200, A4860 | 9d |  | SQM-INSTRUMENTACIÓN [89.59 h] |  | 71,1 | m | 5817-TK6060 | 0 |  | 5.4.1.4 | 150 |

| ID | WBS | Activity | Duration | Start | Finish | Predecessors | Total float | Resources | Cantidad | Unidad | Área | Remanente | Impacto | Ítem EDP | Forecast |
| --- | --- | --- | --- | --- | --- | --- | --- | --- | --- | --- | --- | --- | --- | --- | --- |
|  | 2 | **TENDIDO Y CONEXIONADO DE CABLES DE INSTRUMENTACIÓN TK-6060** |  | 2026-02-24 | 2026-03-23 |  |  |  |  |  |  |  |  |  |  |
| A5220 |  | Cable Multiconductor de Cobre con Aislación de XLPE, 1x3C #12 AWG, Clase 1 kV | 14d | 2026-02-24 | 2026-03-09 | A5200 SS | 0d | SQM-INSTRUMENTACIÓN [365.33 h] | 1000 | m | 5817-TK6060 | 0 | SUM E-13 F.Entrega: 17-12-25 | 5.4.2.1 | 1400 |
| A5230 |  | Cable de Instrumentación (Señales Análogas), 1x1 par #16 AWG Apantallado | 5d | 2026-03-10 | 2026-03-14 | A5220 | 0d | SQM-INSTRUMENTACIÓN [74 h] | 250 | m | 5817-TK6060 | 0 | SUM E-13 F.Entrega: 17-12-25 | 5.4.2.3 | 230 |
| A5240 |  | Cable Multiconductor de Cobre Blando 1x3C #12 AWG, Clase 0,3 | 4d | 2026-03-10 | 2026-03-13 | A5230 SS | 0d | SQM-INSTRUMENTACIÓN [299.21 h] | 819 | m | 5817-TK6060 | 0 | SUM E-13 F.Entrega: 17-12-25 | 5.4.2.5 | 600 |
| A5250 |  | Cable Multiconductor de Cobre Blando 1x5C #12 AWG, Clase 0,3 | 4d | 2026-03-14 | 2026-03-17 | A5240 | 0d | SQM-INSTRUMENTACIÓN [300.3 h] | 822 | m | 5817-TK6060 | 0 |  | 5.4.2.4 | 600 |
| A5260 |  | Conductor Fibra Óptica Multimodo 12 Hilos | 10d | 2026-03-14 | 2026-03-23 | A5250 SS | 0d | SQM-INSTRUMENTACIÓN [315.48 h] | 660 | m | 5817-TK6060 | 0 |  | 5.4.2.2 | 850 |
|  | 3 | **MONTAJE Y CONEXIONADO DE EQUIPOS E INSTRUMENTOS TK-6060** |  | 2026-02-27 | 2026-03-26 |  |  |  |  |  |  |  |  |  |  |
| A5270 |  | Pruebas de Funcionamiento y Puesta en Marcha de TAG: 5817-RIO-1501. | 1d | 2026-02-27 | 2026-02-27 | A5020 | 25d | SQM-INSTRUMENTACIÓN [12 h] | 1 | gl | 5817-TK6060 | 1 | SUM E-13 F.Entrega: 17-12-25 | 5.4.3.35 | 1 |
| A5280 |  | Conexión de Fibra Óptica en RIO y Sala Eléctrica TAG: SEL-4016. | 1d | 2026-03-24 | 2026-03-24 | A5270 SS, A5260 | 0d | SQM-INSTRUMENTACIÓN [4.12 h] | 1 | gl | 5817-TK6060 | 0 |  | 5.4.3.1 | 1 |
| A5290 |  | Instrumento TAG: FIT-6207 a Panel de Señales Remotas TAG: 5817-RIO-1501. | 1d | 2026-03-24 | 2026-03-24 | A5280 SS | 0d | SQM-INSTRUMENTACIÓN [21.75 h] | 1 | gl | 5817-TK6060 | 0 |  | 5.4.3.33 | 1 |
| A5300 |  | Instrumento TAG: FIT-6209 a Panel de Señales Remotas TAG: 5817-RIO-1501. | 1d | 2026-03-24 | 2026-03-24 | A5290 SS | 0d | SQM-INSTRUMENTACIÓN [21.75 h] | 1 | gl | 5817-TK6060 | 0 |  | 5.4.3.32 | 1 |
| A5310 |  | Instrumento TAG: FIT-6260 a Panel de Señales Remotas TAG: 5817-RIO-1501. | 1d | 2026-03-24 | 2026-03-24 | A5300 SS | 0d | SQM-INSTRUMENTACIÓN [21.75 h] | 1 | gl | 5817-TK6060 | 0 |  | 5.4.3.31 | 1 |
| A5320 |  | Instrumento TAG: FIT-6261 a Panel de Señales Remotas TAG: 5817-RIO-1501. | 1d | 2026-03-24 | 2026-03-24 | A5310 SS | 0d | SQM-INSTRUMENTACIÓN [21.75 h] | 1 | gl | 5817-TK6060 | 0 |  | 5.4.3.30 | 1 |
| A5330 |  | Instrumento TAG: DIT-6279 a Panel de Señales Remotas TAG: 5817-RIO-1501. | 1d | 2026-03-24 | 2026-03-24 | A5320 SS | 0d | SQM-INSTRUMENTACIÓN [21.75 h] | 1 | gl | 5817-TK6060 | 0 |  | 5.4.3.34 | 1 |
| A5340 |  | Instrumento TAG: PIT-6226 a Panel de Señales Remotas TAG: 5817-RIO-1501. | 1d | 2026-03-24 | 2026-03-24 | A5330 SS | 0d | SQM-INSTRUMENTACIÓN [12 h] | 1 | gl | 5817-TK6060 | 0 |  | 5.4.3.26 | 1 |
| A5350 |  | Instrumento TAG: PIT-6236 a Panel de Señales Remotas TAG: 5817-RIO-1501. | 1d | 2026-03-24 | 2026-03-24 | A5340 SS | 0d | SQM-INSTRUMENTACIÓN [12 h] | 1 | gl | 5817-TK6060 | 0 |  | 5.4.3.25 | 1 |
| A5360 |  | Instrumento TAG: PIT-6222 a Panel de Señales Remotas TAG: 5817-RIO-1501. | 1d | 2026-03-24 | 2026-03-24 | A5350 SS | 0d | SQM-INSTRUMENTACIÓN [12 h] | 1 | gl | 5817-TK6060 | 0 |  | 5.4.3.27 | 1 |
| A5370 |  | Instrumento TAG: FV-6208 a Panel de Señales Remotas TAG: 5817-RIO-1501. | 1d | 2026-03-24 | 2026-03-24 | A5360 SS | 0d | SQM-INSTRUMENTACIÓN [21.75 h] | 1 | gl | 5817-TK6060 | 0 |  | 5.4.3.29 | 1 |
| A5380 |  | Instrumento TAG: FV-6217 a Panel de Señales Remotas TAG: 5817-RIO-1501. | 1d | 2026-03-25 | 2026-03-25 | A5370 | 0d | SQM-INSTRUMENTACIÓN [21.75 h] | 1 | gl | 5817-TK6060 | 0 |  | 5.4.3.28 | 1 |
| A5390 |  | Instrumento TAG: XV-1178 a Panel de Señales Remotas TAG: 5817-RIO-1501. | 1d | 2026-03-25 | 2026-03-25 | A5380 SS | 0d | SQM-INSTRUMENTACIÓN [21.75 h] | 1 | gl | 5817-TK6060 | 0 |  | 5.4.3.24 | 1 |
| A5400 |  | Instrumento TAG: XV-1179 a Panel de Señales Remotas TAG: 5817-RIO-1501. | 1d | 2026-03-25 | 2026-03-25 | A5390 SS | 0d | SQM-INSTRUMENTACIÓN [21.75 h] | 1 | gl | 5817-TK6060 | 0 |  | 5.4.3.23 | 1 |
| A5410 |  | Instrumento TAG: XV-1180 a Panel de Señales Remotas TAG: 5817-RIO-1501. | 1d | 2026-03-25 | 2026-03-25 | A5400 SS | 0d | SQM-INSTRUMENTACIÓN [21.75 h] | 1 | gl | 5817-TK6060 | 0 |  | 5.4.3.22 | 1 |
| A5420 |  | Instrumento TAG: XV-1181 a Panel de Señales Remotas TAG: 5817-RIO-1501. | 1d | 2026-03-25 | 2026-03-25 | A5410 SS | 0d | SQM-INSTRUMENTACIÓN [21.75 h] | 1 | gl | 5817-TK6060 | 0 |  | 5.4.3.21 | 1 |
| A5430 |  | Instrumento TAG: XV-1182 a Panel de Señales Remotas TAG: 5817-RIO-1501. | 1d | 2026-03-25 | 2026-03-25 | A5420 SS | 0d | SQM-INSTRUMENTACIÓN [21.75 h] | 1 | gl | 5817-TK6060 | 0 |  | 5.4.3.20 | 1 |
| A5440 |  | Instrumento TAG: XV-6206 a Panel de Señales Remotas TAG: 5817-RIO-1501. | 1d | 2026-03-25 | 2026-03-25 | A5430 SS | 0d | SQM-INSTRUMENTACIÓN [21.75 h] | 1 | gl | 5817-TK6060 | 0 |  | 5.4.3.19 | 1 |
| A5450 |  | Instrumento TAG: XV-6209 a Panel de Señales Remotas TAG: 5817-RIO-1501. | 1d | 2026-03-25 | 2026-03-25 | A5440 SS | 0d | SQM-INSTRUMENTACIÓN [21.75 h] | 1 | gl | 5817-TK6060 | 0 |  | 5.4.3.18 | 1 |
| A5460 |  | Instrumento TAG: XV-6216 a Panel de Señales Remotas TAG: 5817-RIO-1501. | 1d | 2026-03-25 | 2026-03-25 | A5450 SS | 0d | SQM-INSTRUMENTACIÓN [21.75 h] | 1 | gl | 5817-TK6060 | 0 |  | 5.4.3.17 | 1 |
| A5470 |  | Instrumento TAG: XV-6219 a Panel de Señales Remotas TAG: 5817-RIO-1501. | 1d | 2026-03-25 | 2026-03-25 | A5460 SS | 0d | SQM-INSTRUMENTACIÓN [21.75 h] | 1 | gl | 5817-TK6060 | 0 |  | 5.4.3.16 | 1 |
| A5480 |  | Instrumento TAG: XV-6223 a Panel de Señales Remotas TAG: 5817-RIO-1501. | 1d | 2026-03-25 | 2026-03-25 | A5470 SS | 0d | SQM-INSTRUMENTACIÓN [21.75 h] | 1 | gl | 5817-TK6060 | 1 |  | 5.4.3.15 | 1 |
| A5490 |  | Instrumento TAG: XV-6223 a Panel de Señales Remotas TAG: 5817-RIO-1501. | 1d | 2026-03-25 | 2026-03-25 | A5480 SS | 0d | SQM-INSTRUMENTACIÓN [21.75 h] | 1 | gl | 5817-TK6060 | 0 |  | 5.4.3.14 | 1 |
| A5500 |  | Instrumento TAG: XV-6224 a Panel de Señales Remotas TAG: 5817-RIO-1501. | 1d | 2026-03-26 | 2026-03-26 | A5490 | 0d | SQM-INSTRUMENTACIÓN [21.75 h] | 1 | gl | 5817-TK6060 | 0 |  | 5.4.3.13 | 1 |
| A5510 |  | Instrumento TAG: XV-6225 a Panel de Señales Remotas TAG: 5817-RIO-1501. | 1d | 2026-03-26 | 2026-03-26 | A5500 SS | 0d | SQM-INSTRUMENTACIÓN [21.75 h] | 1 | gl | 5817-TK6060 | 0 |  | 5.4.3.12 | 1 |
| A5520 |  | Instrumento TAG: XV-6226 a Panel de Señales Remotas TAG: 5817-RIO-1501. | 1d | 2026-03-26 | 2026-03-26 | A5510 SS | 0d | SQM-INSTRUMENTACIÓN [21.75 h] | 1 | gl | 5817-TK6060 | 0 |  | 5.4.3.11 | 1 |
| A5530 |  | Instrumento TAG: XV-6227 a Panel de Señales Remotas TAG: 5817-RIO-1501. | 1d | 2026-03-26 | 2026-03-26 | A5520 SS | 0d | SQM-INSTRUMENTACIÓN [21.75 h] | 1 | gl | 5817-TK6060 | 0 |  | 5.4.3.10 | 1 |
| A5540 |  | Instrumento TAG: XV-6228 a Panel de Señales Remotas TAG: 5817-RIO-1501. | 1d | 2026-03-26 | 2026-03-26 | A5530 SS | 0d | SQM-INSTRUMENTACIÓN [21.75 h] | 1 | gl | 5817-TK6060 | 0 |  | 5.4.3.9 | 1 |
| A5550 |  | Instrumento TAG: XV-6233 a Panel de Señales Remotas TAG: 5817-RIO-1501. | 1d | 2026-03-26 | 2026-03-26 | A5540 SS | 0d | SQM-INSTRUMENTACIÓN [21.75 h] | 1 | gl | 5817-TK6060 | 0 |  | 5.4.3.8 | 1 |
| A5560 |  | Instrumento TAG: XV-6234 a Panel de Señales Remotas TAG: 5817-RIO-1501. | 1d | 2026-03-26 | 2026-03-26 | A5550 SS | 0d | SQM-INSTRUMENTACIÓN [21.75 h] | 1 | gl | 5817-TK6060 | 0 |  | 5.4.3.7 | 1 |
| A5570 |  | Instrumento TAG: XV-6237 a Panel de Señales Remotas TAG: 5817-RIO-1501. | 1d | 2026-03-26 | 2026-03-26 | A5560 SS | 0d | SQM-INSTRUMENTACIÓN [21.75 h] | 1 | gl | 5817-TK6060 | 0 |  | 5.4.3.6 | 1 |
| A5580 |  | Instrumento TAG: XV-6238 a Panel de Señales Remotas TAG: 5817-RIO-1501. | 1d | 2026-03-26 | 2026-03-26 | A5570 SS | 0d | SQM-INSTRUMENTACIÓN [21.75 h] | 1 | gl | 5817-TK6060 | 0 |  | 5.4.3.5 | 1 |
| A5590 |  | Instrumento TAG: XV-6243 a Panel de Señales Remotas TAG: 5817-RIO-1501. | 1d | 2026-03-26 | 2026-03-26 | A5580 SS | 0d | SQM-INSTRUMENTACIÓN [21.75 h] | 1 | gl | 5817-TK6060 | 0 |  | 5.4.3.4 | 1 |
| A5600 |  | Instrumento TAG: XV-6259 a Panel de Señales Remotas TAG: 5817-RIO-1501. | 1d | 2026-03-26 | 2026-03-26 | A5590 SS | 0d | SQM-INSTRUMENTACIÓN [21.75 h] | 1 | gl | 5817-TK6060 | 0 |  | 5.4.3.3 | 1 |
| A5610 |  | Instrumento TAG: XV-6263 a Panel de Señales Remotas TAG: 5817-RIO-1501. | 1d | 2026-03-26 | 2026-03-26 | A5600 SS | 0d | SQM-INSTRUMENTACIÓN [21.75 h] | 1 | gl | 5817-TK6060 | 0 |  | 5.4.3.2 | 1 |

| ID | WBS | Activity | Duration | Start | Finish | Predecessors | Total float | Resources | Cantidad | Unidad | Área | Remanente | Impacto | Ítem EDP | Forecast |
| --- | --- | --- | --- | --- | --- | --- | --- | --- | --- | --- | --- | --- | --- | --- | --- |
|  | 4 | **PRUEBAS DE FUNCIONAMIENTO Y PEM INST. TK-6060** |  | 2026-03-27 | 2026-03-31 |  |  |  |  |  |  |  |  |  |  |
| A5620 |  | Pruebas de Funcionamiento y Puesta en Marcha de TAG: 5817-RIO-1501. | 2d | 2026-03-27 | 2026-03-28 | A5610 | 0d | SQM-INSTRUMENTACIÓN [12 h] | 1 | gl | 5817-TK6060 | 1 | SUM E-13 F.Entrega: 17-12-25 | 5.4.4.34 | 1 |
| A5630 |  | Pruebas de Operación y Puesta en Marcha de Instrumento TAG: FIT-6207 | 1d | 2026-03-29 | 2026-03-29 | A5620 | 0d | SQM-INSTRUMENTACIÓN [12 h] | 1 | gl | 5817-TK6060 | 0,82 | SDC N°55 | 5.4.4.32 | 1 |
| A5640 |  | Pruebas de Operación y Puesta en Marcha de Instrumento TAG: FIT-6209 | 1d | 2026-03-29 | 2026-03-29 | A5630 SS | 0d | SQM-INSTRUMENTACIÓN [12 h] | 1 | gl | 5817-TK6060 | 0,82 |  | 5.4.4.31 | 1 |
| A5650 |  | Pruebas de Operación y Puesta en Marcha de Instrumento TAG: FIT-6260 | 1d | 2026-03-29 | 2026-03-29 | A5640 SS | 0d | SQM-INSTRUMENTACIÓN [12 h] | 1 | gl | 5817-TK6060 | 0,82 |  | 5.4.4.30 | 1 |
| A5660 |  | Pruebas de Operación y Puesta en Marcha de Instrumento TAG: FIT-6261 | 1d | 2026-03-29 | 2026-03-29 | A5650 SS | 0d | SQM-INSTRUMENTACIÓN [12 h] | 1 | gl | 5817-TK6060 | 0,82 |  | 5.4.4.29 | 1 |
| A5670 |  | Pruebas de Operación y Puesta en Marcha de Instrumento TAG: DIT-6279 | 1d | 2026-03-29 | 2026-03-29 | A5660 SS | 0d | SQM-INSTRUMENTACIÓN [12 h] | 1 | gl | 5817-TK6060 | 0,82 |  | 5.4.4.33 | 1 |
| A5680 |  | Pruebas de Operación y Puesta en Marcha de Instrumento TAG: PIT-6226 | 1d | 2026-03-29 | 2026-03-29 | A5670 SS | 0d | SQM-INSTRUMENTACIÓN [12 h] | 1 | gl | 5817-TK6060 | 0,82 |  | 5.4.4.25 | 1 |
| A5690 |  | Pruebas de Operación y Puesta en Marcha de Instrumento TAG: PIT-6236 | 1d | 2026-03-29 | 2026-03-29 | A5680 SS | 0d | SQM-INSTRUMENTACIÓN [12 h] | 1 | gl | 5817-TK6060 | 0,82 |  | 5.4.4.24 | 1 |
| A5700 |  | Pruebas de Operación y Puesta en Marcha de Instrumento TAG: PIT-6222 | 1d | 2026-03-29 | 2026-03-29 | A5690 SS | 0d | SQM-INSTRUMENTACIÓN [12 h] | 1 | gl | 5817-TK6060 | 0,82 |  | 5.4.4.26 | 1 |
| A5710 |  | Pruebas de Operación y Puesta en Marcha de Instrumento TAG: FV-6208 | 1d | 2026-03-29 | 2026-03-29 | A5700 SS | 0d | SQM-INSTRUMENTACIÓN [12 h] | 1 | gl | 5817-TK6060 | 0,82 |  | 5.4.4.28 | 1 |
| A5720 |  | Pruebas de Operación y Puesta en Marcha de Instrumento TAG: FV-6217 | 1d | 2026-03-29 | 2026-03-29 | A5710 SS | 0d | SQM-INSTRUMENTACIÓN [12 h] | 1 | gl | 5817-TK6060 | 0,82 |  | 5.4.4.27 | 1 |
| A5730 |  | Pruebas de Operación y Puesta en Marcha de Instrumento TAG: XV-1178 | 1d | 2026-03-29 | 2026-03-29 | A5720 SS | 0d | SQM-INSTRUMENTACIÓN [12 h] | 1 | gl | 5817-TK6060 | 0,82 |  | 5.4.4.23 | 1 |
| A5740 |  | Pruebas de Operación y Puesta en Marcha de Instrumento TAG: XV-1179 | 1d | 2026-03-29 | 2026-03-29 | A5730 SS | 0d | SQM-INSTRUMENTACIÓN [12 h] | 1 | gl | 5817-TK6060 | 0,82 |  | 5.4.4.22 | 1 |
| A5750 |  | Pruebas de Operación y Puesta en Marcha de Instrumento TAG: XV-1180 | 1d | 2026-03-29 | 2026-03-29 | A5740 SS | 0d | SQM-INSTRUMENTACIÓN [12 h] | 1 | gl | 5817-TK6060 | 0,82 |  | 5.4.4.21 | 1 |
| A5760 |  | Pruebas de Operación y Puesta en Marcha de Instrumento TAG: XV-1181 | 1d | 2026-03-30 | 2026-03-30 | A5750 | 0d | SQM-INSTRUMENTACIÓN [12 h] | 1 | gl | 5817-TK6060 | 0,82 |  | 5.4.4.20 | 1 |
| A5770 |  | Pruebas de Operación y Puesta en Marcha de Instrumento TAG: XV-1182 | 1d | 2026-03-30 | 2026-03-30 | A5760 SS | 0d | SQM-INSTRUMENTACIÓN [12 h] | 1 | gl | 5817-TK6060 | 0,82 |  | 5.4.4.19 | 1 |
| A5780 |  | Pruebas de Operación y Puesta en Marcha de Instrumento TAG: XV-6206 | 1d | 2026-03-30 | 2026-03-30 | A5770 SS | 0d | SQM-INSTRUMENTACIÓN [12 h] | 1 | gl | 5817-TK6060 | 0,82 |  | 5.4.4.18 | 1 |
| A5790 |  | Pruebas de Operación y Puesta en Marcha de Instrumento TAG: XV-6209 | 1d | 2026-03-30 | 2026-03-30 | A5780 SS | 0d | SQM-INSTRUMENTACIÓN [12 h] | 1 | gl | 5817-TK6060 | 0,82 |  | 5.4.4.17 | 1 |
| A5800 |  | Pruebas de Operación y Puesta en Marcha de Instrumento TAG: XV-6216 | 1d | 2026-03-30 | 2026-03-30 | A5790 SS | 0d | SQM-INSTRUMENTACIÓN [12 h] | 1 | gl | 5817-TK6060 | 0,82 |  | 5.4.4.16 | 1 |
| A5810 |  | Pruebas de Operación y Puesta en Marcha de Instrumento TAG: XV-6219 | 1d | 2026-03-30 | 2026-03-30 | A5800 SS | 0d | SQM-INSTRUMENTACIÓN [12 h] | 1 | gl | 5817-TK6060 | 0,82 |  | 5.4.4.15 | 1 |
| A5820 |  | Pruebas de Operación y Puesta en Marcha de Instrumento TAG: XV-6223 | 1d | 2026-03-30 | 2026-03-30 | A5810 SS | 0d | SQM-INSTRUMENTACIÓN [12 h] | 1 | gl | 5817-TK6060 | 0,82 |  | 5.4.4.13 | 1 |
| A5830 |  | Pruebas de Operación y Puesta en Marcha de Instrumento TAG: XV-6223 | 1d | 2026-03-30 | 2026-03-30 | A5820 SS | 0d | SQM-INSTRUMENTACIÓN [12 h] | 1 | gl | 5817-TK6060 | 0,82 |  | 5.4.4.13 | 1 |
| A5840 |  | Pruebas de Operación y Puesta en Marcha de Instrumento TAG: XV-6224 | 1d | 2026-03-30 | 2026-03-30 | A5830 SS | 0d | SQM-INSTRUMENTACIÓN [12 h] | 1 | gl | 5817-TK6060 | 0,82 |  | 5.4.4.12 | 1 |
| A5850 |  | Pruebas de Operación y Puesta en Marcha de Instrumento TAG: XV-6225 | 1d | 2026-03-30 | 2026-03-30 | A5840 SS | 0d | SQM-INSTRUMENTACIÓN [12 h] | 1 | gl | 5817-TK6060 | 0,82 |  | 5.4.4.11 | 1 |
| A5860 |  | Pruebas de Operación y Puesta en Marcha de Instrumento TAG: XV-6226 | 1d | 2026-03-30 | 2026-03-30 | A5850 SS | 0d | SQM-INSTRUMENTACIÓN [12 h] | 1 | gl | 5817-TK6060 | 0,82 |  | 5.4.4.10 | 1 |
| A5870 |  | Pruebas de Operación y Puesta en Marcha de Instrumento TAG: XV-6227 | 1d | 2026-03-30 | 2026-03-30 | A5860 SS | 0d | SQM-INSTRUMENTACIÓN | 0 | gl | 5817-TK6060 | 0,82 |  | 5.4.4.9 | 1 |
| A5880 |  | Pruebas de Operación y Puesta en Marcha de Instrumento TAG: XV-6228 | 1d | 2026-03-31 | 2026-03-31 | A5870 | 0d | SQM-INSTRUMENTACIÓN [24 h] | 2 | gl | 5817-TK6060 | 0,82 |  | 5.4.4.8 | 1 |
| A5890 |  | Pruebas de Operación y Puesta en Marcha de Instrumento TAG: XV-6233 | 1d | 2026-03-31 | 2026-03-31 | A5880 SS | 0d | SQM-INSTRUMENTACIÓN [12 h] | 1 | gl | 5817-TK6060 | 0,82 |  | 5.4.4.7 | 1 |
| A5900 |  | Pruebas de Operación y Puesta en Marcha de Instrumento TAG: XV-6234 | 1d | 2026-03-31 | 2026-03-31 | A5890 SS | 0d | SQM-INSTRUMENTACIÓN [12 h] | 1 | gl | 5817-TK6060 | 0,82 |  | 5.4.4.6 | 1 |
| A5910 |  | Pruebas de Operación y Puesta en Marcha de Instrumento TAG: XV-6237 | 1d | 2026-03-31 | 2026-03-31 | A5900 SS | 0d | SQM-INSTRUMENTACIÓN [12 h] | 1 | gl | 5817-TK6060 | 0,82 |  | 5.4.4.5 | 1 |
| A5920 |  | Pruebas de Operación y Puesta en Marcha de Instrumento TAG: XV-6238 | 1d | 2026-03-31 | 2026-03-31 | A5910 SS | 0d | SQM-INSTRUMENTACIÓN [12 h] | 1 | gl | 5817-TK6060 | 0,82 |  | 5.4.4.4 | 1 |
| A5930 |  | Pruebas de Operación y Puesta en Marcha de Instrumento TAG: XV-6243 | 1d | 2026-03-31 | 2026-03-31 | A5920 SS | 0d | SQM-INSTRUMENTACIÓN [12 h] | 1 | gl | 5817-TK6060 | 0,82 |  | 5.4.4.3 | 1 |
| A5940 |  | Pruebas de Operación y Puesta en Marcha de Instrumento TAG: XV-6259 | 1d | 2026-03-31 | 2026-03-31 | A5930 SS | 0d | SQM-INSTRUMENTACIÓN [12 h] | 1 | gl | 5817-TK6060 | 0,82 |  | 5.4.4.2 | 1 |
| A5950 |  | Pruebas de Operación y Puesta en Marcha de Instrumento TAG: XV-6263 | 1d | 2026-03-31 | 2026-03-31 | A5940 SS, A5210, A4810 | 0d | SQM-INSTRUMENTACIÓN [12 h] | 1 | gl | 5817-TK6060 | 0,82 |  | 5.4.4.1 | 1 |

| ID | WBS | Activity | Duration | Start | Finish | Predecessors | Total float | Free float | Resources | Cost | Cantidad | Unidad | Área | Remanente | Ítem EDP | Forecast | Impacto |
| --- | --- | --- | --- | --- | --- | --- | --- | --- | --- | --- | --- | --- | --- | --- | --- | --- | --- |
|  | 2 | **ÁREA 5772 - SECTOR TK-800** |  | 2025-09-18 | 2026-01-06 |  |  |  |  |  |  |  |  |  |  |  |  |
|  | 1 | **OBRAS CIVILES TK-800** |  | 2025-09-18 | 2025-10-02 |  |  |  |  |  |  |  |  |  |  |  |  |
|  | 1 | **OOCC SECTOR ESTANQUE DE AGUA BLANDA TAG:5772-EST-800** |  | 2025-09-18 | 2025-10-02 |  |  |  |  |  |  |  |  |  |  |  |  |
| A5970 |  | Nivelación Pedestal | 3d | 2025-09-18 | 2025-09-20 | A3920 | 84d | 0d | SQM-OBRAS CIVILES [2.7 h] | 1,370.47 | 0,03 | m3 | 5772-TK800 | 0 | 8.3.1.2 | 0,03 |  |
| A5980 |  | Armadura de Refuerzo A630-420H para Estructura Monorriel | 3d | 2025-09-21 | 2025-09-23 | A5970 | 85d | 0d | SQM-OBRAS CIVILES [8.95 h] | 4,543.09 | 65 | kg | 5772-TK800 | 0 | 8.3.2.1 | 65 |  |
| A5960 |  | Ampliación Pedestal (TAG: 5772-BBA-1601 y TAG: 5772-BBA-1604) | 3d | 2025-09-24 | 2025-09-26 | A5980 | 85d | 0d | SQM-OBRAS CIVILES [13.44 h] | 6,821.88 | 1,05 | m3 | 5772-TK800 | 0 | 8.3.1.1 | 1,05 |  |
| A6000 |  | Emplantillado Estructura Monorriel | 3d | 2025-09-27 | 2025-09-29 | A5960 | 111d | 0d | SQM-OBRAS CIVILES [0.22 h] | 113.7 | 0,02 | m3 | 5772-TK800 | 0 | 8.3.4.1 | 0,02 |  |
| A5990 |  | Estructura Monorriel | 3d | 2025-09-30 | 2025-10-02 | A6000 | 111d | 0d | SQM-OBRAS CIVILES [168.22 h] | 85,384.3 | 1106,7 | kg | 5772-TK800 | 0 | 8.3.3.1 | 1106,7 | SDC N°65 |
|  | 2 | **OBRAS MECÁNICAS TK-800** |  | 2025-10-03 | 2025-10-13 |  |  |  |  |  |  |  |  |  |  |  |  |
|  | 1 | **MONTAJE Y PRUEBAS DE EQUIPOS MECÁNICOS ÁREA 5772 SECTOR TK-800** |  | 2025-10-03 | 2025-10-13 |  |  |  |  |  |  |  |  |  |  |  |  |
| A6010 |  | Bomba Centrífuga y Motor TAG: 5772-BBA-1601; 5772-MTR-1602 | 4d | 2025-10-03 | 2025-10-06 | A5960, A5990 | 111d | 0d | SQM-MECANICA [139.9 h] | 71,010.44 | 1 | un | 5772-TK800 | 0 | 4.1.1.1 | 1 |  |
| A6020 |  | Bomba Centrífuga y Motor TAG: 5772-BBA-1604; 5772-MTR-1605 | 4d | 2025-10-07 | 2025-10-10 | A6010 | 111d | 0d | SQM-MECANICA [139.9 h] | 71,010.44 | 1 | un | 5772-TK800 | 0 | 4.1.1.2 | 1 |  |
| A6030 |  | Tecle Mantenimiento de Bombas TAG: 5772-TEC-1607 | 3d | 2025-10-11 | 2025-10-13 | A5990, A6020 | 111d | 27d | SQM-MECANICA [62 h] | 31,469.96 | 1 | un | 5772-TK800 | 0 | 4.1.1.3 | 1 |  |
|  | 3 | **OBRAS PIPING TK-800** |  | 2025-09-21 | 2025-12-19 |  |  |  |  |  |  |  |  |  |  |  |  |
|  | 1 | **FABRICACIÓN Y MONTAJE DE CAÑERÍAS ÁREA TK-800** |  | 2025-09-21 | 2025-12-15 |  |  |  |  |  |  |  |  |  |  |  |  |
| A6040 |  | Ø 200 mm - Cañería HDPE, PE 100, PN20 (8") - Fabricación | 18d | 2025-09-21 | 2025-10-08 | A1070, A5970 | 84d | 0d | SQM-PIPING [199.5 h] | 101,262.21 | 57 | un | 5772-TK800 | 0 | 4.2.1.3 | 65 | LDO N°11; SDC N°26 |
| A6110 |  | Ø 200 mm - Cañería HDPE, PE 100, PN20 (8") - Montaje | 28d | 2025-09-24 | 2025-10-21 | A6040 SS+3d | 84d | 0d | SQM-PIPING [478.8 h] | 243,029.3 | 240 | m | 5772-TK800 | 0 | 4.2.1.10 | 240 | LDO N°11; SDC N°26 |
| A6050 |  | Ø 8" - Cañería Acero Inoxidable - Fabricación | 5d | 2025-10-09 | 2025-10-13 | A6040 | 103d | 0d | SQM-PIPING [29.6 h] | 15,024.37 | 2 | un | 5772-TK800 | 0 | 4.2.1.4 | 4 |  |
| A6060 |  | Ø 6" - Cañería Acero Inoxidable - Fabricación | 7d | 2025-10-14 | 2025-10-20 | A6050 | 103d | 0d | SQM-PIPING [546 h] | 277,138.68 | 42 | un | 5772-TK800 | 0 | 4.2.1.15 | 37 |  |
| A6070 |  | Ø 4" - Cañería Acero Inoxidable - Fabricación | 14d | 2025-10-21 | 2025-11-03 | A6060 | 103d | 0d | SQM-PIPING [494 h] | 250,744.52 | 65 | un | 5772-TK800 | 0 | 4.2.1.21 | 79 |  |
| A6080 |  | Ø 3" - Cañería Acero Inoxidable - Fabricación | 2d | 2025-11-04 | 2025-11-05 | A6070 | 103d | 0d | SQM-PIPING [28 h] | 14,212.24 | 5 | un | 5772-TK800 | 0 | 4.2.1.28 | 4 |  |
| A6090 |  | Ø 2" - Cañería Acero Inoxidable - Fabricación | 4d | 2025-11-06 | 2025-11-09 | A6080 | 103d | 0d | SQM-PIPING [73.9 h] | 37,509.65 | 18 | un | 5772-TK800 | 0 | 4.2.1.33 | 12 |  |
| A6100 |  | Ø 1" - Cañería Acero Inoxidable - Fabricación | 2d | 2025-11-10 | 2025-11-11 | A6090 | 103d | 0d | SQM-PIPING [2 h] | 1,015.16 | 1 | un | 5772-TK800 | 0 | 4.2.1.36 | 1 |  |
| A6120 |  | Ø 8" - Cañería Acero Inoxidable - Montaje | 5d | 2025-11-12 | 2025-11-16 | A6070, A6100, A6110 | 103d | 0d | SQM-PIPING [7.26 h] | 3,684.18 | 0,65 | m | 5772-TK800 | 0 | 4.2.1.11 | 0,65 |  |
| A6130 |  | Ø 6" - Cañería Acero Inoxidable - Montaje | 7d | 2025-11-17 | 2025-11-23 | A6120 | 103d | 0d | SQM-PIPING [28.73 h] | 14,580.3 | 10,9 | m | 5772-TK800 | 0 | 4.2.1.20 | 10,9 |  |
| A6140 |  | Ø 4" - Cañería Acero Inoxidable - Montaje | 14d | 2025-11-24 | 2025-12-07 | A6130, A6100 | 103d | 0d | SQM-PIPING [77.85 h] | 39,517.13 | 33,2 | m | 5772-TK800 | 0 | 4.2.1.27 | 20,704785914 |  |
| A6150 |  | Ø 3" - Cañería Acero Inoxidable - Montaje | 4d | 2025-12-08 | 2025-12-11 | A6140 | 103d | 1d | SQM-PIPING [0.4 h] | 204.99 | 0,20092 | m | 5772-TK800 | 9,1999999999981E-005 | 4.2.1.31 | 0,20092 |  |
| A6160 |  | Ø 2" - Cañería Acero Inoxidable - Montaje | 3d | 2025-12-13 | 2025-12-15 | A6150, A6180 FF, A6179 FF, A6170 | 102d | 0d | SQM-PIPING [11.17 h] | 5,667.98 | 4 | m | 5772-TK800 | 0,00112411369999998 | 4.2.1.35 | 3,2 |  |

Notes:
- A6000: Corregir: ATRASO POR INTERFERENCIA POR TERRENO Y LLEGADA DE EQUIPO TECLE
- A6030: Corregir: LLEGADA DE TECLE, SE RETIRA EL 7-11
- A6160: Corregir: R FF

| ID | WBS | Activity | Duration | Start | Finish | Predecessors | Total float | Free float | Resources | Cost | Cantidad | Unidad | Área | Remanente | Ítem EDP | Forecast | Corregir |
| --- | --- | --- | --- | --- | --- | --- | --- | --- | --- | --- | --- | --- | --- | --- | --- | --- | --- |
|  | 2 | **MONTAJE DE VÁLVULAS Y FITTING SECTOR TK-800** |  | 2025-09-27 | 2025-12-15 |  |  |  |  |  |  |  |  |  |  |  |  |
| A6179 |  | Fitting Sector TK-800 (Global) | 80d | 2025-09-27 | 2025-12-15 | A6040 SS+3d, A6110 SS+3d | 102d | 0d | SQM-PIPING [1443.59 h] | 732,734.87 | 135 | un | 5772-TK800 | 0 | 99.8 | 320 |  |
| A6180 |  | Válvulas Sector TK-800 (Global) | 80d | 2025-09-27 | 2025-12-15 | A6040 SS, A6179 SS | 102d | 0d | SQM-PIPING [266.25 h] | 135,143.17 | 22 | un | 5772-TK800 | 0 | 99.17 | 21 |  |
|  | 3 | **TIE IN LÍNEAS ASOCIADAS A TK-800** |  | 2025-12-16 | 2025-12-19 |  |  |  |  |  |  |  |  |  |  |  |  |
| A6190 |  | TIE-IN N° 1431 - 5772-EST-800 FRP a Línea Proyectada 150-TW-5772-I1-1661 | 2d | 2025-12-16 | 2025-12-17 | A6160 | 102d | 0d | SQM-PIPING [50.67 h] | 25,717.39 | 1 | un | 5772-TK800 | 0 | 4.2.3.2 | 1 |  |
| A6200 |  | TIE-IN N° 1432 - 5772-EST-800 FRP a Línea Proyectada 150-TW-5772-I1-1663 | 2d | 2025-12-18 | 2025-12-19 | A6190 | 102d |  | SQM-PIPING [50.67 h] | 25,717.39 | 1 | un | 5772-TK800 | 0 | 4.2.3.1 | 1 |  |
|  | 4 | **FABRICACIÓN Y MONTAJE DE SOPORTES TK-800** |  | 2025-10-22 | 2025-11-09 |  |  |  |  |  |  |  |  |  |  |  |  |
| A6220 |  | Soporte N°001 - Pedestal Tipo TEE, Acero Estructural para Tuberías Diámetros Pequeños | 4d | 2025-10-22 | 2025-10-25 | A6110 | 84d | 0d | SQM-PIPING [9 h] | 4,568.22 | 2 | un | 5772-TK800 | 0 | 4.2.4.4 | 2 | R FF |
| A6230 |  | Soporte N°002B - Pedestal con Repisa de Acero Estructural para Tuberías Diámetros Pequeños | 4d | 2025-10-26 | 2025-10-29 | A6220 | 84d | 0d | SQM-PIPING [9 h] | 4,568.22 | 2 | un | 5772-TK800 | 0 | 4.2.4.3 | 2 |  |
| A6240 |  | Soporte N°003 - Tirángulo Tipo Repisa (Existente), Acero Estructural (NOTA 4) | 1d | 2025-10-30 | 2025-10-30 | A6230 | 84d | 0d | SQM-PIPING |  | 0 | (NOTA 4) | 5772-TK800 | 0 | 4.2.4.2 | 0 |  |
| A6250 |  | Soporte Primario Tipo "U" (Para Uso General) | 3d | 2025-10-31 | 2025-11-02 | A6240 | 84d | 0d | SQM-PIPING [12.5 h] | 6,344.75 | 75 | un | 5772-TK800 | 0 | 4.2.4.1 | 6 |  |
| A6170 |  | Retiro Perfil Exsitente y Soporte de Tuberias Existentes | 7d | 2025-11-03 | 2025-11-09 | A5990, A6250 | 84d | 0d | SQM-PIPING [432 h] | 219,274.56 | 1 | gl | 5728-TK3000 | 1 |  | 0,12 |  |
|  | 4 | **OBRAS ELÉCTRICAS TK-800** |  | 2025-11-10 | 2025-12-22 |  |  |  |  |  |  |  |  |  |  |  |  |
|  | 1 | **MONTAJE DE CANALIZACIÓN Y FERRETERÍA TK-800** |  | 2025-11-10 | 2025-11-27 |  |  |  |  |  |  |  |  |  |  |  |  |
| A6260 |  | Canalización y Copla de Conduit de Acero Galvanizado 6"Ø, Conduit ANSI C80.1 | 10d | 2025-11-10 | 2025-11-19 | A6030, A6170 | 84d | 0d | SQM-ELÉCTRICO [64.18 h] | 32,574.45 | 16 | m | 5772-TK800 | 0 | 4.3.1.3 | 130 |  |
| A6270 |  | Canalización y Copla de Conduit Flexible Metálico con Cubierta PVC 6" Ø Trabajo Pesado | 2d | 2025-11-20 | 2025-11-21 | A6260 | 84d | 0d | SQM-ELÉCTRICO [6.72 h] | 3,410.94 | 2 | m | 5772-TK800 | 0 | 4.3.1.1 | 10 |  |
| A6280 |  | Canalización y Copla de Conduit de Acero Galvanizado 1 Ø"Ø, Conduit ANSI C80.1 | 4d | 2025-11-22 | 2025-11-25 | A6270 | 84d | 0d | SQM-ELÉCTRICO [7.56 h] | 3,837.3 | 6 | m | 5772-TK800 | 0 | 4.3.1.4 | 100 |  |
| A6290 |  | Canalización y Copla de Conduit Flexible Metálico con Cubierta PVC 1 Ø" Ø Trabajo Pesado | 2d | 2025-11-26 | 2025-11-27 | A6280 | 84d | 0d | SQM-ELÉCTRICO [2.52 h] | 1,279.1 | 2 | m | 5772-TK800 | 0 | 4.3.1.2 | 5 |  |
|  | 2 | **TENDIDO Y CONEXIONADO DE CABLES DE ALIMENTACIÓN TK-800** |  | 2025-11-28 | 2025-12-11 |  |  |  |  |  |  |  |  |  |  |  |  |
| A6300 |  | Cable Monoconductor de Cobre con Aislación XLPE, 1C #350 MCM, Clase 1 kV | 14d | 2025-11-28 | 2025-12-11 | A6290, A6280 | 84d | 0d | SQM-ELÉCTRICO [710.24 h] | 360,503.62 | 920 | m | 5772-TK800 | 0 | 4.3.2.2 | 2500 |  |
| A6310 |  | Cable Multiconductor de Cobre con Aislación de XLPE, 1x5C #12 AWG, Clase 1 kV | 5d | 2025-12-07 | 2025-12-11 | A6300 FF | 98d | 0d | SQM-ELÉCTRICO [63.57 h] | 32,265.85 | 174 | m | 5772-TK800 | 0 | 4.3.2.1 | 500 | R FF |
|  | 3 | **MONTAJE Y CONEXIONADO DE EQUIPOS ELÉCTRICOS TK-800** |  | 2025-12-12 | 2025-12-20 |  |  |  |  |  |  |  |  |  |  |  |  |
| A6320 |  | Variador de Frecuencia TAG: 5772-VSD-1603 en SEL-403. | 2d | 2025-12-12 | 2025-12-13 | A6310 | 98d | 0d | SQM-ELÉCTRICO [36 h] | 18,272.88 | 1 | gl | 5772-TK800 | 0 | 4.3.3.2 | 1 |  |
| A6330 |  | Variador de Frecuencia TAG: 5772-VSD-1605 en SEL-403. | 2d | 2025-12-14 | 2025-12-15 | A6320 | 98d | 0d | SQM-ELÉCTRICO [36 h] | 18,272.88 | 1 | gl | 5772-TK800 | 0 | 4.3.3.1 | 1 |  |
| A6340 |  | Modificación de Cubiculo Existente en TAG: 5770-CCM-488, para Suministro de Energía de TAG: 5772-VSD-1603. | 2d | 2025-12-16 | 2025-12-17 | A6330 | 98d | 0d | SQM-ELÉCTRICO [35 h] | 17,765.3 | 1 | gl | 5772-TK800 | 0 | 4.3.3.4 | 1 |  |
| A6350 |  | Modificación de Cubiculo Existente en TAG: 5770-CCM-488, para Suministro de Energía de TAG: 5772-VSD-1605. | 2d | 2025-12-18 | 2025-12-19 | A6340 | 98d | 0d | SQM-ELÉCTRICO [35 h] | 17,765.3 | 1 | gl | 5772-TK800 | 0 | 4.3.3.3 | 1 |  |
| A6360 |  | Conexión de entre CCM TAG: 5770-CCM-488 y VDF TAG: 5772-VSD-1603. | 1d | 2025-12-20 | 2025-12-20 | A6350 | 98d | 0d | SQM-ELÉCTRICO [4.12 h] | 2,093.77 | 1 | gl | 5772-TK800 | 0 | 4.4.4.6 | 1 |  |
| A6370 |  | Conexión de entre CCM TAG: 5770-CCM-488 y VDF TAG: 5772-VSD-1605. | 1d | 2025-12-20 | 2025-12-20 | A6360 SS | 98d | 0d | SQM-ELÉCTRICO [4.12 h] | 2,093.77 | 1 | gl | 5772-TK800 | 0 | 4.4.4.5 | 1 |  |
| A6380 |  | Conexión de entre VDF TAG: 5772-VSD-1603 y Motor TAG: 5772-MTR-1602. | 1d | 2025-12-20 | 2025-12-20 | A6370 SS | 98d | 0d | SQM-ELÉCTRICO [4.12 h] | 2,093.77 | 1 | gl | 5772-TK800 | 0 | 4.4.4.4 | 1 |  |
| A6390 |  | Conexión de entre VDF TAG: 5772-VSD-1605 y Motor TAG: 5772-MTR-1604. | 1d | 2025-12-20 | 2025-12-20 | A6380 SS | 98d | 0d | SQM-ELÉCTRICO [4.12 h] | 2,093.77 | 1 | gl | 5772-TK800 | 0 | 4.4.4.3 | 1 |  |

| ID | WBS | Activity | Duration | Start | Finish | Predecessors | Total float | Free float | Resources | Cost | Cantidad | Unidad | Área | Remanente | Ítem EDP | Forecast |
| --- | --- | --- | --- | --- | --- | --- | --- | --- | --- | --- | --- | --- | --- | --- | --- | --- |
|  | 4 | **PRUEBAS DE FUNCIONAMIENTO Y PEM TK-800** |  | 2025-12-21 | 2025-12-22 |  |  |  |  |  |  |  |  |  |  |  |
| A6400 |  | Pruebas de Funcionamiento y Puesta en Marcha de Motor TAG: 5772-MTR-1602. | 1d | 2025-12-21 | 2025-12-21 | A6390 | 98d | 0d | SQM-ELÉCTRICO [12 h] | 6,090.96 | 1 | gl | 5772-TK800 | 0 | 4.3.4.2 | 1 |
| A6410 |  | Pruebas de Funcionamiento y Puesta en Marcha de Motor TAG: 5772-MTR-1604. | 1d | 2025-12-22 | 2025-12-22 | A6400, A6250 | 98d | 14d | SQM-ELÉCTRICO [12 h] | 6,090.96 | 1 | gl | 5772-TK800 | 0 | 4.3.4.1 | 1 |
|  | 5 | **OBRAS DE INSTRUMENTACIÓN TK-800** |  | 2025-12-12 | 2026-01-06 |  |  |  |  |  |  |  |  |  |  |  |
|  | 1 | **MONTAJE DE CANALIZACIÓN Y FERRETERÍA INST. TK-800** |  | 2025-12-12 | 2025-12-20 |  |  |  |  |  |  |  |  |  |  |  |
| A6420 |  | Canalización y Copla de Conduit de Acero Galvanizado 1"Ø, Conduit ANSI C80.1 | 7d | 2025-12-12 | 2025-12-18 | A6290, A6300 | 84d | 0d | SQM-INSTRUMENTACIÓN [16.38 h] |  | 13 | m | 5772-TK800 | 0 | 4.4.1.1 | 120 |
| A6430 |  | Canalización y Copla de Conduit Flexible Metálico con Cubierta PVC 1" Ø Trabajo Pesado | 2d | 2025-12-19 | 2025-12-20 | A6420 | 84d | 0d | SQM-INSTRUMENTACIÓN [5.04 h] |  | 4 | m | 5772-TK800 | 0 | 4.4.1.2 | 10 |
|  | 2 | **TENDIDO Y CONEXIONADO DE CABLES INSTRUMENTACIÓN TK-800** |  | 2025-12-21 | 2026-01-02 |  |  |  |  |  |  |  |  |  |  |  |
| A6440 |  | Cable Multiconductor de Cobre con Aislación de XLPE, 1x3C #12 AWG, Clase 1 kV | 3d | 2025-12-21 | 2025-12-23 | A6430 | 84d | 0d | SQM-INSTRUMENTACIÓN [54.8 h] |  | 150 | m | 5772-TK800 | 0 | 4.4.2.1 | 190 |
| A6450 |  | Cable de Instrumentación (Señales Análogas), 1x1 par #16 AWG Apantallado | 10d | 2025-12-24 | 2026-01-02 | A6440 | 84d | 0d | SQM-INSTRUMENTACIÓN [88.8 h] |  | 300 | m | 5772-TK800 | 0 | 4.4.2.2 | 370 |
|  | 3 | **MONTAJE Y CONEXIONADO DE EQUIPOS E INSTRUMENTOSTK-800** |  | 2026-01-03 | 2026-01-04 |  |  |  |  |  |  |  |  |  |  |  |
| A6460 |  | Instrumento TAG: PIT-1151 | 1d | 2026-01-03 | 2026-01-03 | A6450 | 84d | 0d | SQM-INSTRUMENTACIÓN [12 h] |  | 1 | gl | 5772-TK800 | 0 | 4.4.3.1 | 1 |
| A6470 |  | Instrumento TAG: FIT-1152 | 1d | 2026-01-04 | 2026-01-04 | A6460 | 84d | 0d | SQM-INSTRUMENTACIÓN [12 h] |  | 1 | gl | 5772-TK800 | 0 | 4.4.3.2 | 1 |
|  | 4 | **PRUEBAS DE FUNCIONAMIENTO Y PEM INST. TK-800** |  | 2026-01-05 | 2026-01-06 |  |  |  |  |  |  |  |  |  |  |  |
| A6480 |  | Pruebas de Operación y Puesta en Marcha de Instrumento TAG: PIT-1151 | 1d | 2026-01-05 | 2026-01-05 | A6470 | 84d | 0d | SQM-INSTRUMENTACIÓN [12 h] |  | 1 | gl | 5772-TK800 | 0,9 | 4.4.4.1 | 1 |
| A6490 |  | Pruebas de Operación y Puesta en Marcha de Instrumento TAG: FIT-1152 | 1d | 2026-01-06 | 2026-01-06 | A6480, A6410 | 84d |  | SQM-INSTRUMENTACIÓN [12 h] |  | 1 | gl | 5772-TK800 | 0,9 | 4.4.4.2 | 1 |
|  | 3 | **ÁREA 5728 - SECTOR TK-3000** |  | 2025-09-27 | 2026-03-16 |  |  |  |  |  |  |  |  |  |  |  |
|  | 1 | **OBRAS CIVILES TK-3000** |  | 2025-09-27 | 2025-10-01 |  |  |  |  |  |  |  |  |  |  |  |
|  | 2 | **FABRICACIÓN Y MONTAJE DE ESTRUCTURA MONORRIEL TK-3000** |  | 2025-09-27 | 2025-10-01 |  |  |  |  |  |  |  |  |  |  |  |
| A6550 |  | Armadura de refuerzo A630-420H Fundaciones TK-3000 | 3d | 2025-09-27 | 2025-09-29 | A5960 | 85d | 0d | SQM-OBRAS CIVILES [10.19 h] | 5,172.14 | 74 | kg | 5728-TK3000 | 0 | 8.4.3.1 | 74 |
| A6540 |  | Hormigón G30 Pedestal PD-1 (TAG: 5728-BBA-6066 y TAG: 5728-BBA-6063) | 2d | 2025-09-30 | 2025-10-01 | A6550 | 123d | 122d | SQM-OBRAS CIVILES [9.63 h] | 4,889.01 | 0,86 | m3 | 5728-TK3000 | 0 | 8.4.2.1 | 0,86 |
|  | 2 | **OBRAS MECÁNICAS TK-3000** |  | 2026-02-07 | 2026-02-10 |  |  |  |  |  |  |  |  |  |  |  |
|  | 1 | **MONTAJE Y PRUEBAS DE EQUIPOS MECÁNICOS TK-3000** |  | 2026-02-07 | 2026-02-10 |  |  |  |  |  |  |  |  |  |  |  |
| A6580 |  | Bomba Centrífuga y Motor TAG: 5728-BBA-6063; 5728-MTR-6064 | 4d | 2026-02-07 | 2026-02-10 | A8370 | 8d | 0d | SQM-MECANICA [139.9 h] | 71,010.44 | 1 | un | 5728-TK3000 | 0 | 3.1.1.1 | 1 |
| A6590 |  | Bomba Centrífuga y Motor TAG: 5728-BBA-6066; 5728-MTR-6067 | 4d | 2026-02-07 | 2026-02-10 | A6580 SS | 8d | 0d | SQM-MECANICA [139.9 h] | 71,010.44 | 1 | un | 5728-TK3000 | 0 | 3.1.1.2 | 1 |

| ID | WBS | Activity | Duration | Start | Finish | Predecessors | Total float | Free float | Resources | Cost | Cantidad | Unidad | Área | Remanente | Impacto | Ítem EDP | Forecast | Corregir |
| --- | --- | --- | --- | --- | --- | --- | --- | --- | --- | --- | --- | --- | --- | --- | --- | --- | --- | --- |
|  | 4 | **OBRAS PIPING TK-3000** |  | 2025-12-19 | 2026-02-28 |  |  |  |  |  |  |  |  |  |  |  |  |  |
|  | 1 | **FABRICACIÓN Y MONTAJE DE CAÑERÍAS ÁREA TK-3000** |  | 2025-12-19 | 2026-02-17 |  |  |  |  |  |  |  |  |  |  |  |  |  |
| A6610 |  | Ø 6" - Cañería Acero Inoxidable - Fabricación | 30d | 2025-12-19 | 2026-01-17 | A6550 SS+4d, A4380 | 6d | 0d | SQM-PIPING [5616 h] | 2,850,569.28 | 432 | un | 5728-TK3000 | 0 | LDO N°1-12; SDC N°26 | 3.2.1.7 | 706 |  |
| A6660 |  | Ø 6" - Cañería Acero Inoxidable - Montaje | 30d | 2025-12-23 | 2026-01-21 | A6610 SS+4d, A6700 SS, A6710 SS, A4490 SS | 33d | 0d | SQM-PIPING [3765.89 h] | 1,911,491.12 | 1429 | m | 5728-TK3000 | 0 | LDO N°1-12; SDC N°26 | 3.2.1.12 | 1428 | R FF |
| A6620 |  | Ø 4" - Cañería Acero Inoxidable - Fabricación | 4d | 2026-01-18 | 2026-01-21 | A6610 | 22d | 0d | SQM-PIPING [45.6 h] | 23,145.65 | 6 | un | 5728-TK3000 | 0 |  | 3.2.1.14 | 8 |  |
| A6630 |  | Ø 3" - Cañería Acero Inoxidable - Fabricación | 3d | 2026-01-19 | 2026-01-21 | A6620 FF | 22d | 0d | SQM-PIPING [22.4 h] | 11,369.79 | 4 | un | 5728-TK3000 | 0 |  | 3.2.1.19 | 4 |  |
| A6680 |  | Ø 3" - Cañería Acero Inoxidable - Montaje | 3d | 2026-01-21 | 2026-01-23 | A6670 FF | 34d | 12d | SQM-PIPING [0.34 h] | 173.53 | 0,170091882 | m | 5728-TK3000 | 0 |  | 3.2.1.22 | 0,170091882 |  |
| A6640 |  | Ø 2" - Cañería Acero Inoxidable - Fabricación | 14d | 2026-01-22 | 2026-02-04 | A6630 | 22d | 0d | SQM-PIPING [1059.22 h] | 537,638.38 | 258 | un | 5728-TK3000 | 4,89999999999999 |  | 3.2.1.25 | 258 |  |
| A6670 |  | Ø 4" - Cañería Acero Inoxidable - Montaje | 2d | 2026-01-22 | 2026-01-23 | A6620 | 34d | 0d | SQM-PIPING [0.36 h] | 181.49 | 0,152475419 | m | 5728-TK3000 | 0 |  | 3.2.1.17 | 0,152475419 |  |
| A6650 |  | Ø 1" - Cañería Acero Inoxidable - Fabricación | 3d | 2026-02-02 | 2026-02-04 | A6640 FF, A4000 | 34d | 12d | SQM-PIPING [8 h] | 4,060.64 | 4 | un | 5728-TK3000 | 0 |  | 3.2.1.33 | 4 |  |
| A6690 |  | Ø 2" - Cañería Acero Inoxidable - Montaje | 13d | 2026-02-05 | 2026-02-17 | A6680, A6640 FF, A6640 | 22d | 0d | SQM-PIPING [362.92 h] | 184,209.24 | 130 | m | 5728-TK3000 | 7 |  | 3.2.1.32 | 98,025434821 |  |
|  | 2 | **MONTAJE DE VÁLVULAS Y FITTING SECTOR TK-3000** |  | 2025-12-19 | 2026-02-28 |  |  |  |  |  |  |  |  |  |  |  |  |  |
| A6700 |  | Fitting Sector TK-3000 (Global) | 72d | 2025-12-19 | 2026-02-28 | A6610 SS | 37d | 4d | SQM-PIPING [5983.57 h] | 3,037,142.49 | 418 | un | 5728-TK3000 | 0 |  | 99.9 | 464 |  |
| A6710 |  | Válvulas Sector TK-3000 (Global) | 72d | 2025-12-19 | 2026-02-28 | A6610 SS | 37d | 4d | SQM-PIPING [607.5 h] | 308,354.85 | 63 | un | 5728-TK3000 | 1 |  | 99.18 | 61 |  |
|  | 3 | **TIE IN LÍNEAS ASOCIADAS A TK-3000** |  | 2026-02-13 | 2026-02-17 |  |  |  |  |  |  |  |  |  |  |  |  |  |
| A6720 |  | Perforación de Estanque Existente TK-001 para TIE-IN N°6451, 6452 y 6453. | 5d | 2026-02-13 | 2026-02-17 | A6690 FF | 22d | 0d | SQM-PIPING [50.67 h] | 25,717.39 | 1 | un | 5728-TK3000 | 0 |  | 3.2.1.1 | 1 |  |
| A6730 |  | TIE-IN N° 6451 - 5728-EST-001 FRP a Línea Proyectada 150-LC-5728-I1-6633-A | 1d | 2026-02-17 | 2026-02-17 | A6720 FF | 22d | 0d | SQM-PIPING [50.67 h] | 25,717.39 | 1 | un | 5728-TK3000 | 0 |  | 3.2.3.3 | 1 |  |
| A6740 |  | TIE-IN N° 6452 - 5728-EST-001 FRP a Línea Proyectada 150-LC-5728-I1-6605-A | 1d | 2026-02-17 | 2026-02-17 | A6730 FF | 22d | 0d | SQM-PIPING [50.67 h] | 25,717.39 | 1 | un | 5728-TK3000 | 0 |  | 3.2.3.2 | 1 |  |
| A6750 |  | TIE-IN N° 6453 - 5728-EST-001 FRP a Línea Proyectada 150-LC-5817-I1-6604-A | 1d | 2026-02-17 | 2026-02-17 | A6740 FF, A6650 | 22d | 0d | SQM-PIPING [50.67 h] | 25,717.39 | 1 | un | 5728-TK3000 | 0 |  | 3.2.3.1 | 1 |  |
|  | 4 | **AISLACIÓN LÍNEAS TK-3000** |  | 2026-01-22 | 2026-02-26 |  |  |  |  |  |  |  |  |  |  |  |  |  |
| A6760 |  | Ø 6" - Aislación de Lana Mineral de 1,5" de espesor | 30d | 2026-01-22 | 2026-02-20 | A6660 FF+8d, A6660 | 33d | 0d | SQM-PIPING [5940.48 h] | 3,015,268.84 | 1428 | un | 5728-TK3000 | 0 | LDO N°9 | 3.2.1.13 | 1428 | R FF |
| A6770 |  | Ø 4" - Aislación de Lana Mineral de 1,5" de espesor | 3d | 2026-02-21 | 2026-02-23 | A6670, A6760 | 33d | 0d | SQM-PIPING [0.73 h] | 371.49 | 0,152475419 | un | 5728-TK3000 | 0 |  | 3.2.1.18 | 0,152475419 |  |
| A6780 |  | Ø 3" - Aislación de Lana Mineral de 1,5" de espesor | 3d | 2026-02-24 | 2026-02-26 | A6680, A6770 | 33d |  | SQM-PIPING [0.54 h] | 276.27 | 0,170091882 | un | 5728-TK3000 | 0,170091882 |  | 3.2.1.23 | 0,170091882 |  |
|  | 6 | **FABRICACIÓN Y MONTAJE DE SOPORTES TK-3000** |  | 2026-01-28 | 2026-02-02 |  |  |  |  |  |  |  |  |  |  |  |  |  |
| A6820 |  | Soporte N°001 - Pedestal Tipo TEE, Acero Estructural para Tuberías Diámetros Pequeños | 6d | 2026-01-28 | 2026-02-02 | A6660 SS, A4630 SS | 1d | 0d | SQM-PIPING [12.75 h] | 6,471.65 | 3 | un | 5728-TK3000 | 0 |  | 3.2.4.6 | 3 |  |
| A6830 |  | Soporte N°002 - Pedestal con Repisa de Acero Estructural para Tuberías Diámetros Pequeños | 4d | 2026-01-28 | 2026-01-31 | A6820 SS | 1d | 0d | SQM-PIPING [8.5 h] | 4,314.43 | 2 | un | 5728-TK3000 | 0 |  | 3.2.4.5 | 2 |  |
| A6840 |  | Soporte N°003 - Pedestal, Acero Estructural para Tuberías Diámetros Pequeños | 4d | 2026-01-28 | 2026-01-31 | A6830 SS | 1d | 0d | SQM-PIPING [4.25 h] | 2,157.22 | 1 | un | 5728-TK3000 | 0 |  | 3.2.4.4 | 1 |  |
| A6850 |  | Soporte N°004 - Pedestal y Voladizo Tipo Simple, Acero Estructural para Tuberías Diámetros Pequeños | 4d | 2026-01-28 | 2026-01-31 | A6840 SS | 1d | 0d | SQM-PIPING [4.25 h] | 2,157.22 | 1 | un | 5728-TK3000 | 0 |  | 3.2.4.3 | 1 |  |
| A6860 |  | Soporte N°005 - Arco Tipo Colgante, Acero Estructural para Tuberías Diámetros Pequeños | 4d | 2026-01-28 | 2026-01-31 | A6850 SS | 1d | 0d | SQM-PIPING |  | 0 | (NOTA 4) | 5728-TK3000 | 0 |  | 3.2.4.2 | 1 |  |
| A6870 |  | Soporte Primario Tipo "U" (Para Uso General) | 6d | 2026-01-28 | 2026-02-02 | A6860 SS | 1d | 0d | SQM-PIPING [69.3 h] | 35,175.29 | 360 | un | 5728-TK3000 | 0 |  | 3.2.4.1 | 360 |  |

| ID | WBS | Activity | Duration | Start | Finish | Predecessors | Total float | Free float | Resources | Cost | Cantidad | Unidad | Área | Remanente | Ítem EDP | Forecast | Corregir |
| --- | --- | --- | --- | --- | --- | --- | --- | --- | --- | --- | --- | --- | --- | --- | --- | --- | --- |
|  | 5 | **OBRAS ELÉCTRICAS TK-3000** |  | 2026-02-11 | 2026-03-14 |  |  |  |  |  |  |  |  |  |  |  |  |
|  | 1 | **MONTAJE DE CANALIZACIÓN Y FERRETERÍA TK-3000** |  | 2026-02-11 | 2026-02-17 |  |  |  |  |  |  |  |  |  |  |  |  |
| A6880 |  | Canalización y Copla de Conduit de Acero Galvanizado 6"Ø, Conduit ANSI C80.1 | 4d | 2026-02-11 | 2026-02-14 | A6590, A6260 SS | 8d | 0d | SQM-ELÉCTRICO [40.11 h] | 20,359.03 | 10 | m | 5728-TK3000 | 0 | 3.3.1.2 | 10 |  |
| A6890 |  | Canalización y Copla de Conduit Flexible Metálico con Cubierta PVC 6" Ø Trabajo Pesado. | 2d | 2026-02-11 | 2026-02-12 | A6880 SS | 8d | 0d | SQM-ELÉCTRICO [6.72 h] | 3,410.94 | 2 | m | 5728-TK3000 | 0 | 3.3.1.3 | 4 |  |
| A6900 |  | Canalización y Copla de Conduit de Acero Galvanizado 1 Ø"Ø, Conduit ANSI C80.1 | 5d | 2026-02-13 | 2026-02-17 | A6890 | 8d | 0d | SQM-ELÉCTRICO [10.08 h] | 5,116.41 | 8 | m | 5728-TK3000 | 0 | 3.3.1.4 | 8 |  |
| A6910 |  | Canalización y Copla de Conduit Flexible Metálico con Cubierta PVC 1 Ø" Ø Trabajo Pesado. | 2d | 2026-02-13 | 2026-02-14 | A6900 SS | 8d | 0d | SQM-ELÉCTRICO [2.52 h] | 1,279.1 | 2 | m | 5728-TK3000 | 0 | 3.3.1.1 | 2 |  |
|  | 2 | **TENDIDO Y CONEXIONADO DE CABLES DE ALIMENTACIÓN TK-3000** |  | 2026-02-13 | 2026-02-27 |  |  |  |  |  |  |  |  |  |  |  |  |
| A6920 |  | Cable Monoconductor de Cobre con Aislación XLPE, 1C #350 MCM, Clase 1 kV | 15d | 2026-02-13 | 2026-02-27 | A6880 SS, A6910 SS | 15d | 0d | SQM-ELÉCTRICO [1791.04 h] | 909,096.08 | 2320 | m | 5728-TK3000 | 0 | 3.3.2.1 | 2320 |  |
| A6930 |  | Cable Multiconductor de Cobre con Aislación de XLPE, 1x5C #12 AWG, Clase 1 kV | 5d | 2026-02-23 | 2026-02-27 | A6920 FF | 15d | 0d | SQM-ELÉCTRICO [226.32 h] | 114,875.51 | 460 | m | 5728-TK3000 | 0 | 3.3.1.5 | 580 |  |
|  | 3 | **MONTAJE Y CONEXIONADO DE EQUIPOS ELÉCTRICOS TK-3000** |  | 2026-02-28 | 2026-03-10 |  |  |  |  |  |  |  |  |  |  |  |  |
| A6940 |  | Variador de Frecuencia TAG: 5728-VSD-6065 en SEL-401. | 2d | 2026-02-28 | 2026-03-01 | A6920, A6930 | 15d | 0d | SQM-ELÉCTRICO [36 h] | 18,272.88 | 1 | gl | 5728-TK3000 | 0 | 3.3.3.8 | 1 |  |
| A6950 |  | Variador de Frecuencia TAG: 5728-VSD-6068 en SEL-401. | 2d | 2026-03-02 | 2026-03-03 | A6940 | 15d | 0d | SQM-ELÉCTRICO [36 h] | 18,272.88 | 1 | gl | 5728-TK3000 | 0 | 3.3.3.7 | 1 |  |
| A6960 |  | Modificación de Cubiculo Existente en TAG: 5770-CCM-431, para Suministro de Energía de TAG: 5728-VSD-6065. | 2d | 2026-03-04 | 2026-03-05 | A6950 | 15d | 0d | SQM-ELÉCTRICO [35 h] | 17,765.3 | 1 | gl | 5728-TK3000 | 0 | 3.3.3.6 | 1 |  |
| A6970 |  | Modificación de Cubiculo Existente en TAG: 5770-CCM-431, para Suministro de Energía de TAG: 5728-VSD-6068. | 2d | 2026-03-06 | 2026-03-07 | A6960 | 15d | 0d | SQM-ELÉCTRICO [35 h] | 17,765.3 | 1 | gl | 5728-TK3000 | 0 | 3.3.3.5 | 1 |  |
| A6980 |  | Conexión de entre CCM TAG: 5770-CCM-431 y VDF TAG: 5728-VSD-6065. | 1d | 2026-03-07 | 2026-03-07 | A6970 FF | 15d | 0d | SQM-ELÉCTRICO [4.12 h] | 2,093.77 | 1 | gl | 5728-TK3000 | 0 | 3.3.3.4 | 1 |  |
| A6990 |  | Conexión de entre CCM TAG: 5770-CCM-431 y VDF TAG: 5728-VSD-6068. | 1d | 2026-03-08 | 2026-03-08 | A6980 | 15d | 0d | SQM-ELÉCTRICO [4.12 h] | 2,093.77 | 1 | gl | 5728-TK3000 | 0 | 3.3.3.3 | 1 |  |
| A7000 |  | Conexión de entre VDF TAG: 5728-VSD-6065 y Motor TAG: 5728-MTR-6064. | 1d | 2026-03-09 | 2026-03-09 | A6990 | 15d | 0d | SQM-ELÉCTRICO [4.12 h] | 2,093.77 | 1 | gl | 5728-TK3000 | 0 | 3.3.3.2 | 1 |  |
| A7010 |  | Conexión de entre VDF TAG: 5728-VSD-6068 y Motor TAG: 5728-MTR-6067. | 1d | 2026-03-10 | 2026-03-10 | A7000 | 15d | 0d | SQM-ELÉCTRICO [4.12 h] | 2,093.77 | 1 | gl | 5728-TK3000 | 0 | 3.3.3.1 | 1 |  |
|  | 4 | **PRUEBAS DE FUNCIONAMIENTO Y PEM TK-3000** |  | 2026-03-11 | 2026-03-14 |  |  |  |  |  |  |  |  |  |  |  |  |
| A7020 |  | Pruebas de Funcionamiento y Puesta en Marcha de Motor TAG: 5728-MTR-6065. | 2d | 2026-03-11 | 2026-03-12 | A7010, A6690 | 15d | 0d | SQM-ELÉCTRICO [12 h] | 6,090.96 | 1 | gl | 5728-TK3000 | 0,9 | 3.3.4.2 | 1 |  |
| A7030 |  | Pruebas de Funcionamiento y Puesta en Marcha de Motor TAG: 5728-MTR-6067. | 2d | 2026-03-13 | 2026-03-14 | A7020 | 15d | 0d | SQM-ELÉCTRICO [12 h] | 6,090.96 | 1 | gl | 5728-TK3000 | 0,9 | 3.3.4.1 | 1 |  |
|  | 6 | **OBRAS DE INSTRUMENTACIÓN TK-3000** |  | 2026-02-13 | 2026-03-16 |  |  |  |  |  |  |  |  |  |  |  |  |
|  | 1 | **MONTAJE DE CANALIZACIÓN Y FERRETERÍA INST. TK-3000** |  | 2026-02-13 | 2026-02-28 |  |  |  |  |  |  |  |  |  |  |  |  |
| A7040 |  | EPC y Copla Porta Conductores 600x100mm e:2,5 mm, tiras 3m. Incluir tapa dos aguas, eclisas y pernos de Unión. | 3d | 2026-02-13 | 2026-02-15 | A6910 SS | 8d | 0d | SQM-INSTRUMENTACIÓN [140 h] |  | 25 | m | 5728-TK3000 | 0 | 3.4.1.2 | 25 |  |
| A7050 |  | EPC Curva Tipo "T", 600x100x2,5mm. Incluir tapa dos aguas, eclisas y pernos de Unión. | 3d | 2026-02-13 | 2026-02-15 | A7040 FF | 8d | 0d | SQM-INSTRUMENTACIÓN [5.6 h] |  | 1 | un | 5728-TK3000 | 0 | 3.4.1.1 | 1 | R FF |
| A7060 |  | Canalización y Copla de Conduit de Acero Galvanizado 1"Ø, Conduit ANSI C80.1 | 12d | 2026-02-13 | 2026-02-24 | A7050 SS | 8d | 0d | SQM-INSTRUMENTACIÓN [368.55 h] |  | 292,5 | m | 5728-TK3000 | 0 | 3.4.1.4 | 720 |  |
| A7070 |  | Canalización y Copla de Conduit Flexible Metálico con Cubierta PVC 1" Ø Trabajo Pesado | 4d | 2026-02-25 | 2026-02-28 | A7060 | 31d | 13d | SQM-INSTRUMENTACIÓN [44.35 h] |  | 35,2 | m | 5728-TK3000 | 0 | 3.4.1.3 | 35,2 |  |

| ID | WBS | Activity | Duration | Start | Finish | Predecessors | Total float | Free float | Resources | Cantidad | Unidad | Área | Remanente | Ítem EDP | Forecast |
| --- | --- | --- | --- | --- | --- | --- | --- | --- | --- | --- | --- | --- | --- | --- | --- |
|  | 2 | **TENDIDO Y CONEXIONADO DE CABLES INSTRUMENTACIÓN TK-3000** |  | 2026-02-13 | 2026-03-06 |  |  |  |  |  |  |  |  |  |  |
| A7080 |  | Cable Multiconductor de Cobre con Aislación de XLPE, 1x3C #12 AWG, Clase 1 kV | 5d | 2026-02-13 | 2026-02-17 | A7060 SS | 8d | 0d | SQM-INSTRUMENTACIÓN [94.99 h] | 260 | m | 5728-TK3000 | 0 | 3.4.2.1 | 330 |
| A7090 |  | Cable de Instrumentación (Señales Análogas), 1x1 par #16 AWG Apantallado | 8d | 2026-02-13 | 2026-02-20 | A7080 SS | 8d | 0d | SQM-INSTRUMENTACIÓN [153.92 h] | 520 | m | 5728-TK3000 | 0 | 3.4.2.4 | 531 |
| A7100 |  | Cable Multiconductor de Cobre Blando 1x3C #12 AWG, Clase 0,3 | 14d | 2026-02-21 | 2026-03-06 | A7090 | 8d | 0d | SQM-INSTRUMENTACIÓN [617.41 h] | 1690 | m | 5728-TK3000 | 78 | 3.4.2.3 | 1690 |
| A7110 |  | Cable Multiconductor de Cobre Blando 1x5C #12 AWG, Clase 0,3 | 14d | 2026-02-21 | 2026-03-06 | A7100 SS | 8d | 0d | SQM-INSTRUMENTACIÓN [617.41 h] | 1690 | m | 5728-TK3000 | 58,5 | 3.4.2.2 | 1690 |
|  | 3 | **MONTAJE Y CONEXIONADO DE EQUIPOS E INSTRUMENTOSTK-3000** |  | 2026-03-07 | 2026-03-14 |  |  |  |  |  |  |  |  |  |  |
| A7120 |  | Instrumento TAG: PIT-6204 | 2d | 2026-03-07 | 2026-03-08 | A6660, A7110 | 8d | 0d | SQM-INSTRUMENTACIÓN [12 h] | 1 | gl | 5728-TK3000 | 0 | 3.4.3.17 | 1 |
| A7130 |  | Instrumento TAG: PIT-6214 | 2d | 2026-03-07 | 2026-03-08 | A7120 SS | 8d | 0d | SQM-INSTRUMENTACIÓN [12 h] | 1 | gl | 5728-TK3000 | 0 | 3.4.3.16 | 1 |
| A7140 |  | Instrumento TAG: UIT-6218 | 2d | 2026-03-07 | 2026-03-08 | A7130 SS | 8d | 0d | SQM-INSTRUMENTACIÓN [12 h] | 1 | gl | 5728-TK3000 | 0 | 3.4.3.15 | 1 |
| A7150 |  | Instrumento TAG: UIT-6220 | 2d | 2026-03-07 | 2026-03-08 | A7140 SS | 8d | 0d | SQM-INSTRUMENTACIÓN [12 h] | 1 | gl | 5728-TK3000 | 0 | 3.4.3.14 | 1 |
| A7160 |  | Instrumento TAG: XV-1153 | 2d | 2026-03-07 | 2026-03-08 | A7150 SS | 8d | 0d | SQM-INSTRUMENTACIÓN [21.75 h] | 1 | gl | 5728-TK3000 | 0,9 | 3.4.3.13 | 1 |
| A7170 |  | Instrumento TAG: XV-1154 | 2d | 2026-03-09 | 2026-03-10 | A7160 | 8d | 0d | SQM-INSTRUMENTACIÓN [21.75 h] | 1 | gl | 5728-TK3000 | 0,9 | 3.4.3.12 | 1 |
| A7180 |  | Instrumento TAG: XV-1155 | 2d | 2026-03-09 | 2026-03-10 | A7170 SS | 8d | 0d | SQM-INSTRUMENTACIÓN [21.75 h] | 1 | gl | 5728-TK3000 | 0,9 | 3.4.3.11 | 1 |
| A7190 |  | Instrumento TAG: XV-1156 | 2d | 2026-03-09 | 2026-03-10 | A7180 SS | 8d | 0d | SQM-INSTRUMENTACIÓN [21.75 h] | 1 | gl | 5728-TK3000 | 0,9 | 3.4.3.10 | 1 |
| A7200 |  | Instrumento TAG: XV-1157 | 2d | 2026-03-09 | 2026-03-10 | A7190 SS | 8d | 0d | SQM-INSTRUMENTACIÓN [21.75 h] | 1 | gl | 5728-TK3000 | 0,0499999999999999 | 3.4.3.9 | 1 |
| A7210 |  | Instrumento TAG: XV-6201 | 2d | 2026-03-09 | 2026-03-10 | A7200 SS | 8d | 0d | SQM-INSTRUMENTACIÓN [21.75 h] | 1 | gl | 5728-TK3000 | 0,9 | 3.4.3.8 | 1 |
| A7220 |  | Instrumento TAG: XV-6204 | 2d | 2026-03-11 | 2026-03-12 | A7210 | 8d | 0d | SQM-INSTRUMENTACIÓN [21.75 h] | 1 | gl | 5728-TK3000 | 0 | 3.4.3.7 | 1 |
| A7230 |  | Instrumento TAG: XV-6205 | 2d | 2026-03-11 | 2026-03-12 | A7220 SS | 8d | 0d | SQM-INSTRUMENTACIÓN [21.75 h] | 1 | gl | 5728-TK3000 | 0 | 3.4.3.6 | 1 |
| A7240 |  | Instrumento TAG: XV-6210 | 2d | 2026-03-11 | 2026-03-12 | A7230 SS | 8d | 0d | SQM-INSTRUMENTACIÓN [21.75 h] | 1 | gl | 5728-TK3000 | 0 | 3.4.3.5 | 1 |
| A7250 |  | Instrumento TAG: XV-6211 | 2d | 2026-03-11 | 2026-03-12 | A7240 SS | 8d | 0d | SQM-INSTRUMENTACIÓN [21.75 h] | 1 | gl | 5728-TK3000 | 0 | 3.4.3.4 | 1 |
| A7260 |  | Instrumento TAG: XV-6214 | 2d | 2026-03-11 | 2026-03-12 | A7250 SS | 8d | 0d | SQM-INSTRUMENTACIÓN [21.75 h] | 1 | gl | 5728-TK3000 | 0 | 3.4.3.3 | 1 |
| A7270 |  | Instrumento TAG: XV-6215 | 2d | 2026-03-13 | 2026-03-14 | A7260 | 8d | 0d | SQM-INSTRUMENTACIÓN [21.75 h] | 1 | gl | 5728-TK3000 | 0 | 3.4.3.2 | 1 |
| A7280 |  | Instrumento TAG: XV-6221 | 2d | 2026-03-13 | 2026-03-14 | A7270 SS | 8d | 0d | SQM-INSTRUMENTACIÓN [21.75 h] | 1 | gl | 5728-TK3000 | 0,9 | 3.4.3.1 | 1 |
|  | 4 | **PRUEBAS DE FUNCIONAMIENTO Y PEM INST. TK-3000** |  | 2026-03-11 | 2026-03-16 |  |  |  |  |  |  |  |  |  |  |
| A7290 |  | Pruebas de Operación y Puesta en Marcha de Instrumento TAG: PIT-6204 | 2d | 2026-03-11 | 2026-03-12 | A7210 | 15d | 0d | SQM-INSTRUMENTACIÓN [12 h] | 1 | gl | 5728-TK3000 | 0,55 | 3.4.4.16 | 1 |
| A7300 |  | Pruebas de Operación y Puesta en Marcha de Instrumento TAG: PIT-6214 | 2d | 2026-03-11 | 2026-03-12 | A7290 SS | 15d | 0d | SQM-INSTRUMENTACIÓN [12 h] | 1 | gl | 5728-TK3000 | 0,55 | 3.4.4.15 | 1 |
| A7310 |  | Pruebas de Operación y Puesta en Marcha de Instrumento TAG: UIT-6218 | 2d | 2026-03-11 | 2026-03-12 | A7300 SS | 15d | 0d | SQM-INSTRUMENTACIÓN [12 h] | 1 | gl | 5728-TK3000 | 0,55 | 3.4.4.14 | 1 |
| A7320 |  | Pruebas de Operación y Puesta en Marcha de Instrumento TAG: UIT-6220 | 2d | 2026-03-11 | 2026-03-12 | A7310 SS | 15d | 0d | SQM-INSTRUMENTACIÓN [12 h] | 1 | gl | 5728-TK3000 | 0,55 | 3.4.4.13 | 1 |
| A7330 |  | Pruebas de Operación y Puesta en Marcha de Instrumento TAG: XV-1153 | 2d | 2026-03-11 | 2026-03-12 | A7320 SS | 15d | 0d | SQM-INSTRUMENTACIÓN [12 h] | 1 | gl | 5728-TK3000 | 0,55 | 3.4.4.12 | 1 |
| A7340 |  | Pruebas de Operación y Puesta en Marcha de Instrumento TAG: XV-1154 | 2d | 2026-03-13 | 2026-03-14 | A7260, A7330 | 15d | 0d | SQM-INSTRUMENTACIÓN [12 h] | 1 | gl | 5728-TK3000 | 0,55 | 3.4.4.11 | 1 |
| A7350 |  | Pruebas de Operación y Puesta en Marcha de Instrumento TAG: XV-1155 | 2d | 2026-03-13 | 2026-03-14 | A7340 SS | 15d | 0d | SQM-INSTRUMENTACIÓN [12 h] | 1 | gl | 5728-TK3000 | 0,55 | 3.4.4.10 | 1 |
| A7360 |  | Pruebas de Operación y Puesta en Marcha de Instrumento TAG: XV-1156 | 2d | 2026-03-13 | 2026-03-14 | A7350 SS | 15d | 0d | SQM-INSTRUMENTACIÓN [12 h] | 1 | gl | 5728-TK3000 | 0,55 | 3.4.4.9 | 1 |
| A7370 |  | Pruebas de Operación y Puesta en Marcha de Instrumento TAG: XV-1157 | 2d | 2026-03-13 | 2026-03-14 | A7360 SS | 15d | 0d | SQM-INSTRUMENTACIÓN [12 h] | 1 | gl | 5728-TK3000 | 0,55 | 3.4.4.8 | 1 |
| A7380 |  | Pruebas de Operación y Puesta en Marcha de Instrumento TAG: XV-6201 | 2d | 2026-03-13 | 2026-03-14 | A7370 SS | 15d | 0d | SQM-INSTRUMENTACIÓN [12 h] | 1 | gl | 5728-TK3000 | 0,55 | 3.4.4.7 | 1 |
| A7390 |  | Pruebas de Operación y Puesta en Marcha de Instrumento TAG: XV-6204 | 2d | 2026-03-15 | 2026-03-16 | A7280, A7380, A7030 | 15d | 0d | SQM-INSTRUMENTACIÓN [12 h] | 1 | gl | 5728-TK3000 | 0,55 | 3.4.4.6 | 1 |
| A7400 |  | Pruebas de Operación y Puesta en Marcha de Instrumento TAG: XV-6205 | 2d | 2026-03-15 | 2026-03-16 | A7390 SS | 15d | 0d | SQM-INSTRUMENTACIÓN [12 h] | 1 | gl | 5728-TK3000 | 0,55 | 3.4.4.5 | 1 |
| A7410 |  | Pruebas de Operación y Puesta en Marcha de Instrumento TAG: XV-6210 | 2d | 2026-03-15 | 2026-03-16 | A7400 SS | 15d | 0d | SQM-INSTRUMENTACIÓN [12 h] | 1 | gl | 5728-TK3000 | 0,55 | 3.4.4.4 | 1 |
| A7420 |  | Pruebas de Operación y Puesta en Marcha de Instrumento TAG: XV-6211 | 2d | 2026-03-15 | 2026-03-16 | A7410 SS | 15d | 0d | SQM-INSTRUMENTACIÓN [12 h] | 1 | gl | 5728-TK3000 | 0,55 | 3.4.4.3 | 1 |
| A7430 |  | Pruebas de Operación y Puesta en Marcha de Instrumento TAG: XV-6214 | 2d | 2026-03-15 | 2026-03-16 | A7420 SS | 15d | 0d | SQM-INSTRUMENTACIÓN [12 h] | 1 | gl | 5728-TK3000 | 0,55 | 3.4.4.2 | 1 |
| A7440 |  | Pruebas de Operación y Puesta en Marcha de Instrumento TAG: XV-6215 | 2d | 2026-03-15 | 2026-03-16 | A7430 SS | 15d |  | SQM-INSTRUMENTACIÓN [12 h] | 1 | gl | 5728-TK3000 | 0,55 | 3.4.4.1 | 1 |

| ID | WBS | Activity | Duration | Start | Finish | Predecessors | Total float | Free float | Resources | Cost | Cantidad | Unidad | Área | Remanente | Ítem EDP | Forecast | Corregir |
| --- | --- | --- | --- | --- | --- | --- | --- | --- | --- | --- | --- | --- | --- | --- | --- | --- | --- |
|  | 4 | **ÁREA 5827 - SECTOR ESTANQUES L5 LiOH (TK-6100)** |  | 2026-01-18 | 2026-03-25 |  |  |  |  |  |  |  |  |  |  |  |  |
|  | 1 | **OBRAS PIPING SECTOR ESTANQUES L5 LiOH (TK-6100)** |  | 2026-01-18 | 2026-03-25 |  |  |  |  |  |  |  |  |  |  |  |  |
|  | 1 | **FABRICACIÓN Y MONTAJE DE CAÑERÍAS ÁREA ESTANQUES L5 LiOH (TK-6100)** |  | 2026-01-18 | 2026-03-22 |  |  |  |  |  |  |  |  |  |  |  |  |
| A7450 |  | Ø 6" - Cañería Acero Inoxidable - Fabricación | 34d | 2026-01-18 | 2026-02-20 | A6610 | 6d | 0d | SQM-PIPING [1755 h] | 890,802.9 | 135 | un | 5827-L5 LiOH | 109 | 6.1.1.3 | 190 |  |
| A7470 |  | Ø 3" - Cañería Acero Inoxidable - Fabricación | 28d | 2026-01-23 | 2026-02-19 | A7450 SS+5d | 38d | 0d | SQM-PIPING [1635.2 h] | 829,994.82 | 292 | un | 5827-L5 LiOH | 268,6 | 6.1.1.18 | 292 |  |
| A7520 |  | Ø 3" - Cañería Acero Inoxidable - Montaje | 28d | 2026-01-25 | 2026-02-21 | A7470 FF+2d | 38d | 31d | SQM-PIPING [345.72 h] | 175,480.56 | 172 | m | 5827-L5 LiOH | 148,8 | 6.1.1.29 | 147 | R FF |
| A7480 |  | Ø 2" - Cañería Acero Inoxidable - Fabricación | 14d | 2026-02-07 | 2026-02-20 | A7460 FF | 25d | 0d | SQM-PIPING [258.65 h] | 131,283.79 | 63 | un | 5827-L5 LiOH | 44,1 | 6.1.1.31 | 63 |  |
| A7490 |  | Ø 3" - Cañería CPVC, SCH 80 - Fabricación | 8d | 2026-02-07 | 2026-02-14 | A7480 SS | 39d | 17d | SQM-PIPING [407 h] | 206,585.06 | 148 | un | 5827-L5 LiOH | 148 | 6.1.1.19 | 148 |  |
| A7460 |  | Ø 4" - Cañería Acero Inoxidable - Fabricación | 10d | 2026-02-11 | 2026-02-20 | A7450 FF | 25d | 0d | SQM-PIPING [197.6 h] | 100,297.81 | 26 | un | 5827-L5 LiOH | 47 | 6.1.1.11 | 56 |  |
| A7540 |  | Ø 3" - Cañería CPVC, SCH 80 - Montaje | 14d | 2026-02-18 | 2026-03-03 | A7490 FF, A6750 | 22d | 0d | SQM-PIPING [92.4 h] | 46,900.39 | 44 | m | 5827-L5 LiOH | 39,6 | 6.1.1.28 | 68,4 |  |
| A7500 |  | Ø 6" - Cañería Acero Inoxidable - Montaje | 30d | 2026-02-21 | 2026-03-22 | A7450 SS+2d, A7450 | 6d | 0d | SQM-PIPING [903.92 h] | 458,811.38 | 343 | m | 5827-L5 LiOH | 120,4 | 6.1.1.8 | 468,9 | R FF |
| A7530 |  | Ø 2" - Cañería Acero Inoxidable - Montaje | 14d | 2026-02-21 | 2026-03-06 | A7480 FF, A7480 | 25d | 16d | SQM-PIPING [75.38 h] | 38,258.84 | 27 | m | 5827-L5 LiOH | 21,1 | 6.1.1.34 | 27 |  |
| A7510 |  | Ø 4" - Cañería Acero Inoxidable - Montaje | 10d | 2026-03-13 | 2026-03-22 | A7500 FF, A7460 FF, A7460 | 9d | 3d | SQM-PIPING [35.17 h] | 17,854.13 | 15 | m | 5827-L5 LiOH | 71,6 | 6.1.1.16 | 155 |  |
|  | 2 | **MONTAJE DE VÁLVULAS Y FITTING SECTOR ESTANQUES L5 LiOH (TK-6100)** |  | 2026-01-18 | 2026-03-22 |  |  |  |  |  |  |  |  |  |  |  |  |
| A7550 |  | Fitting Sector L5 LiOH - TK-6100 (Global) | 64d | 2026-01-18 | 2026-03-22 | A7450 SS, A7530 FF | 9d | 0d | SQM-PIPING [3375.27 h] | 1,713,219.55 | 395 | un | 5827-L5 LiOH | 449 | 99.10 | 431 | R FF |
| A7560 |  | Válvulas Sector L5 LiOH - TK-6100 (Global) | 64d | 2026-01-18 | 2026-03-22 | A7450 SS, A7530 FF, A7550 SS | 9d | 2d | SQM-PIPING [290.25 h] | 147,325.1 | 28 | un | 5827-L5 LiOH | 19 | 99.19 | 28 | R FF |
|  | 3 | **TIE IN LÍNEAS ASOCIADAS A ESTANQUES L5 LiOH (TK-6100)** |  | 2026-03-04 | 2026-03-24 |  |  |  |  |  |  |  |  |  |  |  |  |
| A7610 |  | TIE-IN N° 6456 - 5827-EST-6050 Ac. Inoc. a Línea Proyectada 80-DR-5827-P2-6625 | 2d | 2026-03-04 | 2026-03-05 | A7540 | 22d | 0d | SQM-PIPING [46.67 h] | 23,687.07 | 1 | un | 5827-L5 LiOH | 1 | 6.1.3.6 | 1 |  |
| A7620 |  | TIE-IN N° 6457 - 5827-EST-6050 Ac. Inox. a Línea Proyectada 80-DR-5827-P2-6622 | 2d | 2026-03-04 | 2026-03-05 | A7610 SS | 22d | 0d | SQM-PIPING [46.67 h] | 23,687.07 | 1 | un | 5827-L5 LiOH | 1 | 6.1.3.5 | 1 |  |
| A7630 |  | TIE-IN N° 6460 -5827-EST-7050 Ac. Inox. a Línea Proyectada 80-DR-5827-P2-6627 | 2d | 2026-03-06 | 2026-03-07 | A7620 | 22d | 0d | SQM-PIPING [46.67 h] | 23,687.07 | 1 | un | 5827-L5 LiOH | 1 | 6.1.3.2 | 1 |  |
| A7640 |  | TIE-IN N° 6461 - 5827-EST-7050 Ac. Inox. a Línea Proyectada 80-DR-5827-P2-6624 | 2d | 2026-03-06 | 2026-03-07 | A7630 SS | 22d | 15d | SQM-PIPING [46.67 h] | 23,687.07 | 1 | un | 5827-L5 LiOH | 1 | 6.1.3.1 | 1 |  |
| A7570 |  | TIE-IN N° 6454 - 5827-EST-6100 Ac. Inox. a Línea Proyectada 100-LC-5827-I1-6615-A | 2d | 2026-03-23 | 2026-03-24 | A7530 FF, A7560 FF, A7500 | 7d | 0d | SQM-PIPING [50.67 h] | 25,717.39 | 1 | un | 5827-L5 LiOH | 1 | 6.1.3.8 | 1 |  |
| A7580 |  | TIE-IN N° 6455 - 5827-EST-6100 Ac. Inox. a Línea Proyectada 100-LC-5827-I1-6619-A | 2d | 2026-03-23 | 2026-03-24 | A7570 SS | 7d | 0d | SQM-PIPING [50.67 h] | 25,717.39 | 1 | un | 5827-L5 LiOH | 1 | 6.1.3.7 | 1 |  |
| A7590 |  | TIE-IN N° 6458 - 5827-EST-7100 Ac Inox. a Línea Proyectada 80-LC-5827-I1-6623-A | 2d | 2026-03-23 | 2026-03-24 | A7580 FF | 7d | 0d | SQM-PIPING [46.67 h] | 23,687.07 | 1 | un | 5827-L5 LiOH | 1 | 6.1.3.4 | 1 |  |
| A7600 |  | TIE-IN N° 6459 - 5827-EST-7100 Ac. Inox. a Línea Proyectada 80-LC-5827-I1-6626-A | 2d | 2026-03-23 | 2026-03-24 | A7590 FF, A7640, A7520 FF | 7d | 1d | SQM-PIPING [46.67 h] | 23,687.07 | 1 | un | 5827-L5 LiOH | 1 | 6.1.3.3 | 1 |  |

| ID | WBS | Activity | Duration | Start | Finish | Predecessors | Total float | Free float | Resources | Cost | Cantidad | Unidad | Área | Remanente | Ítem EDP | Forecast | Corregir |
| --- | --- | --- | --- | --- | --- | --- | --- | --- | --- | --- | --- | --- | --- | --- | --- | --- | --- |
|  | 4 | **AISLACIÓN LÍNEAS L5 LiOH (TK-6100)** |  | 2026-03-12 | 2026-03-25 |  |  |  |  |  |  |  |  |  |  |  |  |
| A7670 |  | Ø 3" - Aislación de Lana Mineral de 1,5" de espesor | 14d | 2026-03-12 | 2026-03-25 | A7660 FF, A7530 FF, A7640 FF, A7520 FF, A7600 FF | 6d |  | SQM-PIPING [550.4 h] | 279,372.03 | 172 | un | 5827-L5 LiOH | 172 | 6.1.1.30 | 147 |  |
| A7650 |  | Ø 6" - Aislación de Lana Mineral de 1,5" de espesor | 3d | 2026-03-23 | 2026-03-25 | A7500 FF, A7500 | 6d | 0d | SQM-PIPING [1426.88 h] | 724,255.75 | 343 | un | 5827-L5 LiOH | 244,997 | 6.1.1.9 | 468,9 | R FF |
| A7660 |  | Ø 4" - Aislación de Lana Mineral de 1,5" de espesor | 3d | 2026-03-23 | 2026-03-25 | A7650 FF, A7510 FF | 6d | 0d | SQM-PIPING [72 h] | 36,545.76 | 15 | un | 5827-L5 LiOH | 84 | 6.1.1.17 | 14 |  |
|  | 2 | **OBRAS DE INSTRUMENTACIÓN SECTOR ESTANQUES L5 LiOH (TK-6100)** |  | 2026-02-15 | 2026-03-23 |  |  |  |  |  |  |  |  |  |  |  |  |
|  | 1 | **MONTAJE DE CANALIZACIÓN Y FERRETERÍA INST. ESTANQUES L5 LiOH (TK-6100)** |  | 2026-02-15 | 2026-02-15 |  |  |  |  |  |  |  |  |  |  |  |  |
| A7680 |  | Canalización y Copla de Conduit de Acero Galvanizado 1"Ø, Conduit ANSI C80.1 | 1d | 2026-02-15 | 2026-02-15 | A6910 | 21d | 0d | SQM-INSTRUMENTACIÓN [333.9 h] |  | 265 | m | 5827-L5 LiOH | 238,5 | 6.2.1.2 | 1 |  |
| A7690 |  | Canalización y Copla de Conduit Flexible Metálico con Cubierta PVC 1" Ø Trabajo Pesado | 1d | 2026-02-15 | 2026-02-15 | A7680 SS | 21d | 0d | SQM-INSTRUMENTACIÓN [70.56 h] |  | 56 | m | 5827-L5 LiOH | 50,4 | 6.2.1.1 | 1 |  |
|  | 2 | **TENDIDO Y CONEXIONADO DE CABLES INSTRUMENTACIÓN ESTANQUES L5 LiOH (TK-6100)** |  | 2026-02-15 | 2026-02-22 |  |  |  |  |  |  |  |  |  |  |  |  |
| A7700 |  | Cable Multiconductor de Cobre con Aislación de XLPE, 1x3C #12 AWG, Clase 1 kV | 6d | 2026-02-15 | 2026-02-20 | A7690 SS | 21d | 0d | SQM-INSTRUMENTACIÓN [94.99 h] |  | 260 | m | 5827-L5 LiOH | 234 | 6.2.2.1 | 350 |  |
| A7710 |  | Cable de Instrumentación (Señales Análogas), 1x1 par #16 AWG Apantallado | 3d | 2026-02-15 | 2026-02-17 | A7700 SS | 21d | 0d | SQM-INSTRUMENTACIÓN [346.32 h] |  | 1170 | m | 5827-L5 LiOH | 1036,75 | 6.2.2.3 | 1500 |  |
| A7720 |  | Cable Multiconductor de Cobre Blando 1x3C #12 AWG, Clase 0,3 | 5d | 2026-02-18 | 2026-02-22 | A7710 | 21d | 0d | SQM-INSTRUMENTACIÓN [189.97 h] |  | 520 | m | 5827-L5 LiOH | 467,9875 | 6.2.2.4 | 650 |  |
| A7730 |  | Cable Multiconductor de Cobre Blando 1x5C #12 AWG, Clase 0,3 | 5d | 2026-02-18 | 2026-02-22 | A7720 SS | 21d | 0d | SQM-INSTRUMENTACIÓN [427.44 h] |  | 1170 | m | 5827-L5 LiOH | 1053 | 6.2.2.2 | 1500 |  |
|  | 3 | **MONTAJE Y CONEXIONADO DE EQUIPOS E INSTRUMENTOS ESTANQUES L5 LiOH (TK-6100)** |  | 2026-02-23 | 2026-03-19 |  |  |  |  |  |  |  |  |  |  |  |  |
| A7740 |  | Módulos de Entradas y Salidas Análogas/Digitales en TAG: 5804-PNC-6402. | 8d | 2026-02-23 | 2026-03-02 | A7730 | 21d | 0d | SQM-INSTRUMENTACIÓN [620.5 h] |  | 5 | un | 5827-L5 LiOH | 4,9 | 6.2.3.1 | 5 |  |
| A7750 |  | Módulos de Entradas y Salidas Análogas/Digitales en TAG: 5804-PNC-7502. | 8d | 2026-02-23 | 2026-03-02 | A7740 SS | 21d | 0d | SQM-INSTRUMENTACIÓN [620.5 h] |  | 5 | un | 5827-L5 LiOH | 4,9 | 6.2.3.2 | 5 |  |
| A7760 |  | Brazo Prealambrado para Módulos de Entradas y Salidas Análogas/Digitales en TAG: 5804-PNC-6402. | 8d | 2026-02-23 | 2026-03-02 | A7750 SS | 21d | 0d | SQM-INSTRUMENTACIÓN [620.5 h] |  | 5 | un | 5827-L5 LiOH | 4,9 | 6.2.3.3 | 5 |  |
| A7770 |  | Brazo Prealambrado para Módulos de Entradas y Salidas Análogas/Digitales en TAG: 5804-PNC-7502. | 8d | 2026-02-23 | 2026-03-02 | A7760 SS | 21d | 13d | SQM-INSTRUMENTACIÓN [620.5 h] |  | 5 | un | 5827-L5 LiOH | 4,9 | 6.2.3.4 | 5 |  |
| A7780 |  | Instrumento TAG: FIT-6230 | 1d | 2026-03-15 | 2026-03-15 | A7770 FF, A7280 | 8d | 0d | SQM-INSTRUMENTACIÓN [43.5 h] |  | 2 | gl | 5827-L5 LiOH | 1,5 | 6.2.3.30 | 1 |  |
| A7790 |  | Instrumento TAG: FIT-6240 | 1d | 2026-03-15 | 2026-03-15 | A7780 SS | 8d | 0d | SQM-INSTRUMENTACIÓN [43.5 h] |  | 2 | gl | 5827-L5 LiOH | 1,5 | 6.2.3.29 | 1 |  |
| A7800 |  | Instrumento TAG: FIT-6268 | 1d | 2026-03-15 | 2026-03-15 | A7790 SS | 8d | 0d | SQM-INSTRUMENTACIÓN [43.5 h] |  | 2 | gl | 5827-L5 LiOH | 1,5 | 6.2.3.28 | 1 |  |
| A7810 |  | Instrumento TAG: FIT-6670 | 1d | 2026-03-15 | 2026-03-15 | A7800 SS | 8d | 0d | SQM-INSTRUMENTACIÓN [43.5 h] |  | 2 | gl | 5827-L5 LiOH | 1,5 | 6.2.3.27 | 1 |  |
| A7820 |  | Instrumento TAG: FV-6264 | 1d | 2026-03-15 | 2026-03-15 | A7810 SS | 8d | 0d | SQM-INSTRUMENTACIÓN [21.75 h] |  | 1 | gl | 5827-L5 LiOH | 0,75 | 6.2.3.26 | 1 |  |
| A7830 |  | Instrumento TAG: FV-6265 | 1d | 2026-03-15 | 2026-03-15 | A7820 SS | 8d | 0d | SQM-INSTRUMENTACIÓN [21.75 h] |  | 1 | gl | 5827-L5 LiOH | 0,75 | 6.2.3.24 | 1 |  |
| A7840 |  | Instrumento TAG: FV-6264 | 1d | 2026-03-15 | 2026-03-15 | A7830 SS | 8d | 0d | SQM-INSTRUMENTACIÓN [21.75 h] |  | 1 | gl | 5827-L5 LiOH | 0,75 | 6.2.3.25 | 1 |  |
| A7850 |  | Instrumento TAG: FV-6265 | 1d | 2026-03-15 | 2026-03-15 | A7840 SS | 8d | 0d | SQM-INSTRUMENTACIÓN [21.75 h] |  | 1 | gl | 5827-L5 LiOH | 0,75 | 6.2.3.23 | 1 |  |
| A7860 |  | Instrumento TAG: XV-6251 | 1d | 2026-03-16 | 2026-03-16 | A7850 | 8d | 0d | SQM-INSTRUMENTACIÓN [21.75 h] |  | 1 | gl | 5827-L5 LiOH | 0,8 | 6.2.3.9 | 1 |  |
| A7870 |  | Instrumento TAG: XV-6229 | 1d | 2026-03-16 | 2026-03-16 | A7860 SS | 8d | 0d | SQM-INSTRUMENTACIÓN |  | 0 | gl |  | 1 |  |  |  |
| A7880 |  | Instrumento TAG: XV-6232 | 1d | 2026-03-16 | 2026-03-16 | A7870 SS | 8d | 0d | SQM-INSTRUMENTACIÓN [21.75 h] |  | 1 | gl | 5827-L5 LiOH | 0,45 | 6.2.3.19 | 1 |  |
| A7890 |  | Instrumento TAG: XV-6245 | 1d | 2026-03-16 | 2026-03-16 | A7880 SS | 8d | 0d | SQM-INSTRUMENTACIÓN [21.75 h] |  | 1 | gl | 5827-L5 LiOH | 0,1 | 6.2.3.15 | 1 |  |
| A7900 |  | Instrumento TAG: XV-6246 | 1d | 2026-03-16 | 2026-03-16 | A7890 SS | 8d | 0d | SQM-INSTRUMENTACIÓN [21.75 h] |  | 1 | gl | 5827-L5 LiOH | 0,8 | 6.2.3.14 | 1 |  |
| A7910 |  | Instrumento TAG: XV-6247 | 1d | 2026-03-16 | 2026-03-16 | A7900 SS | 8d | 0d | SQM-INSTRUMENTACIÓN [21.75 h] |  | 1 | gl | 5827-L5 LiOH | 0,8 | 6.2.3.13 | 1 |  |
| A7920 |  | Instrumento TAG: XV-6252 | 1d | 2026-03-16 | 2026-03-16 | A7910 SS | 8d | 0d | SQM-INSTRUMENTACIÓN [21.75 h] |  | 1 | gl | 5827-L5 LiOH | 0,8 | 6.2.3.8 | 1 |  |
| A7930 |  | Instrumento TAG: XV-6253 | 1d | 2026-03-16 | 2026-03-16 | A7920 SS | 8d | 0d | SQM-INSTRUMENTACIÓN [21.75 h] |  | 1 | gl | 5827-L5 LiOH | 0,8 | 6.2.3.7 | 1 |  |
| A7940 |  | Instrumento TAG: XV-6258 | 1d | 2026-03-17 | 2026-03-17 | A7930 | 8d | 0d | SQM-INSTRUMENTACIÓN [21.75 h] |  | 1 | gl | 5827-L5 LiOH | 0,1 | 6.2.3.5 | 1 |  |
| A7950 |  | Instrumento TAG: XV-6249 | 1d | 2026-03-17 | 2026-03-17 | A7940 SS | 8d | 0d | SQM-INSTRUMENTACIÓN [21.75 h] |  | 1 | gl | 5827-L5 LiOH | 0,8 | 6.2.3.12 | 1 |  |
| A7960 |  | Instrumento TAG: XV-6229 | 1d | 2026-03-17 | 2026-03-17 | A7950 SS | 8d | 0d | SQM-INSTRUMENTACIÓN [21.75 h] |  | 1 | gl | 5827-L5 LiOH | 0,1 | 6.2.3.22 | 1 |  |
| A7970 |  | Instrumento TAG: XV-6230 | 1d | 2026-03-17 | 2026-03-17 | A7960 SS | 8d | 0d | SQM-INSTRUMENTACIÓN [21.75 h] |  | 1 | gl | 5827-L5 LiOH | 0,7 | 6.2.3.20 | 1 |  |
| A7980 |  | Instrumento TAG: XV-6240 | 1d | 2026-03-17 | 2026-03-17 | A7970 SS | 8d | 0d | SQM-INSTRUMENTACIÓN [21.75 h] |  | 1 | gl | 5827-L5 LiOH | 0,8 | 6.2.3.18 | 1 |  |
| A7990 |  | Instrumento TAG: XV-6242 | 1d | 2026-03-17 | 2026-03-17 | A7980 SS | 8d | 0d | SQM-INSTRUMENTACIÓN [21.75 h] |  | 1 | gl | 5827-L5 LiOH | 0,8 | 6.2.3.17 | 1 |  |
| A8000 |  | Instrumento TAG: XV-6245 | 1d | 2026-03-17 | 2026-03-17 | A7990 SS | 8d | 0d | SQM-INSTRUMENTACIÓN [21.75 h] |  | 1 | gl | 5827-L5 LiOH | 0,7 | 6.2.3.16 | 1 |  |
| A8010 |  | Instrumento TAG: XV-6250 | 1d | 2026-03-17 | 2026-03-17 | A8000 SS | 8d | 0d | SQM-INSTRUMENTACIÓN [21.75 h] |  | 1 | gl | 5827-L5 LiOH | 0,1 | 6.2.3.11 | 1 |  |
| A8020 |  | Instrumento TAG: XV-6251 | 1d | 2026-03-18 | 2026-03-18 | A8010 | 8d | 0d | SQM-INSTRUMENTACIÓN [21.75 h] |  | 1 | gl | 5827-L5 LiOH | 0,7 | 6.2.3.10 | 1 |  |
| A8030 |  | Instrumento TAG: XV-6258 | 1d | 2026-03-19 | 2026-03-19 | A8020 | 8d | 0d | SQM-INSTRUMENTACIÓN |  | 0 | gl |  | 1 |  |  |  |

| ID | WBS | Activity | Duration | Start | Finish | Predecessors | Total float | Free float | Resources | Cantidad | Unidad | Área | Remanente | Ítem EDP | Forecast |
| --- | --- | --- | --- | --- | --- | --- | --- | --- | --- | --- | --- | --- | --- | --- | --- |
|  | 4 | **PRUEBAS DE FUNCIONAMIENTO Y PEM INST. ESTANQUES L5 LiOH (TK-6100)** |  | 2026-03-20 | 2026-03-23 |  |  |  |  |  |  |  |  |  |  |
| A8040 |  | Pruebas de Operación y PEM de Entradas y Salidas Análogas/Digitales en TAG: 5801-PNC-7502 | 1d | 2026-03-20 | 2026-03-20 | A8030 | 8d | 0d | SQM-INSTRUMENTACIÓN [60 h] | 5 | un | 5827-L5 LiOH | 5 | 6.2.4.28 | 5 |
| A8050 |  | Pruebas de Operación y PEM Módulos de Entradas y Salidas Análogas/Digitales en TAG: 5804-PNC-6402 | 1d | 2026-03-20 | 2026-03-20 | A8040 SS | 8d | 0d | SQM-INSTRUMENTACIÓN [60 h] | 5 | un | 5827-L5 LiOH | 5 | 6.2.4.1 | 5 |
| A8060 |  | Pruebas de Operación y PEM de Brazo Prealambrado Módulos de Entradas y Salidas Análogas/Digitales en TAG: 5804-PNC | 1d | 2026-03-20 | 2026-03-20 | A8050 SS | 8d | 0d | SQM-INSTRUMENTACIÓN [60 h] | 5 | un | 5827-L5 LiOH | 5 | 6.2.4.29 | 5 |
| A8070 |  | Pruebas de Operación y PEM de Brazo Prealambrado Módulos de Entradas y Salidas Análogas/Digitales en TAG: 5801-PNC | 1d | 2026-03-20 | 2026-03-20 | A8060 SS | 8d | 0d | SQM-INSTRUMENTACIÓN [60 h] | 5 | un | 5827-L5 LiOH | 5 | 6.2.4.30 | 5 |
| A8080 |  | Pruebas de Operación y Puesta en Marcha de Instrumento TAG: FIT-6230 | 1d | 2026-03-20 | 2026-03-20 | A8070 SS | 8d | 0d | SQM-INSTRUMENTACIÓN [12 h] | 1 | gl | 5827-L5 LiOH | 1 | 6.2.4.27 | 1 |
| A8090 |  | Pruebas de Operación y Puesta en Marcha de Instrumento TAG: FIT-6240 | 1d | 2026-03-20 | 2026-03-20 | A8080 SS | 8d | 0d | SQM-INSTRUMENTACIÓN [12 h] | 1 | gl | 5827-L5 LiOH | 1 | 6.2.4.26 | 1 |
| A8100 |  | Pruebas de Operación y Puesta en Marcha de Instrumento TAG: FIT-6268 | 1d | 2026-03-20 | 2026-03-20 | A8090 SS | 8d | 0d | SQM-INSTRUMENTACIÓN [12 h] | 1 | gl | 5827-L5 LiOH | 1 | 6.2.4.25 | 1 |
| A8110 |  | Pruebas de Operación y Puesta en Marcha de Instrumento TAG: FIT-6670 | 1d | 2026-03-21 | 2026-03-21 | A8100 | 8d | 0d | SQM-INSTRUMENTACIÓN [12 h] | 1 | gl | 5827-L5 LiOH | 1 | 6.2.4.24 | 1 |
| A8120 |  | Pruebas de Operación y Puesta en Marcha de Instrumento TAG: FV-6264 | 1d | 2026-03-21 | 2026-03-21 | A8110 SS | 8d | 0d | SQM-INSTRUMENTACIÓN [12 h] | 1 | gl | 5827-L5 LiOH | 1 | 6.2.4.23 | 1 |
| A8130 |  | Pruebas de Operación y Puesta en Marcha de Instrumento TAG: FV-6265 | 1d | 2026-03-21 | 2026-03-21 | A8120 SS | 8d | 0d | SQM-INSTRUMENTACIÓN [12 h] | 1 | gl | 5827-L5 LiOH | 1 | 6.2.4.21 | 1 |
| A8140 |  | Pruebas de Operación y Puesta en Marcha de Instrumento TAG: FV-6264 | 1d | 2026-03-21 | 2026-03-21 | A8130 SS | 8d | 0d | SQM-INSTRUMENTACIÓN [12 h] | 1 | gl | 5827-L5 LiOH | 1 | 6.2.4.22 | 1 |
| A8150 |  | Pruebas de Operación y Puesta en Marcha de Instrumento TAG: FV-6265 | 1d | 2026-03-21 | 2026-03-21 | A8140 SS | 8d | 0d | SQM-INSTRUMENTACIÓN [12 h] | 1 | gl | 5827-L5 LiOH | 1 | 6.2.4.20 | 1 |
| A8160 |  | Pruebas de Operación y Puesta en Marcha de Instrumento TAG: XV-6251 | 1d | 2026-03-21 | 2026-03-21 | A8150 SS | 8d | 0d | SQM-INSTRUMENTACIÓN [24 h] | 2 | gl | 5827-L5 LiOH | 2 | 6.2.4.7 | 1 |
| A8170 |  | Pruebas de Operación y Puesta en Marcha de Instrumento TAG: XV-6229 | 1d | 2026-03-21 | 2026-03-21 | A8160 SS | 8d | 0d | SQM-INSTRUMENTACIÓN [12 h] | 1 | gl | 5827-L5 LiOH | 1 | 6.2.4.19 | 1 |
| A8180 |  | Pruebas de Operación y Puesta en Marcha de Instrumento TAG: XV-6232 | 1d | 2026-03-21 | 2026-03-21 | A8170 SS | 8d | 0d | SQM-INSTRUMENTACIÓN [12 h] | 1 | gl | 5827-L5 LiOH | 1 | 6.2.4.16 | 1 |
| A8190 |  | Pruebas de Operación y Puesta en Marcha de Instrumento TAG: XV-6245 | 1d | 2026-03-22 | 2026-03-22 | A8180 | 8d | 0d | SQM-INSTRUMENTACIÓN [12 h] | 1 | gl | 5827-L5 LiOH | 1 | 6.2.4.13 | 1 |
| A8200 |  | Pruebas de Operación y Puesta en Marcha de Instrumento TAG: XV-6246 | 1d | 2026-03-22 | 2026-03-22 | A8190 SS | 8d | 0d | SQM-INSTRUMENTACIÓN [12 h] | 1 | gl | 5827-L5 LiOH | 1 | 6.2.4.11 | 1 |
| A8210 |  | Pruebas de Operación y Puesta en Marcha de Instrumento TAG: XV-6247 | 1d | 2026-03-22 | 2026-03-22 | A8200 SS | 8d | 0d | SQM-INSTRUMENTACIÓN [12 h] | 1 | gl | 5827-L5 LiOH | 1 | 6.2.4.10 | 1 |
| A8220 |  | Pruebas de Operación y Puesta en Marcha de Instrumento TAG: XV-6252 | 1d | 2026-03-22 | 2026-03-22 | A8210 SS | 8d | 0d | SQM-INSTRUMENTACIÓN [12 h] | 1 | gl | 5827-L5 LiOH | 1 | 6.2.4.5 | 1 |
| A8230 |  | Pruebas de Operación y Puesta en Marcha de Instrumento TAG: XV-6253 | 1d | 2026-03-22 | 2026-03-22 | A8220 SS | 8d | 0d | SQM-INSTRUMENTACIÓN [12 h] | 1 | gl | 5827-L5 LiOH | 1 | 6.2.4.4 | 1 |
| A8240 |  | Pruebas de Operación y Puesta en Marcha de Instrumento TAG: XV-6258 | 1d | 2026-03-22 | 2026-03-22 | A8230 SS | 8d | 0d | SQM-INSTRUMENTACIÓN [12 h] | 1 | gl | 5827-L5 LiOH | 1 | 6.2.4.3 | 1 |
| A8250 |  | Pruebas de Operación y Puesta en Marcha de Instrumento TAG: XV-6249 | 1d | 2026-03-22 | 2026-03-22 | A8240 SS | 8d | 0d | SQM-INSTRUMENTACIÓN [12 h] | 1 | gl | 5827-L5 LiOH | 1 | 6.2.4.9 | 1 |
| A8260 |  | New Activity | 1d | 2026-03-23 | 2026-03-23 | A8250 | 8d | 0d | SQM-INSTRUMENTACIÓN | 0 | gl |  | 1 |  |  |
| A8270 |  | Pruebas de Operación y Puesta en Marcha de Instrumento TAG: XV-6230 | 1d | 2026-03-23 | 2026-03-23 | A8260 SS | 8d | 0d | SQM-INSTRUMENTACIÓN [12 h] | 1 | gl | 5827-L5 LiOH | 1 | 6.2.4.17 | 1 |
| A8280 |  | Pruebas de Operación y Puesta en Marcha de Instrumento TAG: XV-6240 | 1d | 2026-03-23 | 2026-03-23 | A8270 SS | 8d | 0d | SQM-INSTRUMENTACIÓN [12 h] | 1 | gl | 5827-L5 LiOH | 1 | 6.2.4.15 | 1 |
| A8290 |  | Pruebas de Operación y Puesta en Marcha de Instrumento TAG: XV-6242 | 1d | 2026-03-23 | 2026-03-23 | A8280 SS | 8d | 0d | SQM-INSTRUMENTACIÓN [12 h] | 1 | gl | 5827-L5 LiOH | 1 | 6.2.4.14 | 1 |
| A8300 |  | Pruebas de Operación y Puesta en Marcha de Instrumento TAG: XV-6245 | 1d | 2026-03-23 | 2026-03-23 | A8290 SS | 8d | 0d | SQM-INSTRUMENTACIÓN [12 h] | 1 | gl | 5827-L5 LiOH | 1 | 6.2.4.12 | 1 |
| A8310 |  | Pruebas de Operación y Puesta en Marcha de Instrumento TAG: XV-6250 | 1d | 2026-03-23 | 2026-03-23 | A8300 SS | 8d | 0d | SQM-INSTRUMENTACIÓN [12 h] | 1 | gl | 5827-L5 LiOH | 1 | 6.2.4.8 | 1 |
| A8320 |  | Pruebas de Operación y Puesta en Marcha de Instrumento TAG: XV-6251 | 1d | 2026-03-23 | 2026-03-23 | A8310 SS | 8d | 0d | SQM-INSTRUMENTACIÓN [12 h] | 1 | gl | 5827-L5 LiOH | 1 | 6.2.4.6 | 1 |
| A8330 |  | Pruebas de Operación y Puesta en Marcha de Instrumento TAG: XV-6258 | 1d | 2026-03-23 | 2026-03-23 | A8320 SS | 8d |  | SQM-INSTRUMENTACIÓN [12 h] | 1 | gl | 5827-L5 LiOH | 1 | 6.2.4.2 | 1 |

| ID | WBS | Activity | Duration | Start | Finish | Predecessors | Total float | Free float | Resources | Cost | Cantidad | Unidad | Área | Remanente | Ítem EDP | Forecast | Impacto | Corregir |
| --- | --- | --- | --- | --- | --- | --- | --- | --- | --- | --- | --- | --- | --- | --- | --- | --- | --- | --- |
|  | 5 | **ÁREA 5872 - SECTOR TK-3016** |  | 2026-01-28 | 2026-03-31 |  |  |  |  |  |  |  |  |  |  |  |  |  |
|  | 6 | **OBRAS CIVILES TK-3016** |  | 2026-01-28 | 2026-02-02 |  |  |  |  |  |  |  |  |  |  |  |  |  |
|  | 1 | **OOCC SECTOR ESTANQUE DE AGUA ULTRA PURA TAG:5872-EST-3016** |  | 2026-01-28 | 2026-02-02 |  |  |  |  |  |  |  |  |  |  |  |  |  |
| A8350 |  | Armadura de Refuerzo A630-420H para PD-1 | 4d | 2026-01-28 | 2026-01-31 | A6870 SS | 1d | 0d | SQM-OBRAS CIVILES [9.98 h] | 5,067.3 | 72,5 | kg | 5872-TK3016 | 0 | 8.2.2.1 | 75,52 |  |  |
| A8340 |  | Hormigón G30 Pedestal PD-1 (TAG: 5817-BBA-1681 y TAG: 5817-BBA-1684) | 2d | 2026-02-01 | 2026-02-02 | A8350, A6540 | 1d | 0d | SQM-OBRAS CIVILES [13.44 h] | 6,821.88 | 1,2 | m3 | 5872-TK3016 | 0 | 8.2.1.1 | 1,2 |  |  |
|  | 1 | **OBRAS MECÁNICAS TK-3016** |  | 2026-02-03 | 2026-02-06 |  |  |  |  |  |  |  |  |  |  |  |  |  |
|  | 1 | **MONTAJE Y PRUEBAS DE EQUIPOS MECÁNICOS ÁREA 5872 TK3016 HIDRÓXIDO** |  | 2026-02-03 | 2026-02-06 |  |  |  |  |  |  |  |  |  |  |  |  |  |
| A8360 |  | Bomba Centrífuga y Motor TAG: 5872-BBA-1681; 5872-MTR-1682 | 4d | 2026-02-03 | 2026-02-06 | A8340, A6030 | 1d | 0d | SQM-MECANICA [139.9 h] | 71,010.44 | 1 | un | 5872-TK3016 | 0 | 7.1.1.2 | 1 |  |  |
| A8370 |  | Bomba Centrífuga y Motor TAG: 5872-BBA-1684; 5872-MTR-1685 | 4d | 2026-02-03 | 2026-02-06 | A8360 SS | 1d | 0d | SQM-MECANICA [139.9 h] | 71,010.44 | 1 | un | 5872-TK3016 | 0 | 7.1.1.1 | 1 |  |  |
|  | 2 | **OBRAS PIPING TK-3016** |  | 2026-02-03 | 2026-03-13 |  |  |  |  |  |  |  |  |  |  |  |  |  |
|  | 1 | **FABRICACIÓN Y MONTAJE DE CAÑERÍAS ÁREA TK-3016** |  | 2026-02-03 | 2026-03-11 |  |  |  |  |  |  |  |  |  |  |  |  |  |
| A8380 |  | Ø 200 mm - Cañería HDPE, PE 100, PN20 (8") - Fabricación | 6d | 2026-02-03 | 2026-02-08 | A3600, A8370 SS | 1d | 0d | SQM-PIPING [217 h] | 110,144.86 | 62 | un | 5872-TK3016 | 0 | 7.2.1.2 | 45 | LDO N°6-20; SDI N°26 |  |
| A8390 |  | Ø 8" - Cañería Acero Inoxidable - Fabricación | 4d | 2026-02-09 | 2026-02-12 | A8380 | 21d | 0d | SQM-PIPING [29.6 h] | 15,024.37 | 2 | un | 5872-TK3016 | 0 | 7.2.1.3 | 4 |  |  |
| A8400 |  | Ø 6" - Cañería Acero Inoxidable - Fabricación | 30d | 2026-02-09 | 2026-03-10 | A6610 SS, A8380, A4540 | 1d | 0d | SQM-PIPING [1261 h] | 640,058.38 | 97 | un | 5872-TK3016 | 0 | 7.2.1.14 | 122 |  |  |
| A8460 |  | Ø 6" - Cañería Acero Inoxidable - Montaje | 28d | 2026-02-12 | 2026-03-11 | A8400 FF+1d, A8510 FF, A8520 FF | 1d | 0d | SQM-PIPING [75.63 h] | 38,390.34 | 28,7 | m | 5872-TK3016 | 0 | 7.2.1.19 | 40,9 |  | R FF |
| A8410 |  | Ø 4" - Cañería Acero Inoxidable - Fabricación | 3d | 2026-02-13 | 2026-02-15 | A8390 | 21d | 0d | SQM-PIPING [30.4 h] | 15,430.43 | 4 | un | 5872-TK3016 | 0 | 7.2.1.20 | 4 |  |  |
| A8420 |  | Ø 3" - Cañería Acero Inoxidable - Fabricación | 3d | 2026-02-16 | 2026-02-18 | A8410 | 21d | 0d | SQM-PIPING [22.4 h] | 11,369.79 | 4 | un | 5872-TK3016 | 0 | 7.2.1.24 | 4 |  |  |
| A8430 |  | Ø 2" - Cañería Acero Inoxidable - Fabricación | 4d | 2026-02-19 | 2026-02-22 | A8420 | 23d | 0d | SQM-PIPING [82.11 h] | 41,677.39 | 20 | un | 5872-TK3016 | 0 | 7.2.1.29 | 12 |  |  |
| A8500 |  | Ø 200 mm - Cañería HDPE, PE 100, PN20 (8") - Montaje | 3d | 2026-02-19 | 2026-02-21 | A8420 | 21d | 0d | SQM-PIPING [242.79 h] | 123,236.11 | 121,7 | m | 5872-TK3016 | 0 | 7.2.1.9 | 121,7 | LDO N°6-20; SDI N°26 |  |
| A8450 |  | Ø 8" - Cañería Acero Inoxidable - Montaje | 3d | 2026-02-22 | 2026-02-24 | A8500 | 21d | 0d | SQM-PIPING [7.26 h] | 3,684.18 | 0,65 | m | 5872-TK3016 | 0 | 7.2.1.10 | 0,65 |  |  |
| A8440 |  | Ø 1" - Cañería Acero Inoxidable - Fabricación | 3d | 2026-02-23 | 2026-02-25 | A8430 | 23d | 0d | SQM-PIPING [6 h] | 3,045.48 | 3 | un | 5872-TK3016 | 0 | 7.2.1.32 | 3 |  |  |
| A8480 |  | Ø 3" - Cañería Acero Inoxidable - Montaje | 3d | 2026-02-25 | 2026-02-27 | A8450 | 21d | 0d | SQM-PIPING [0.53 h] | 271.35 | 0,265968066 | m | 5872-TK3016 | 0 | 7.2.1.27 | 0,265968066 |  |  |
| A8490 |  | Ø 2" - Cañería Acero Inoxidable - Montaje | 3d | 2026-02-28 | 2026-03-02 | A8480 | 21d | 0d | SQM-PIPING [13.96 h] | 7,084.97 | 5 | m | 5872-TK3016 | 0 | 7.2.1.31 | 3,273658441 |  |  |
| A8470 |  | Ø 4" - Cañería Acero Inoxidable - Montaje | 3d | 2026-03-03 | 2026-03-05 | A8490 | 21d | 0d | SQM-PIPING [1.07 h] | 543.89 | 0,456945876 | m | 5872-TK3016 | 0 | 7.2.1.23 | 0,456945876 |  |  |

| ID | WBS | Activity | Duration | Start | Finish | Predecessors | Total float | Free float | Resources | Cost | Cantidad | Unidad | Área | Remanente | Ítem EDP | Forecast | Corregir | Impacto |
| --- | --- | --- | --- | --- | --- | --- | --- | --- | --- | --- | --- | --- | --- | --- | --- | --- | --- | --- |
|  | 2 | **MONTAJE DE VÁLVULAS Y FITTING SECTOR TK-3016** |  | 2026-02-03 | 2026-03-10 |  |  |  |  |  |  |  |  |  |  |  |  |  |
| A8510 |  | Fitting Sector TK-3016 (Global) | 36d | 2026-02-03 | 2026-03-10 | A8380 SS | 2d | 1d | SQM-PIPING [1441.13 h] | 731,489.02 | 125 | un | 5872-TK3016 | 0 | 99.11 | 311 |  |  |
| A8520 |  | Válvulas Sector TK-3016(Global) | 36d | 2026-02-03 | 2026-03-10 | A8380 SS | 2d | 1d | SQM-PIPING [251.25 h] | 127,529.48 | 19 | un | 5872-TK3016 | 0 | 99.20 | 21 |  |  |
|  | 3 | **TIE IN LÍNEAS ASOCIADAS A TK-3016** |  | 2026-03-12 | 2026-03-13 |  |  |  |  |  |  |  |  |  |  |  |  |  |
| A8530 |  | TIE-IN N° 1421 - 5872-EST-3016 a Línea Proyectada 150-IW-5872-I1-1621 | 2d | 2026-03-12 | 2026-03-13 | A8460 | 1d | 0d | SQM-PIPING [50.67 h] | 25,717.39 | 1 | un | 5872-TK3016 | 0 | 7.2.3.2 | 1 |  |  |
| A8540 |  | TIE-IN N° 1422 - 5872-EST-3016 a Línea Proyectada 150-IW-5872-I1-1622 | 2d | 2026-03-12 | 2026-03-13 | A8530 FF | 1d | 0d | SQM-PIPING [50.67 h] | 25,717.39 | 1 | un | 5872-TK3016 | 0 | 7.2.3.1 | 1 |  |  |
| A8550 |  | PerforaciØn de Estanque Existente TK-3016 para TIE-IN N°1421 y 1422. | 2d | 2026-03-12 | 2026-03-13 | A8540 FF, A8580, A7070 FF | 18d |  | SQM-PIPING [101.33 h] | 51,434.77 | 2 | un | 5872-TK3016 | 0 | 7.2.1.35 | 2 | R FF |  |
|  | 4 | **FABRICACIÓN Y MONTAJE DE SOPORTES TK-3016** |  | 2026-02-26 | 2026-03-08 |  |  |  |  |  |  |  |  |  |  |  |  |  |
| A8560 |  | Soporte N°001 - Pedestal Tipo TEE, Acero Estructural para Tuberías Diámetros Pequeños | 3d | 2026-02-26 | 2026-02-28 | A8440 | 23d | 0d | SQM-PIPING [12.75 h] | 6,471.65 | 3 | un | 5872-TK3016 | 0 | 7.2.4.3 | 2 |  |  |
| A8570 |  | Soporte N°002A - Pedestal con Repisa de Acero Estructural para Tuberías Diámetros Pequeños | 3d | 2026-03-01 | 2026-03-03 | A8560 | 23d | 2d | SQM-PIPING [17 h] | 8,628.86 | 4 | un | 5872-TK3016 | 0 | 7.2.4.2 | 4 |  |  |
| A8580 |  | Soporte Primario Tipo "U" (Para Uso General) | 3d | 2026-03-06 | 2026-03-08 | A8570, A8470 | 21d | 3d | SQM-PIPING [7.7 h] | 3,908.37 | 40 | un | 5872-TK3016 | 0 | 7.2.4.1 | 6 |  |  |
|  | 3 | **OBRAS ELÉCTRICAS TK-3016** |  | 2026-03-14 | 2026-03-27 |  |  |  |  |  |  |  |  |  |  |  |  |  |
|  | 1 | **MONTAJE DE CANALIZACIÓN Y FERRETERÍA TK-3016** |  | 2026-03-14 | 2026-03-19 |  |  |  |  |  |  |  |  |  |  |  |  |  |
| A8610 |  | Canalización y Copla de Conduit de Acero Galvanizado 2 1/2"Ø, Conduit ANSI C80.1 | 4d | 2026-03-14 | 2026-03-17 | A8540 | 1d | 0d | SQM-ELÉCTRICO [17.01 h] | 8,633.94 | 9 | m | 5872-TK3016 | 0 | 7.3.1.5 | 40 |  |  |
| A8620 |  | Canalización y Copla de Conduit Flexible Metálico con Cubierta PVC 2 1/2" Ø Trabajo Pesado | 2d | 2026-03-14 | 2026-03-15 | A8610 SS | 1d | 0d | SQM-ELÉCTRICO [3.78 h] | 1,918.65 | 2 | m | 5872-TK3016 | 0 | 7.3.1.2 | 5 |  |  |
| A8630 |  | Canalización y Copla de Conduit de Acero Galvanizado 1 1/2"Ø, Conduit ANSI C80.1 | 4d | 2026-03-16 | 2026-03-19 | A8620 | 1d | 0d | SQM-ELÉCTRICO [7.56 h] | 3,837.3 | 6 | m | 5872-TK3016 | 0 | 7.3.1.6 | 40 |  |  |
| A8640 |  | Canalización y Copla de Conduit Flexible Metálico con Cubierta PVC 1 1/2" Ø Trabajo Pesado | 2d | 2026-03-16 | 2026-03-17 | A8630 SS | 1d | 0d | SQM-ELÉCTRICO [2.52 h] | 1,279.1 | 2 | m | 5872-TK3016 | 0 | 7.3.1.3 | 5 |  |  |
|  | 2 | **TENDIDO Y CONEXIONADO DE CABLES DE ALIMENTACIÓN TK-3016** |  | 2026-03-18 | 2026-03-24 |  |  |  |  |  |  |  |  |  |  |  |  |  |
| A8650 |  | Cable Monoconductor de Cobre con Aislación XLPE, 1C #250 MCM, Clase 1 kV | 7d | 2026-03-18 | 2026-03-24 | A8640 | 1d | 0d | SQM-ELÉCTRICO [252.8 h] | 128,316.22 | 400 | m | 5872-TK3016 | 0 | 7.3.2.3 | 500 |  |  |
| A8660 |  | Cable Multiconductor de Cobre con Aislación XLPE, 1X4C #2 AWG, Clase 1 kV | 4d | 2026-03-18 | 2026-03-21 | A8650 SS | 1d | 0d | SQM-ELÉCTRICO [28.44 h] | 14,435.58 | 45 | m | 5872-TK3016 | 0 | 7.3.2.1 | 45 |  |  |
| A8670 |  | Cable Multiconductor de Cobre con Aislación de XLPE, 1x5C #12 AWG, Clase 1 kV | 4d | 2026-03-18 | 2026-03-21 | A8660 SS | 1d | 0d | SQM-ELÉCTRICO [14.61 h] | 7,417.44 | 40 | m | 5872-TK3016 | 0 | 7.3.2.2 | 45 |  |  |
|  | 3 | **MONTAJE Y CONEXIONADO DE EQUIPOS ELÉCTRICOS TK-3016** |  | 2026-03-22 | 2026-03-24 |  |  |  |  |  |  |  |  |  |  |  |  |  |
| A8680 |  | Tablero Partidor de Motores TAG: 5817-TPM-1502. | 3d | 2026-03-22 | 2026-03-24 | A8670 | 4d | 0d | SQM-ELÉCTRICO [124.1 h] | 62,990.68 | 1 | gl | 5872-TK3016 | 0 | 7.3.3.1 | 1 |  | SDC N°55 |
| A8690 |  | Conexión de Motor TAG: 5872-MTR-1682 a TPM TAG: 5817-TPM-1502. | 2d | 2026-03-22 | 2026-03-23 | A8680 SS | 4d | 0d | SQM-ELÉCTRICO [4.12 h] | 2,093.77 | 1 | gl | 5872-TK3016 | 0 | 7.3.3.4 | 1 |  |  |
| A8700 |  | Conexión de Motor TAG: 5872-MTR-1685 a TPM TAG: 5817-TPM-1502. | 2d | 2026-03-22 | 2026-03-23 | A8690 SS | 4d | 0d | SQM-ELÉCTRICO [4.12 h] | 2,093.77 | 1 | gl | 5872-TK3016 | 0 | 7.3.3.3 | 1 |  |  |
| A8710 |  | Conexión de Tablero Partidor de Motores TAG: 5817-TPM-1502 a Sala Eléctrica TAG: SEL-4016. | 2d | 2026-03-22 | 2026-03-23 | A8700 SS | 4d | 0d | SQM-ELÉCTRICO [4.12 h] | 2,093.77 | 1 | gl | 5872-TK3016 | 0 | 7.3.3.2 | 1 |  |  |

| ID | WBS | Activity | Duration | Start | Finish | Predecessors | Total float | Free float | Resources | Cost | Cantidad | Unidad | Área | Remanente | Ítem EDP | Forecast | Impacto |
| --- | --- | --- | --- | --- | --- | --- | --- | --- | --- | --- | --- | --- | --- | --- | --- | --- | --- |
|  | 4 | **PRUEBAS DE FUNCIONAMIENTO Y PEM TK-3016** |  | 2026-03-24 | 2026-03-27 |  |  |  |  |  |  |  |  |  |  |  |  |
| A8720 |  | Pruebas de Funcionamiento y Puesta en Marcha de Motor TAG: 5872-MTR-1682. | 2d | 2026-03-24 | 2026-03-25 | A8710 | 4d | 0d | SQM-ELÉCTRICO [12 h] | 6,090.96 | 1 | gl | 5872-TK3016 | 0,9 | 7.3.4.2 | 1 |  |
| A8730 |  | Pruebas de Funcionamiento y Puesta en Marcha de Motor TAG: 5872-MTR-1685. | 2d | 2026-03-26 | 2026-03-27 | A8720 | 4d | 3d | SQM-ELÉCTRICO [12 h] | 6,090.96 | 1 | gl | 5872-TK3016 | 0,9 | 7.3.4.1 | 1 |  |
|  | 4 | **OBRAS DE INSTRUMENTACIÓN TK-3016** |  | 2026-03-22 | 2026-03-31 |  |  |  |  |  |  |  |  |  |  |  |  |
|  | 1 | **MONTAJE DE CANALIZACIÓN Y FERRETERÍA INST. TK-3016** |  | 2026-03-22 | 2026-03-26 |  |  |  |  |  |  |  |  |  |  |  |  |
| A8740 |  | Canalización y Copla de Conduit de Acero Galvanizado 1"Ø, Conduit ANSI C80.1 | 3d | 2026-03-22 | 2026-03-24 | A8670 | 1d | 0d | SQM-INSTRUMENTACIÓN [22.68 h] |  | 18 | m | 5872-TK3016 | 0 | 7.4.1.1 | 80 |  |
| A8750 |  | Canalización y Copla de Conduit Flexible Metálico con Cubierta PVC 1" Ø Trabajo Pesado | 2d | 2026-03-25 | 2026-03-26 | A8740 | 1d | 0d | SQM-INSTRUMENTACIÓN [6.3 h] |  | 5 | m | 5872-TK3016 | 0 | 7.4.1.2 | 10 |  |
|  | 2 | **TENDIDO Y CONEXIONADO DE CABLES INSTRUMENTACIÓN TK-3016** |  | 2026-03-27 | 2026-03-31 |  |  |  |  |  |  |  |  |  |  |  |  |
| A8760 |  | Cable Multiconductor de Cobre con Aislación de XLPE, 1x3C #12 AWG, Clase 1 kV | 4d | 2026-03-27 | 2026-03-30 | A8750 | 1d | 0d | SQM-INSTRUMENTACIÓN [0.28 h] |  | 117 | m | 5872-TK3016 | 0 | 7.4.2.1 | 150 |  |
| A8770 |  | Cable de Instrumentación (Señales Análogas), 1x1 par #16 AWG Apantallado | 5d | 2026-03-27 | 2026-03-31 | A8760 SS | 1d | 0d | SQM-INSTRUMENTACIÓN [69.26 h] |  | 234 | m | 5872-TK3016 | 0 | 7.4.2.2 | 300 |  |
| A8780 |  | Conductor Fibra Óptica Multimodo 12 Hilos | 4d | 2026-03-27 | 2026-03-30 | A8770 SS | 1d | 0d | SQM-INSTRUMENTACIÓN [62.14 h] |  | 130 | m | 5872-TK3016 | 0 | 7.4.2.3 | 150 |  |
|  | 3 | **MONTAJE Y CONEXIONADO DE EQUIPOS E INSTRUMENTOSTK-3016** |  | 2026-03-27 | 2026-03-30 |  |  |  |  |  |  |  |  |  |  |  |  |
| A8820 |  | Fibra Óptica en TAG: SEL-4016. | 3d | 2026-03-27 | 2026-03-29 | A8780 SS | 1d | 0d | SQM-INSTRUMENTACIÓN [12 h] |  | 1 | gl | 5872-TK3016 | 0 | 7.4.4.3 | 1 |  |
| A8830 |  | Instrumento TAG: FIT-1177 | 2d | 2026-03-27 | 2026-03-28 | A8820 SS | 1d | 0d | SQM-INSTRUMENTACIÓN [12 h] |  | 1 | gl | 5872-TK3016 | 0 | 7.4.4.2 | 1 | LDO N°23 |
| A8840 |  | Instrumento TAG: PIT-1176 | 2d | 2026-03-29 | 2026-03-30 | A8830 | 1d | 0d | SQM-INSTRUMENTACIÓN [12 h] |  | 1 | gl | 5872-TK3016 | 0 | 7.4.4.1 | 1 |  |
|  | 4 | **PRUEBAS DE FUNCIONAMIENTO Y PEM INST. TK-3016** |  | 2026-03-29 | 2026-03-30 |  |  |  |  |  |  |  |  |  |  |  |  |
| A8790 |  | Pruebas de Funcionamiento de Conectividad de Fibra Óptica desde SEL-4016 a TPM-1502. | 1d | 2026-03-29 | 2026-03-29 | A8840 SS | 1d | 0d | SQM-INSTRUMENTACIÓN |  | 0 | gl | 5872-TK3016 | 1 | 7.4.3.1 | 1 |  |
| A8800 |  | Pruebas de Operación y Puesta en Marcha de Instrumento TAG: FIT-1177 | 2d | 2026-03-29 | 2026-03-30 | A8790 SS | 1d | 0d | SQM-INSTRUMENTACIÓN [21.75 h] |  | 1 | gl | 5872-TK3016 | 0,55 | 7.4.3.2 | 1 |  |
| A8810 |  | Pruebas de Operación y Puesta en Marcha de Instrumento TAG: PIT-1176 | 2d | 2026-03-29 | 2026-03-30 | A8800 SS, A8730 SS | 1d |  | SQM-INSTRUMENTACIÓN [12 h] |  | 1 | gl | 5872-TK3016 | 0,55 | 7.4.3.3 | 1 |  |
